# [AE Trazabilidad] Cronograma de Actividades 2.0

Schedule from MS Project, 2017-03-06 to 2018-01-01, status date 2017-10-30, costs in S/., A marks actual dates.

## Calendars

- Estándar: Mon-Fri 09:00-13:00, 14:00-18:00; Sat-Sun off. Exceptions (off unless hours are given): 2017-04-13 to 2017-04-14 (Semana santa), 2017-05-01 (Día del Trabajo), 2017-06-29 to 2017-06-30 (San Pedro y San Pablo), 2017-07-28 (Fiestas Patrias), 2017-08-30 (Santa Rosa de Lima), 2017-11-01 (Día de todos los santos), 2017-12-08 (Día de la Inmaculada Concepción), 2017-12-25 (Navidad).

## Resources

| Resource | Rate |
| --- | --- |
| Romina Arredondo | 31.25 |
| Jerson Vidal | 31.25 |
| Gustavo Anchante | 37.5 |
| Jaime Durand | 31.25 |
| Julio Morales | 31.25 |
| Eduardo Passano | 31.25 |
| Jeny Espinoza |  |
| Luis Meneses |  |
| Melannie Acevedo |  |
| Wilfredo Caballero |  |
| Jessy Saenz |  |
| Miguel Amaya |  |
| Waldir Tume |  |
| Sonia Herrera |  |
| Duglas Quiñones |  |
| Manuel Horna |  |
| Waldo Trebejo | 31.25 |
| Miguel Fernandez | 31.25 |
| Edgard Marquez |  |
| Analista de AFCCTI |  |
| Marleny del Piélago |  |
| Luis Celis |  |
| Edith Huere |  |
| Jonathan Aldave |  |
| AP1 |  |
| AP2 |  |
| AP3 |  |
| Edward |  |
| Edward Lopez |  |
| Bryan Luna |  |

## Schedule

| ID | WBS | Task | Type | Duration | Start | Finish | Predecessors | Complete | Remaining | Baseline start | Baseline finish | Baseline duration | Total slack | Constraint | Resources | Work | Actual work | Cost | Baseline cost | Actual cost |
| --- | --- | --- | --- | --- | --- | --- | --- | --- | --- | --- | --- | --- | --- | --- | --- | --- | --- | --- | --- | --- |
| 1 | 1 | **AE 2017:** |  | 206d | 2017-03-06 A | 2018-01-01 |  | 79% | 42.3d | 2017-03-06 | 2017-12-05 | 189d | 0d |  |  | 3105.1h | 2386.99h | 60,120.94 | 56,670.94 | 53,393.12 |
| 2 | 1.1 | **Actividades de Gestión** |  | 206d | 2017-03-06 A | 2018-01-01 |  | 85% | 31.62d | 2017-03-06 | 2017-12-05 | 189d | 0d |  |  | 902.32h | 781.01h | 15,897.81 | 15,897.81 | 13,900 |
| 3 | 1.1.1 | **Planificación** |  | 7.75d | 2017-04-25 A | 2017-05-05 A |  | 100% |  | 2017-04-25 | 2017-05-05 | 7.75d |  |  |  | 35.3h | 35.3h | 67.5 | 67.5 | 67.5 |
| 4 | 1.1.1.1 | **Gestión del Alcance** |  | 7.75d | 2017-04-25 A | 2017-05-05 A |  | 100% |  | 2017-04-25 | 2017-05-05 | 7.75d |  |  |  | 35.3h | 35.3h | 67.5 | 67.5 | 67.5 |
| 5 | 1.1.1.1.1 | Elaborar Documento de Alcance |  | 7d | 2017-04-25 A | 2017-05-04 A | 114 | 100% |  | 2017-04-25 | 2017-05-04 | 7d |  |  | Melannie Acevedo [50%] | 28h | 28h |  |  |  |
| 6 | 1.1.1.1.2 | Reunión de revisión de Alcance |  | 2h | 2017-05-05 A | 2017-05-05 A | 5 | 100% |  | 2017-05-05 | 2017-05-05 | 2h |  |  | Duglas Quiñones [5%]; Gustavo Anchante [20%]; Jeny Espinoza [20%]; Jessy Saenz [20%]; Manuel Horna [2%]; Melannie Acevedo [20%]; Romina Arredondo [40%]; Sonia Herrera [1%]; Waldir Tume [1%]; Wilfredo Caballero [20%] | 2.98h | 2.98h | 40 | 40 | 40 |
| 7 | 1.1.1.1.3 | Firma de Documento de Alcance |  | 4h | 2017-05-05 A | 2017-05-05 A | 6 | 100% |  | 2017-05-05 | 2017-05-05 | 4h |  |  | Duglas Quiñones [2%]; Gustavo Anchante [10%]; Jeny Espinoza [10%]; Jessy Saenz [20%]; Manuel Horna [2%]; Melannie Acevedo [40%]; Romina Arredondo [10%]; Sonia Herrera [2%]; Waldir Tume [2%]; Wilfredo Caballero [10%] | 4.32h | 4.32h | 27.5 | 27.5 | 27.5 |
| 8 | 1.1.1.1.4 | Declaración de Alcance | milestone | 0d | 2017-05-05 A | 2017-05-05 A | 7 | 100% |  | 2017-05-05 | 2017-05-05 | 0d |  |  |  |  |  |  |  |  |
| 9 | 1.1.2 | **Ejecución** |  | 189d | 2017-03-06 A | 2017-12-05 |  | 87% | 24.75d | 2017-03-06 | 2017-12-05 | 189d | 17d |  |  | 680.24h | 599.28h | 14,260 | 14,260 | 12,520 |
| 10 | 1.1.2.1 | **Gestión de las Adquisiciones** |  | 189d | 2017-03-06 A | 2017-12-05 |  | 87% | 24.75d | 2017-03-06 | 2017-12-05 | 189d | 17d |  |  | 680.24h | 599.28h | 14,260 | 14,260 | 12,520 |
| 11 | 1.1.2.1.1 | **Servicio de Terceros - Especialista de Procesos** |  | 132d | 2017-03-06 A | 2017-09-14 A |  | 100% |  | 2017-03-06 | 2017-09-14 | 132d |  |  |  | 168.64h | 168.64h | 3,650 | 3,650 | 3,650 |
| 12 | 1.1.2.1.1.1 | Contratación EP: MRAM |  | 2d | 2017-03-06 A | 2017-03-07 A |  | 100% |  | 2017-03-06 | 2017-03-07 | 2d |  |  | Duglas Quiñones [2%]; Melannie Acevedo [10%]; Sonia Herrera [2%]; Wilfredo Caballero [10%] | 3.84h | 3.84h |  |  |  |
| 13 | 1.1.2.1.1.2 | Inducción |  | 5d | 2017-03-08 A | 2017-03-14 A | 12 | 100% |  | 2017-03-08 | 2017-03-14 | 5d |  |  | Jeny Espinoza [10%]; Melannie Acevedo [10%]; Romina Arredondo; Wilfredo Caballero [10%] | 52h | 52h | 1,250 | 1,250 | 1,250 |
| 14 | 1.1.2.1.1.3 | Informe Mensual N°1 - Marzo |  | 3d | 2017-04-05 A | 2017-04-07 A | 13SS+20d | 100% |  | 2017-04-05 | 2017-04-07 | 3d |  |  | Romina Arredondo [30%]; Sonia Herrera [1%]; Wilfredo Caballero [10%]; Melannie Acevedo [5%] | 11.04h | 11.04h | 225 | 225 | 225 |
| 15 | 1.1.2.1.1.4 | Informe Mensual N°2 - Abril |  | 3d | 2017-05-08 A | 2017-05-10 A | 13SS+40d | 100% |  | 2017-05-08 | 2017-05-10 | 3d |  |  | Romina Arredondo [30%]; Sonia Herrera [1%]; Wilfredo Caballero [10%]; Melannie Acevedo [5%] | 11.04h | 11.04h | 225 | 225 | 225 |
| 16 | 1.1.2.1.1.5 | Informe Mensual N°3 - Mayo |  | 3d | 2017-06-05 A | 2017-06-07 A | 13SS+60d | 100% |  | 2017-06-05 | 2017-06-07 | 3d |  |  | Romina Arredondo [30%]; Sonia Herrera [1%]; Wilfredo Caballero [10%]; Melannie Acevedo [5%] | 11.04h | 11.04h | 225 | 225 | 225 |
| 17 | 1.1.2.1.1.6 | Informe Mensual N°4 - Junio |  | 3d | 2017-07-05 A | 2017-07-07 A | 13SS+80d | 100% |  | 2017-07-05 | 2017-07-07 | 3d |  |  | Romina Arredondo [30%]; Sonia Herrera [1%]; Wilfredo Caballero [10%]; Melannie Acevedo [5%] | 11.04h | 11.04h | 225 | 225 | 225 |
| 18 | 1.1.2.1.1.7 | Contratación EP: JJVÑ |  | 4d | 2017-07-10 A | 2017-07-13 A | 17 | 100% |  | 2017-07-10 | 2017-07-13 | 4d |  |  | Duglas Quiñones [2%]; Melannie Acevedo [10%]; Sonia Herrera [2%]; Wilfredo Caballero [10%] | 7.68h | 7.68h |  |  |  |
| 19 | 1.1.2.1.1.8 | Inducción |  | 3d | 2017-07-14 A | 2017-07-18 A | 18 | 100% |  | 2017-07-14 | 2017-07-18 | 3d |  |  | Melannie Acevedo [10%]; Wilfredo Caballero [10%]; Jerson Vidal | 28.8h | 28.8h | 750 | 750 | 750 |
| 20 | 1.1.2.1.1.9 | Informe Mensual N°1 - Julio/Agosto |  | 3d | 2017-08-14 A | 2017-08-16 A | 19SS+20d | 100% |  | 2017-08-14 | 2017-08-16 | 3d |  |  | Sonia Herrera [2%]; Wilfredo Caballero [10%]; Melannie Acevedo [5%]; Jerson Vidal [50%] | 16.08h | 16.08h | 375 | 375 | 375 |
| 21 | 1.1.2.1.1.10 | Informe Mensual N°2 - Agosto/Setiembre |  | 3d | 2017-09-12 A | 2017-09-14 A | 19SS+40d | 100% |  | 2017-09-12 | 2017-09-14 | 3d |  |  | Sonia Herrera [2%]; Wilfredo Caballero [10%]; Melannie Acevedo [5%]; Jerson Vidal [50%] | 16.08h | 16.08h | 375 | 375 | 375 |
| 22 | 1.1.2.1.2 | **Servicio de Terceros - Analista de Sistemas** |  | 174d | 2017-03-27 A | 2017-12-05 |  | 83% | 29.83d | 2017-03-27 | 2017-12-05 | 174d | 17d |  |  | 142h | 119.92h | 3,315 | 3,315 | 2,775 |
| 23 | 1.1.2.1.2.1 | Contratación AS: GAAC |  | 5d | 2017-03-27 A | 2017-03-31 A |  | 100% |  | 2017-03-27 | 2017-03-31 | 5d |  | start no earlier than 2017-03-27 | Duglas Quiñones [2%]; Melannie Acevedo [10%]; Jeny Espinoza [10%]; Waldir Tume [2%] | 9.6h | 9.6h |  |  |  |
| 24 | 1.1.2.1.2.2 | Inducción |  | 5d | 2017-04-03 A | 2017-04-07 A | 23 | 100% |  | 2017-04-03 | 2017-04-07 | 5d |  |  | Jeny Espinoza [10%]; Melannie Acevedo [10%]; Wilfredo Caballero [10%]; Gustavo Anchante [80%] | 44h | 44h | 1,200 | 1,200 | 1,200 |
| 25 | 1.1.2.1.2.3 | Informe Mensual N°1 - Abril |  | 3d | 2017-05-02 A | 2017-05-04 A | 24SS+18d | 100% |  | 2017-05-02 | 2017-05-04 | 3d |  |  | Gustavo Anchante [30%]; Jeny Espinoza [10%]; Waldir Tume [1%]; Melannie Acevedo [5%] | 11.04h | 11.04h | 270 | 270 | 270 |
| 26 | 1.1.2.1.2.4 | Informe Mensual N°2 - Mayo |  | 4d | 2017-05-30 A | 2017-06-02 A | 24SS+38d | 100% |  | 2017-05-30 | 2017-06-02 | 4d |  |  | Gustavo Anchante [30%]; Jeny Espinoza [10%]; Waldir Tume [1%]; Melannie Acevedo [5%] | 11.12h | 11.12h | 225 | 225 | 225 |
| 27 | 1.1.2.1.2.5 | Informe Mensual N°3 - Junio |  | 3d | 2017-06-27 A | 2017-07-03 A | 24SS+58d | 100% |  | 2017-06-27 | 2017-07-03 | 3d |  |  | Gustavo Anchante [30%]; Jeny Espinoza [10%]; Waldir Tume [1%]; Melannie Acevedo [5%] | 11.04h | 11.04h | 270 | 270 | 270 |
| 28 | 1.1.2.1.2.6 | Informe Mensual N°4 - Julio |  | 3d | 2017-08-01 A | 2017-08-03 A | 24SS+80d | 100% |  | 2017-08-01 | 2017-08-03 | 3d |  |  | Gustavo Anchante [30%]; Waldir Tume [1%]; Melannie Acevedo [5%]; Luis Meneses [10%] | 11.04h | 11.04h | 270 | 270 | 270 |
| 29 | 1.1.2.1.2.7 | Informe Mensual N°5 - Agosto |  | 3d | 2017-09-01 A | 2017-09-05 A | 24SS+102d | 100% |  | 2017-09-01 | 2017-09-05 | 3d |  |  | Gustavo Anchante [30%]; Melannie Acevedo [5%]; Waldir Tume [1%]; Luis Meneses [10%] | 11.04h | 11.04h | 270 | 270 | 270 |
| 30 | 1.1.2.1.2.8 | Informe Mensual N°6 - Setiembre |  | 3d | 2017-09-29 A | 2017-10-03 A | 24SS+122d | 100% |  | 2017-09-29 | 2017-10-03 | 3d |  |  | Gustavo Anchante [30%]; Waldir Tume [1%]; Melannie Acevedo [5%]; Luis Meneses [10%] | 11.04h | 11.04h | 270 | 270 | 270 |
| 31 | 1.1.2.1.2.9 | Informe Mensual N°5 - Octubre |  | 3d | 2017-10-31 | 2017-11-03 | 24SS+144d |  |  | 2017-10-31 | 2017-11-03 | 3d | 39d |  | Gustavo Anchante [30%]; Waldir Tume [1%]; Melannie Acevedo [5%]; Luis Meneses [10%] | 11.04h |  | 270 | 270 |  |
| 32 | 1.1.2.1.2.10 | Informe Mensual N°5 - Noviembre |  | 3d | 2017-12-01 | 2017-12-05 | 24SS+166d |  |  | 2017-12-01 | 2017-12-05 | 3d | 17d |  | Gustavo Anchante [30%]; Waldir Tume [1%]; Melannie Acevedo [5%]; Luis Meneses [10%] | 11.04h |  | 270 | 270 |  |

| ID | WBS | Task | Duration | Start | Finish | Predecessors | Complete | Remaining | Baseline start | Baseline finish | Baseline duration | Total slack | Constraint | Resources | Work | Actual work | Cost | Baseline cost | Actual cost |
| --- | --- | --- | --- | --- | --- | --- | --- | --- | --- | --- | --- | --- | --- | --- | --- | --- | --- | --- | --- |
| 33 | 1.1.2.1.3 | **Servicio de terceros - Analista Programador 1** | 133d | 2017-05-25 A | 2017-12-04 |  | 86% | 18.47d | 2017-05-25 | 2017-12-04 | 133d | 18d |  |  | 168.56h | 150.16h | 3,710 | 3,710 | 3,335 |
| 34 | 1.1.2.1.3.1 | Contratación AP1: JVDD I | 5d | 2017-05-25 A | 2017-05-31 A |  | 100% |  | 2017-05-25 | 2017-05-31 | 5d |  | start no earlier than 2017-05-25 | Duglas Quiñones [2%]; Melannie Acevedo [10%]; Jeny Espinoza [10%]; Waldir Tume [2%] | 9.6h | 9.6h |  |  |  |
| 35 | 1.1.2.1.3.2 | Inducción | 5d | 2017-06-01 A | 2017-06-07 A | 34 | 100% |  | 2017-06-01 | 2017-06-07 | 5d |  |  | Jeny Espinoza [10%]; Melannie Acevedo [5%]; Gustavo Anchante [20%]; Romina Arredondo [20%]; Jaime Durand | 62h | 62h | 1,800 | 1,800 | 1,800 |
| 36 | 1.1.2.1.3.3 | Informe Mensual N°1 - Junio | 3d | 2017-06-27 A | 2017-07-03 A | 35SS+18d | 100% |  | 2017-06-27 | 2017-07-03 | 3d |  |  | Jeny Espinoza [10%]; Waldir Tume [1%]; Melannie Acevedo [5%]; Jaime Durand [30%] | 11.04h | 11.04h | 225 | 225 | 225 |
| 37 | 1.1.2.1.3.4 | Contratación AP1: JVDD II | 3d | 2017-06-27 A | 2017-07-03 A | 36SS | 100% |  | 2017-06-27 | 2017-07-03 | 3d |  |  | Duglas Quiñones [2%]; Melannie Acevedo [10%]; Jeny Espinoza [10%]; Waldir Tume [2%] | 5.76h | 5.76h |  |  |  |
| 38 | 1.1.2.1.3.5 | Informe Mensual N°1 - Julio | 3d | 2017-08-01 A | 2017-08-03 A | 35SS+40d | 100% |  | 2017-08-01 | 2017-08-03 | 3d |  |  | Waldir Tume [1%]; Melannie Acevedo [5%]; Jaime Durand [30%]; Luis Meneses [10%] | 11.04h | 11.04h | 225 | 225 | 225 |
| 39 | 1.1.2.1.3.6 | Informe Mensual N°2 - Agosto | 3d | 2017-08-31 A | 2017-09-04 A | 35SS+61d | 100% |  | 2017-08-31 | 2017-09-04 | 3d |  |  | Waldir Tume [1%]; Melannie Acevedo [5%]; Jaime Durand [30%]; Luis Meneses [10%] | 11.04h | 11.04h | 225 | 225 | 225 |
| 40 | 1.1.2.1.3.7 | Contratación AP1: MAFG | 3d | 2017-08-29 A | 2017-09-01 A |  | 100% |  | 2017-08-29 | 2017-09-01 | 3d |  | start no earlier than 2017-08-29 | Duglas Quiñones [2%]; Melannie Acevedo [10%]; Waldir Tume [2%]; Luis Meneses [10%] | 5.76h | 5.76h |  |  |  |
| 41 | 1.1.2.1.3.8 | Inducción | 2d | 2017-09-04 A | 2017-09-05 A | 40 | 100% |  | 2017-09-04 | 2017-09-05 | 2d |  |  | Luis Meneses [10%]; Gustavo Anchante [10%]; Miguel Fernandez | 19.2h | 19.2h | 560 | 560 | 560 |
| 42 | 1.1.2.1.3.9 | Informe Mensual N°1 - Setiembre | 3d | 2017-10-02 A | 2017-10-04 A | 41SS+20d | 100% |  | 2017-10-02 | 2017-10-04 | 3d |  |  | Waldir Tume [1%]; Melannie Acevedo [5%]; Jaime Durand [30%]; Luis Meneses [10%] | 11.04h | 11.04h | 225 | 225 | 225 |
| 43 | 1.1.2.1.3.10 | Informe Mensual N°2 - Octubre | 3d | 2017-10-30 A | 2017-11-02 | 41SS+40d | 33% | 2d | 2017-10-30 | 2017-11-02 | 3d | 40d |  | Waldir Tume [1%]; Melannie Acevedo [5%]; Jaime Durand [30%]; Luis Meneses [10%] | 11.04h | 3.68h | 225 | 225 | 75 |
| 44 | 1.1.2.1.3.11 | Informe Mensual N°3 - Noviembre | 3d | 2017-11-30 | 2017-12-04 | 41SS+62d |  |  | 2017-11-30 | 2017-12-04 | 3d | 18d |  | Waldir Tume [1%]; Melannie Acevedo [5%]; Jaime Durand [30%]; Luis Meneses [10%] | 11.04h |  | 225 | 225 |  |
| 45 | 1.1.2.1.4 | **Servicio de terceros - Analista Programador 2** | 133d | 2017-05-25 A | 2017-12-04 |  | 86% | 18.47d | 2017-05-25 | 2017-12-04 | 133d | 18d |  |  | 104.56h | 86.16h | 1,910 | 1,910 | 1,535 |
| 46 | 1.1.2.1.4.1 | Contratación AP1: JCML I | 5d | 2017-05-25 A | 2017-05-31 A | 34SS | 100% |  | 2017-05-25 | 2017-05-31 | 5d |  |  | Duglas Quiñones [2%]; Melannie Acevedo [5%]; Jeny Espinoza [10%]; Waldir Tume [2%] | 7.6h | 7.6h |  |  |  |
| 47 | 1.1.2.1.4.2 | Inducción | 5d | 2017-06-01 A | 2017-06-07 A | 46 | 100% |  | 2017-06-01 | 2017-06-07 | 5d |  |  |  |  |  |  |  |  |
| 48 | 1.1.2.1.4.3 | Informe Mensual N°1 - Junio | 3d | 2017-06-27 A | 2017-07-03 A | 47SS+18d | 100% |  | 2017-06-27 | 2017-07-03 | 3d |  |  | Waldir Tume [1%]; Melannie Acevedo [5%]; Julio Morales [30%]; Jeny Espinoza [10%] | 11.04h | 11.04h | 225 | 225 | 225 |
| 49 | 1.1.2.1.4.4 | Contratación AP2: JCML II | 3d | 2017-06-27 A | 2017-07-03 A | 48SS | 100% |  | 2017-06-27 | 2017-07-03 | 3d |  |  | Duglas Quiñones [2%]; Melannie Acevedo [10%]; Jeny Espinoza [10%]; Waldir Tume [2%] | 5.76h | 5.76h |  |  |  |
| 50 | 1.1.2.1.4.5 | Informe Mensual N°1 - Julio | 3d | 2017-08-01 A | 2017-08-03 A | 47SS+40d | 100% |  | 2017-08-01 | 2017-08-03 | 3d |  |  | Waldir Tume [1%]; Melannie Acevedo [5%]; Luis Meneses [10%]; Julio Morales [30%] | 11.04h | 11.04h | 225 | 225 | 225 |
| 51 | 1.1.2.1.4.6 | Informe Mensual N°2 - Agosto | 3d | 2017-08-31 A | 2017-09-04 A | 47SS+61d | 100% |  | 2017-08-31 | 2017-09-04 | 3d |  |  | Waldir Tume [1%]; Melannie Acevedo [5%]; Luis Meneses [10%]; Julio Morales [30%] | 11.04h | 11.04h | 225 | 225 | 225 |
| 52 | 1.1.2.1.4.7 | Contratación AP2: WJTL | 3d | 2017-08-29 A | 2017-09-01 A | 40SS | 100% |  | 2017-08-29 | 2017-09-01 | 3d |  |  | Duglas Quiñones [2%]; Melannie Acevedo [10%]; Luis Meneses [10%]; Waldir Tume [2%] | 5.76h | 5.76h |  |  |  |
| 53 | 1.1.2.1.4.8 | Inducción | 2d | 2017-09-04 A | 2017-09-05 A | 52 | 100% |  | 2017-09-04 | 2017-09-05 | 2d |  |  | Luis Meneses [10%]; Gustavo Anchante [10%]; Waldo Trebejo | 19.2h | 19.2h | 560 | 560 | 560 |
| 54 | 1.1.2.1.4.9 | Informe Mensual N°1 - Setiembre | 3d | 2017-10-02 A | 2017-10-04 A | 53SS+20d | 100% |  | 2017-10-02 | 2017-10-04 | 3d |  |  | Waldir Tume [1%]; Melannie Acevedo [5%]; Luis Meneses [10%]; Julio Morales [30%] | 11.04h | 11.04h | 225 | 225 | 225 |
| 55 | 1.1.2.1.4.10 | Informe Mensual N°2 - Octubre | 3d | 2017-10-30 A | 2017-11-02 | 53SS+40d | 33% | 2d | 2017-10-30 | 2017-11-02 | 3d | 40d |  | Waldir Tume [1%]; Melannie Acevedo [5%]; Luis Meneses [10%]; Julio Morales [30%] | 11.04h | 3.68h | 225 | 225 | 75 |
| 56 | 1.1.2.1.4.11 | Informe Mensual N°3 - Noviembre | 3d | 2017-11-30 | 2017-12-04 | 53SS+62d |  |  | 2017-11-30 | 2017-12-04 | 3d | 18d |  | Waldir Tume [1%]; Melannie Acevedo [5%]; Luis Meneses [10%]; Julio Morales [30%] | 11.04h |  | 225 | 225 |  |

| ID | WBS | Task | Duration | Start | Finish | Predecessors | Complete | Remaining | Baseline start | Baseline finish | Baseline duration | Total slack | Constraint | Resources | Work | Actual work | Cost | Baseline cost | Actual cost |
| --- | --- | --- | --- | --- | --- | --- | --- | --- | --- | --- | --- | --- | --- | --- | --- | --- | --- | --- | --- |
| 57 | 1.1.2.1.5 | **Servicio de terceros - Analista Programador 3** | 110d | 2017-06-26 A | 2017-12-01 |  | 79% | 22.76d | 2017-06-26 | 2017-12-01 | 110d | 19d |  |  | 96.48h | 74.4h | 1,675 | 1,675 | 1,225 |
| 58 | 1.1.2.1.5.1 | Contratación AP1: EAPC I | 3d | 2017-06-26 A | 2017-06-28 A |  | 100% |  | 2017-06-26 | 2017-06-28 | 3d |  | start no earlier than 2017-06-26 | Duglas Quiñones [2%]; Melannie Acevedo [10%]; Jeny Espinoza [10%]; Waldir Tume [2%] | 5.76h | 5.76h |  |  |  |
| 59 | 1.1.2.1.5.2 | Inducción | 5d | 2017-07-03 A | 2017-07-07 A | 58 | 100% |  | 2017-07-03 | 2017-07-07 | 5d |  |  | Jeny Espinoza [10%]; Melannie Acevedo [10%]; Gustavo Anchante [20%]; Romina Arredondo [20%] | 24h | 24h | 550 | 550 | 550 |
| 60 | 1.1.2.1.5.3 | Informe Mensual N°1 - Julio | 3d | 2017-08-01 A | 2017-08-03 A | 59SS+20d | 100% |  | 2017-08-01 | 2017-08-03 | 3d |  |  | Waldir Tume [1%]; Melannie Acevedo [5%]; Luis Meneses [10%]; Eduardo Passano [30%] | 11.04h | 11.04h | 225 | 225 | 225 |
| 61 | 1.1.2.1.5.4 | Contratación AP2: EAPC II | 3d | 2017-08-01 A | 2017-08-03 A | 59SS+20d | 100% |  | 2017-08-01 | 2017-08-03 | 3d |  |  | Duglas Quiñones [2%]; Melannie Acevedo [10%]; Waldir Tume [2%]; Luis Meneses [10%] | 5.76h | 5.76h |  |  |  |
| 62 | 1.1.2.1.5.5 | Informe Mensual N°1 - Agosto | 3d | 2017-08-31 A | 2017-09-04 A | 61FS+18d | 100% |  | 2017-08-31 | 2017-09-04 | 3d |  |  | Waldir Tume [1%]; Melannie Acevedo [5%]; Luis Meneses [10%]; Eduardo Passano [30%] | 11.04h | 11.04h | 225 | 225 | 225 |
| 63 | 1.1.2.1.5.6 | Contratación AP2: EAPC III | 3d | 2017-08-31 A | 2017-09-04 A | 61FS+18d | 100% |  | 2017-08-31 | 2017-09-04 | 3d |  |  | Duglas Quiñones [2%]; Melannie Acevedo [10%]; Waldir Tume [2%]; Luis Meneses [10%] | 5.76h | 5.76h |  |  |  |
| 64 | 1.1.2.1.5.7 | Informe Mensual N°1 - Setiembre | 3d | 2017-09-29 A | 2017-10-03 A | 63FS+18d | 100% |  | 2017-09-29 | 2017-10-03 | 3d |  |  | Waldir Tume [1%]; Melannie Acevedo [5%]; Luis Meneses [10%]; Eduardo Passano [30%] | 11.04h | 11.04h | 225 | 225 | 225 |
| 65 | 1.1.2.1.5.8 | Informe Mensual N°2 - Octubre | 3d | 2017-10-31 | 2017-11-03 | 63FS+40d |  |  | 2017-10-31 | 2017-11-03 | 3d | 39d |  | Waldir Tume [1%]; Melannie Acevedo [5%]; Luis Meneses [10%]; Eduardo Passano [30%] | 11.04h |  | 225 | 225 |  |
| 66 | 1.1.2.1.5.9 | Informe Mensual N°3 - Noviembre | 3d | 2017-11-29 | 2017-12-01 | 63FS+60d |  |  | 2017-11-29 | 2017-12-01 | 3d | 19d |  | Waldir Tume [1%]; Melannie Acevedo [5%]; Luis Meneses [10%]; Eduardo Passano [30%] | 11.04h |  | 225 | 225 |  |
| 67 | 1.1.3 | **Seguimiento y Control** | 145.19d | 2017-05-05 A | 2017-12-01 |  | 78% | 32.18d | 2017-05-05 | 2017-12-01 | 145.19d | 19.81d |  |  | 180.3h | 146.43h | 1,570.31 | 1,570.31 | 1,312.5 |
| 68 | 1.1.3.1 | **Informe mensual** | 109d | 2017-06-26 A | 2017-11-30 |  | 77% | 25.43d | 2017-06-26 | 2017-11-30 | 109d | 20d |  |  | 64.8h | 49.68h |  |  |  |
| 69 | 1.1.3.1.1 | Informe mensual - junio | 5d | 2017-06-26 A | 2017-07-04 A |  | 100% |  | 2017-06-26 | 2017-07-04 | 5d |  | start no earlier than 2017-06-26 | Duglas Quiñones [2%]; Melannie Acevedo [25%] | 10.8h | 10.8h |  |  |  |
| 70 | 1.1.3.1.2 | Informe mensual - julio | 5d | 2017-07-26 A | 2017-08-02 A |  | 100% |  | 2017-07-26 | 2017-08-02 | 5d |  | start no earlier than 2017-07-26 | Duglas Quiñones [2%]; Melannie Acevedo [25%] | 10.8h | 10.8h |  |  |  |
| 71 | 1.1.3.1.3 | Informe mensual - agosto | 5d | 2017-08-25 A | 2017-09-01 A |  | 100% |  | 2017-08-25 | 2017-09-01 | 5d |  | start no earlier than 2017-08-25 | Duglas Quiñones [2%]; Melannie Acevedo [25%] | 10.8h | 10.8h |  |  |  |
| 72 | 1.1.3.1.4 | Informe mensual - setiembre | 5d | 2017-09-26 A | 2017-10-02 A |  | 100% |  | 2017-09-26 | 2017-10-02 | 5d |  | start no earlier than 2017-09-26 | Duglas Quiñones [2%]; Melannie Acevedo [25%] | 10.8h | 10.8h |  |  |  |
| 73 | 1.1.3.1.5 | Informe mensual - octubre | 5d | 2017-10-26 A | 2017-11-02 |  | 60% | 2d | 2017-10-26 | 2017-11-02 | 5d | 40d | start no earlier than 2017-10-26 | Duglas Quiñones [2%]; Melannie Acevedo [25%] | 10.8h | 6.48h |  |  |  |
| 74 | 1.1.3.1.6 | Informe mensual - noviembre | 5d | 2017-11-24 | 2017-11-30 |  |  |  | 2017-11-24 | 2017-11-30 | 5d | 20d | start no earlier than 2017-11-24 | Duglas Quiñones [2%]; Melannie Acevedo [25%] | 10.8h |  |  |  |  |
| 75 | 1.1.3.2 | **Reunión de Estado Semanal** | 145.19d | 2017-05-05 A | 2017-12-01 |  | 84% | 23.42d | 2017-05-05 | 2017-12-01 | 145.19d | 19.81d |  |  | 115.5h | 96.75h | 1,570.31 | 1,570.31 | 1,312.5 |
| 76 | 1.1.3.2.1 | Reunión de Estado - Semana 1 | 1.5h | 2017-05-05 A | 2017-05-05 A |  | 100% |  | 2017-05-05 | 2017-05-05 | 1.5h |  | start no earlier than 2017-05-05 | Gustavo Anchante [50%]; Jeny Espinoza [50%]; Melannie Acevedo [50%]; Romina Arredondo [50%]; Wilfredo Caballero [50%] | 3.75h | 3.75h | 51.56 | 51.56 | 51.56 |
| 77 | 1.1.3.2.2 | Reunión de Estado - Semana 2 | 1.5h | 2017-05-12 A | 2017-05-12 A |  | 100% |  | 2017-05-12 | 2017-05-12 | 1.5h |  | start no earlier than 2017-05-12 | Gustavo Anchante [50%]; Jeny Espinoza [50%]; Melannie Acevedo [50%]; Romina Arredondo [50%]; Wilfredo Caballero [50%] | 3.75h | 3.75h | 51.56 | 51.56 | 51.56 |
| 78 | 1.1.3.2.3 | Reunión de Estado - Semana 3 | 1.5h | 2017-05-19 A | 2017-05-19 A |  | 100% |  | 2017-05-19 | 2017-05-19 | 1.5h |  | start no earlier than 2017-05-19 | Gustavo Anchante [50%]; Jeny Espinoza [50%]; Melannie Acevedo [50%]; Romina Arredondo [50%]; Wilfredo Caballero [50%] | 3.75h | 3.75h | 51.56 | 51.56 | 51.56 |
| 79 | 1.1.3.2.4 | Reunión de Estado - Semana 4 | 1.5h | 2017-05-26 A | 2017-05-26 A |  | 100% |  | 2017-05-26 | 2017-05-26 | 1.5h |  | start no earlier than 2017-05-26 | Gustavo Anchante [50%]; Jeny Espinoza [50%]; Melannie Acevedo [50%]; Romina Arredondo [50%]; Wilfredo Caballero [50%] | 3.75h | 3.75h | 51.56 | 51.56 | 51.56 |
| 80 | 1.1.3.2.5 | Reunión de Estado - Semana 5 | 1.5h | 2017-06-02 A | 2017-06-02 A |  | 100% |  | 2017-06-02 | 2017-06-02 | 1.5h |  | start no earlier than 2017-06-02 | Gustavo Anchante [50%]; Jeny Espinoza [50%]; Melannie Acevedo [50%]; Romina Arredondo [50%]; Wilfredo Caballero [50%] | 3.75h | 3.75h | 51.56 | 51.56 | 51.56 |
| 81 | 1.1.3.2.6 | Reunión de Estado - Semana 6 | 1.5h | 2017-06-09 A | 2017-06-09 A |  | 100% |  | 2017-06-09 | 2017-06-09 | 1.5h |  | start no earlier than 2017-06-09 | Gustavo Anchante [50%]; Jeny Espinoza [50%]; Melannie Acevedo [50%]; Romina Arredondo [50%]; Wilfredo Caballero [50%] | 3.75h | 3.75h | 51.56 | 51.56 | 51.56 |
| 82 | 1.1.3.2.7 | Reunión de Estado - Semana 7 | 1.5h | 2017-06-16 A | 2017-06-16 A |  | 100% |  | 2017-06-16 | 2017-06-16 | 1.5h |  | start no earlier than 2017-06-16 | Gustavo Anchante [50%]; Jeny Espinoza [50%]; Melannie Acevedo [50%]; Romina Arredondo [50%]; Wilfredo Caballero [50%] | 3.75h | 3.75h | 51.56 | 51.56 | 51.56 |
| 83 | 1.1.3.2.8 | Reunión de Estado - Semana 8 | 1.5h | 2017-06-23 A | 2017-06-23 A |  | 100% |  | 2017-06-23 | 2017-06-23 | 1.5h |  | start no earlier than 2017-06-23 | Gustavo Anchante [50%]; Jeny Espinoza [50%]; Melannie Acevedo [50%]; Romina Arredondo [50%]; Wilfredo Caballero [50%] | 3.75h | 3.75h | 51.56 | 51.56 | 51.56 |
| 84 | 1.1.3.2.9 | Reunión de Estado - Semana 9 | 1.5h | 2017-06-28 A | 2017-06-28 A |  | 100% |  | 2017-06-28 | 2017-06-28 | 1.5h |  | start no earlier than 2017-06-28 | Gustavo Anchante [50%]; Jeny Espinoza [50%]; Melannie Acevedo [50%]; Romina Arredondo [50%]; Wilfredo Caballero [50%] | 3.75h | 3.75h | 51.56 | 51.56 | 51.56 |
| 85 | 1.1.3.2.10 | Reunión de Estado - Semana 10 | 1.5h | 2017-07-07 A | 2017-07-07 A |  | 100% |  | 2017-07-07 | 2017-07-07 | 1.5h |  | start no earlier than 2017-07-07 | Gustavo Anchante [50%]; Melannie Acevedo [50%]; Jerson Vidal [50%]; Wilfredo Caballero [50%]; Luis Meneses [50%] | 3.75h | 3.75h | 51.56 | 51.56 | 51.56 |
| 86 | 1.1.3.2.11 | Reunión de Estado - Semana 11 | 1.5h | 2017-07-13 A | 2017-07-13 A |  | 100% |  | 2017-07-13 | 2017-07-13 | 1.5h |  | start no earlier than 2017-07-13 | Gustavo Anchante [50%]; Melannie Acevedo [50%]; Jerson Vidal [50%]; Wilfredo Caballero [50%]; Luis Meneses [50%] | 3.75h | 3.75h | 51.56 | 51.56 | 51.56 |
| 87 | 1.1.3.2.12 | Reunión de Estado - Semana 12 | 1.5h | 2017-07-21 A | 2017-07-21 A |  | 100% |  | 2017-07-21 | 2017-07-21 | 1.5h |  | start no earlier than 2017-07-21 | Gustavo Anchante [50%]; Melannie Acevedo [50%]; Jerson Vidal [50%]; Wilfredo Caballero [50%]; Luis Meneses [50%] | 3.75h | 3.75h | 51.56 | 51.56 | 51.56 |
| 88 | 1.1.3.2.13 | Reunión de Estado - Semana 13 | 1.5h | 2017-07-31 A | 2017-07-31 A |  | 100% |  | 2017-07-31 | 2017-07-31 | 1.5h |  | start no earlier than 2017-07-31 | Gustavo Anchante [50%]; Melannie Acevedo [50%]; Jerson Vidal [50%]; Wilfredo Caballero [50%]; Luis Meneses [50%] | 3.75h | 3.75h | 51.56 | 51.56 | 51.56 |
| 89 | 1.1.3.2.14 | Reunión de Estado - Semana 14 | 1.5h | 2017-08-04 A | 2017-08-04 A |  | 100% |  | 2017-08-04 | 2017-08-04 | 1.5h |  | start no earlier than 2017-08-04 | Gustavo Anchante [50%]; Melannie Acevedo [50%]; Jerson Vidal [50%]; Wilfredo Caballero [50%]; Luis Meneses [50%] | 3.75h | 3.75h | 51.56 | 51.56 | 51.56 |
| 90 | 1.1.3.2.15 | Reunión de Estado - Semana 15 | 1.5h | 2017-08-11 A | 2017-08-11 A |  | 100% |  | 2017-08-11 | 2017-08-11 | 1.5h |  | start no earlier than 2017-08-11 | Melannie Acevedo [50%]; Jerson Vidal [50%]; Wilfredo Caballero [50%]; Luis Meneses [50%] | 3h | 3h | 23.44 | 23.44 | 23.44 |
| 91 | 1.1.3.2.16 | Reunión de Estado - Semana 16 | 1.5h | 2017-08-18 A | 2017-08-18 A |  | 100% |  | 2017-08-18 | 2017-08-18 | 1.5h |  | start no earlier than 2017-08-18 | Gustavo Anchante [50%]; Melannie Acevedo [50%]; Jerson Vidal [50%]; Wilfredo Caballero [50%]; Luis Meneses [50%] | 3.75h | 3.75h | 51.56 | 51.56 | 51.56 |
| 92 | 1.1.3.2.17 | Reunión de Estado - Semana 17 | 1.5h | 2017-08-25 A | 2017-08-25 A |  | 100% |  | 2017-08-25 | 2017-08-25 | 1.5h |  | start no earlier than 2017-08-25 | Gustavo Anchante [50%]; Melannie Acevedo [50%]; Jerson Vidal [50%]; Wilfredo Caballero [50%]; Luis Meneses [50%] | 3.75h | 3.75h | 51.56 | 51.56 | 51.56 |
| 93 | 1.1.3.2.18 | Reunión de Estado - Semana 18 | 1.5h | 2017-09-01 A | 2017-09-01 A |  | 100% |  | 2017-09-01 | 2017-09-01 | 1.5h |  | start no earlier than 2017-09-01 | Gustavo Anchante [50%]; Melannie Acevedo [50%]; Jerson Vidal [50%]; Wilfredo Caballero [50%]; Luis Meneses [50%] | 3.75h | 3.75h | 51.56 | 51.56 | 51.56 |
| 94 | 1.1.3.2.19 | Reunión de Estado - Semana 19 | 1.5h | 2017-09-08 A | 2017-09-08 A |  | 100% |  | 2017-09-08 | 2017-09-08 | 1.5h |  | start no earlier than 2017-09-08 | Gustavo Anchante [50%]; Melannie Acevedo [50%]; Jerson Vidal [50%]; Wilfredo Caballero [50%]; Luis Meneses [50%] | 3.75h | 3.75h | 51.56 | 51.56 | 51.56 |
| 95 | 1.1.3.2.20 | Reunión de Estado - Semana 20 | 1.5h | 2017-09-15 A | 2017-09-15 A |  | 100% |  | 2017-09-15 | 2017-09-15 | 1.5h |  | start no earlier than 2017-09-15 | Gustavo Anchante [50%]; Melannie Acevedo [50%]; Jerson Vidal [50%]; Wilfredo Caballero [50%]; Luis Meneses [50%] | 3.75h | 3.75h | 51.56 | 51.56 | 51.56 |
| 96 | 1.1.3.2.21 | Reunión de Estado - Semana 21 | 1.5h | 2017-09-22 A | 2017-09-22 A |  | 100% |  | 2017-09-22 | 2017-09-22 | 1.5h |  | start no earlier than 2017-09-22 | Gustavo Anchante [50%]; Melannie Acevedo [50%]; Jerson Vidal [50%]; Wilfredo Caballero [50%]; Luis Meneses [50%] | 3.75h | 3.75h | 51.56 | 51.56 | 51.56 |
| 97 | 1.1.3.2.22 | Reunión de Estado - Semana 22 | 1.5h | 2017-09-29 A | 2017-09-29 A |  | 100% |  | 2017-09-29 | 2017-09-29 | 1.5h |  | start no earlier than 2017-09-29 | Gustavo Anchante [50%]; Melannie Acevedo [50%]; Jerson Vidal [50%]; Wilfredo Caballero [50%]; Luis Meneses [50%] | 3.75h | 3.75h | 51.56 | 51.56 | 51.56 |
| 98 | 1.1.3.2.23 | Reunión de Estado - Semana 23 | 1.5h | 2017-10-06 A | 2017-10-06 A |  | 100% |  | 2017-10-06 | 2017-10-06 | 1.5h |  | start no earlier than 2017-10-06 | Gustavo Anchante [50%]; Melannie Acevedo [50%]; Jerson Vidal [50%]; Wilfredo Caballero [50%]; Luis Meneses [50%] | 3.75h | 3.75h | 51.56 | 51.56 | 51.56 |
| 99 | 1.1.3.2.24 | Reunión de Estado - Semana 24 | 1.5h | 2017-10-13 A | 2017-10-13 A |  | 100% |  | 2017-10-13 | 2017-10-13 | 1.5h |  | start no earlier than 2017-10-13 | Gustavo Anchante [50%]; Melannie Acevedo [50%]; Jerson Vidal [50%]; Wilfredo Caballero [50%]; Luis Meneses [50%] | 3.75h | 3.75h | 51.56 | 51.56 | 51.56 |
| 100 | 1.1.3.2.25 | Reunión de Estado - Semana 25 | 1.5h | 2017-10-20 A | 2017-10-20 A |  | 100% |  | 2017-10-20 | 2017-10-20 | 1.5h |  | start no earlier than 2017-10-20 | Gustavo Anchante [50%]; Melannie Acevedo [50%]; Jerson Vidal [50%]; Wilfredo Caballero [50%]; Luis Meneses [50%] | 3.75h | 3.75h | 51.56 | 51.56 | 51.56 |
| 101 | 1.1.3.2.26 | Reunión de Estado - Semana 26 | 1.5h | 2017-10-27 A | 2017-10-27 A |  | 100% |  | 2017-10-27 | 2017-10-27 | 1.5h |  | start no earlier than 2017-10-27 | Gustavo Anchante [50%]; Melannie Acevedo [50%]; Jerson Vidal [50%]; Wilfredo Caballero [50%]; Luis Meneses [50%] | 3.75h | 3.75h | 51.56 | 51.56 | 51.56 |
| 102 | 1.1.3.2.27 | Reunión de Estado - Semana 27 | 1.5h | 2017-11-03 | 2017-11-03 |  |  |  | 2017-11-03 | 2017-11-03 | 1.5h | 39.81d | start no earlier than 2017-11-03 | Gustavo Anchante [50%]; Melannie Acevedo [50%]; Jerson Vidal [50%]; Wilfredo Caballero [50%]; Luis Meneses [50%] | 3.75h |  | 51.56 | 51.56 |  |
| 103 | 1.1.3.2.28 | Reunión de Estado - Semana 28 | 1.5h | 2017-11-10 | 2017-11-10 |  |  |  | 2017-11-10 | 2017-11-10 | 1.5h | 34.81d | start no earlier than 2017-11-10 | Gustavo Anchante [50%]; Melannie Acevedo [50%]; Jerson Vidal [50%]; Wilfredo Caballero [50%]; Luis Meneses [50%] | 3.75h |  | 51.56 | 51.56 |  |
| 104 | 1.1.3.2.29 | Reunión de Estado - Semana 29 | 1.5h | 2017-11-17 | 2017-11-17 |  |  |  | 2017-11-17 | 2017-11-17 | 1.5h | 29.81d | start no earlier than 2017-11-17 | Gustavo Anchante [50%]; Melannie Acevedo [50%]; Jerson Vidal [50%]; Wilfredo Caballero [50%]; Luis Meneses [50%] | 3.75h |  | 51.56 | 51.56 |  |
| 105 | 1.1.3.2.30 | Reunión de Estado - Semana 30 | 1.5h | 2017-11-24 | 2017-11-24 |  |  |  | 2017-11-24 | 2017-11-24 | 1.5h | 24.81d | start no earlier than 2017-11-24 | Gustavo Anchante [50%]; Melannie Acevedo [50%]; Jerson Vidal [50%]; Wilfredo Caballero [50%]; Luis Meneses [50%] | 3.75h |  | 51.56 | 51.56 |  |
| 106 | 1.1.3.2.31 | Reunión de Estado - Semana 31 | 1.5h | 2017-12-01 | 2017-12-01 |  |  |  | 2017-12-01 | 2017-12-01 | 1.5h | 19.81d | start no earlier than 2017-12-01 | Gustavo Anchante [50%]; Melannie Acevedo [50%]; Jerson Vidal [50%]; Wilfredo Caballero [50%]; Luis Meneses [50%] | 3.75h |  | 51.56 | 51.56 |  |

| ID | WBS | Task | Type | Duration | Start | Finish | Predecessors | Complete | Remaining | Baseline start | Baseline finish | Baseline duration | Total slack | Constraint | Resources | Work | Actual work | Cost | Baseline cost | Actual cost |
| --- | --- | --- | --- | --- | --- | --- | --- | --- | --- | --- | --- | --- | --- | --- | --- | --- | --- | --- | --- | --- |
| 107 | 1.1.4 | **Cierre** |  | 3d | 2017-12-28 | 2018-01-01 |  |  |  | 2017-11-27 | 2017-12-01 | 5d | 0d |  |  | 6.48h |  |  |  |  |
| 108 | 1.1.4.1 | Elaboración de informe de Cierre |  | 3d | 2017-12-28 | 2018-01-01 | 245 |  |  | 2017-11-27 | 2017-12-01 | 5d | 0d |  | Duglas Quiñones [2%]; Melannie Acevedo [25%] | 6.48h |  |  |  |  |
| 109 | 1.1.4.2 | Informe de Cierre | milestone | 0d | 2018-01-01 | 2018-01-01 | 108 |  |  | 2017-12-01 | 2017-12-01 | 0d | 0d |  |  |  |  |  |  |  |
| 110 | 1.2 | **Actividades de Ingeniería** |  | 196d | 2017-03-15 A | 2017-12-27 |  | 77% | 45.13d | 2017-03-06 | 2017-11-24 | 182d | 3d |  |  | 2202.78h | 1605.98h | 44,223.12 | 40,773.12 | 39,493.12 |
| 111 | 1.2.1 | **Planificación** |  | 27.5d | 2017-03-15 A | 2017-04-25 A |  | 100% |  | 2017-03-15 | 2017-04-25 | 27.5d |  |  |  | 130.44h | 130.44h | 3,445 | 3,445 | 3,445 |
| 112 | 1.2.1.1 | Elaboración de Ficha de Relevamiento v1.0 |  | 15d | 2017-03-15 A | 2017-04-04 A | 13 | 100% |  | 2017-03-15 | 2017-04-04 | 15d |  |  | Romina Arredondo [70%]; Wilfredo Caballero [5%] | 90h | 90h | 2,625 | 2,625 | 2,625 |
| 113 | 1.2.1.2 | Revisión Ficha de Relevamiento v 1.0 |  | 1d | 2017-04-05 A | 2017-04-05 A | 112 | 100% |  | 2017-04-05 | 2017-04-05 | 1d |  |  | Duglas Quiñones [2%]; Gustavo Anchante [20%]; Jeny Espinoza [20%]; Jessy Saenz [20%]; Manuel Horna [2%]; Melannie Acevedo [20%]; Romina Arredondo [40%]; Sonia Herrera [1%]; Waldir Tume [1%]; Wilfredo Caballero [20%] | 11.68h | 11.68h | 160 | 160 | 160 |
| 114 | 1.2.1.3 | Actualización Ficha de Relevamiento v1.0 |  | 11d | 2017-04-06 A | 2017-04-24 A | 113 | 100% |  | 2017-04-06 | 2017-04-24 | 11d |  |  | Romina Arredondo [20%]; Wilfredo Caballero [5%] | 22h | 22h | 550 | 550 | 550 |
| 115 | 1.2.1.4 | Revisión final y firma |  | 4h | 2017-04-25 A | 2017-04-25 A | 114 | 100% |  | 2017-04-25 | 2017-04-25 | 4h |  |  | Duglas Quiñones [5%]; Gustavo Anchante [40%]; Jeny Espinoza [20%]; Jessy Saenz [20%]; Manuel Horna [2%]; Melannie Acevedo [20%]; Romina Arredondo [40%]; Sonia Herrera [1%]; Waldir Tume [1%]; Wilfredo Caballero [20%] | 6.76h | 6.76h | 110 | 110 | 110 |
| 116 | 1.2.1.5 | Ficha de Relevamiento | milestone | 0d | 2017-04-25 A | 2017-04-25 A | 115 | 100% |  | 2017-04-25 | 2017-04-25 | 0d |  |  |  |  |  |  |  |  |
| 117 | 1.2.2 | **Modelado de Procesos** |  | 13.88d | 2017-04-06 A | 2017-04-27 A |  | 100% |  | 2017-04-06 | 2017-04-27 | 13.88d |  |  |  | 80.98h | 80.98h | 2,193.12 | 2,193.12 | 2,193.12 |
| 118 | 1.2.2.1 | **Ficha Técnica del Proceso** |  | 13.88d | 2017-04-06 A | 2017-04-27 A |  | 100% |  | 2017-04-06 | 2017-04-27 | 13.88d |  |  |  | 80.98h | 80.98h | 2,193.12 | 2,193.12 | 2,193.12 |
| 119 | 1.2.2.1.1 | Elaborar FTP Registro y Derivación de Trámite (ATD) |  | 2d | 2017-04-06 A | 2017-04-07 A |  | 100% |  | 2017-04-06 | 2017-04-07 | 2d |  | start no earlier than 2017-04-06 | Romina Arredondo [30%]; Wilfredo Caballero [5%] | 5.6h | 5.6h | 150 | 150 | 150 |
| 120 | 1.2.2.1.2 | Elaborar FTP Asignación, Respuesta y Notificación de Trámite (GSA) |  | 1.5d | 2017-04-10 A | 2017-04-11 A | 119 | 100% |  | 2017-04-10 | 2017-04-11 | 1.5d |  |  | Romina Arredondo [70%]; Wilfredo Caballero [5%] | 9h | 9h | 262.5 | 262.5 | 262.5 |
| 121 | 1.2.2.1.3 | Elaborar FTP Asignación, Respuesta y Notificación de Trámite (ARM) |  | 1.5d | 2017-04-11 A | 2017-04-12 A | 120 | 100% |  | 2017-04-11 | 2017-04-12 | 1.5d |  |  | Romina Arredondo [70%]; Wilfredo Caballero [5%] | 9h | 9h | 262.5 | 262.5 | 262.5 |
| 122 | 1.2.2.1.4 | Elaborar FTP Asignación, Respuesta y Notificación de Trámite (ATS) |  | 1.5d | 2017-04-17 A | 2017-04-18 A | 121 | 100% |  | 2017-04-17 | 2017-04-18 | 1.5d |  |  | Romina Arredondo [70%]; Wilfredo Caballero [5%] | 9h | 9h | 262.5 | 262.5 | 262.5 |
| 123 | 1.2.2.1.5 | Revisión y Firma FTP GSA |  | 2h | 2017-04-27 A | 2017-04-27 A | 129 | 100% |  | 2017-04-27 | 2017-04-27 | 2h |  |  | Duglas Quiñones [1%]; Gustavo Anchante [20%]; Jeny Espinoza [20%]; Jessy Saenz [20%]; Manuel Horna [1%]; Melannie Acevedo [20%]; Romina Arredondo [30%]; Sonia Herrera [1%]; Waldir Tume [1%]; Wilfredo Caballero [20%] | 2.68h | 2.68h | 33.75 | 33.75 | 33.75 |
| 124 | 1.2.2.1.6 | Elaborar FTP Registro y Derivación de Trámite (AJD) |  | 1.5d | 2017-04-18 A | 2017-04-19 A | 122 | 100% |  | 2017-04-18 | 2017-04-19 | 1.5d |  |  | Romina Arredondo [70%]; Wilfredo Caballero [5%] | 9h | 9h | 262.5 | 262.5 | 262.5 |
| 125 | 1.2.2.1.7 | Elaborar FTP Asignación, Respuesta y Notificación de Trámite (GCN) |  | 1.5d | 2017-04-20 A | 2017-04-21 A | 124 | 100% |  | 2017-04-20 | 2017-04-21 | 1.5d |  |  | Romina Arredondo [70%]; Wilfredo Caballero [5%] | 9h | 9h | 262.5 | 262.5 | 262.5 |
| 126 | 1.2.2.1.8 | Revisión y Firma FTP GCN |  | 2h | 2017-04-27 A | 2017-04-27 A | 123 | 100% |  | 2017-04-27 | 2017-04-27 | 2h |  |  | Duglas Quiñones [1%]; Gustavo Anchante [20%]; Jeny Espinoza [20%]; Jessy Saenz [20%]; Manuel Horna [1%]; Melannie Acevedo [20%]; Romina Arredondo [30%]; Sonia Herrera [1%]; Waldir Tume [1%]; Wilfredo Caballero [20%] | 2.68h | 2.68h | 33.75 | 33.75 | 33.75 |
| 127 | 1.2.2.1.9 | Elaborar FTP Asignación, Respuesta y Notificación de Trámite (AEC) |  | 1.5d | 2017-04-21 A | 2017-04-24 A | 125 | 100% |  | 2017-04-21 | 2017-04-24 | 1.5d |  |  | Romina Arredondo [70%]; Wilfredo Caballero [5%] | 9h | 9h | 262.5 | 262.5 | 262.5 |
| 128 | 1.2.2.1.10 | Revisión y Firma FTP AEC |  | 1.5h | 2017-04-27 A | 2017-04-27 A | 126 | 100% |  | 2017-04-27 | 2017-04-27 | 1.5h |  |  | Duglas Quiñones [1%]; Gustavo Anchante [20%]; Jeny Espinoza [20%]; Jessy Saenz [20%]; Manuel Horna [1%]; Melannie Acevedo [20%]; Romina Arredondo [30%]; Sonia Herrera [1%]; Waldir Tume [1%]; Wilfredo Caballero [20%] | 2.01h | 2.01h | 25.31 | 25.31 | 25.31 |
| 129 | 1.2.2.1.11 | Elaborar FTP Registro y Derivación de Trámite (GIM) |  | 2d | 2017-04-25 A | 2017-04-26 A | 127 | 100% |  | 2017-04-25 | 2017-04-26 | 2d |  |  | Romina Arredondo [70%]; Wilfredo Caballero [5%] | 12h | 12h | 350 | 350 | 350 |
| 130 | 1.2.2.1.12 | Revisión y Firma FTP GIM |  | 1.5h | 2017-04-27 A | 2017-04-27 A | 128 | 100% |  | 2017-04-27 | 2017-04-27 | 1.5h |  |  | Duglas Quiñones [1%]; Gustavo Anchante [20%]; Jeny Espinoza [20%]; Jessy Saenz [20%]; Manuel Horna [1%]; Melannie Acevedo [20%]; Romina Arredondo [30%]; Sonia Herrera [1%]; Waldir Tume [1%]; Wilfredo Caballero [20%] | 2.01h | 2.01h | 25.31 | 25.31 | 25.31 |
| 131 | 1.2.2.1.13 | Ficha Técnica del Proceso | milestone | 0d | 2017-04-27 A | 2017-04-27 A | 130 | 100% |  | 2017-04-27 | 2017-04-27 | 0d |  |  |  |  |  |  |  |  |

| ID | WBS | Task | Type | Duration | Start | Finish | Predecessors | Complete | Baseline start | Baseline finish | Baseline duration | Constraint | Resources | Work | Actual work | Cost | Baseline cost | Actual cost |
| --- | --- | --- | --- | --- | --- | --- | --- | --- | --- | --- | --- | --- | --- | --- | --- | --- | --- | --- |
| 132 | 1.2.3 | **Análisis y Diseño de Sistemas** |  | 117.12d | 2017-04-27 A | 2017-10-16 A |  | 100% | 2017-04-27 | 2017-09-27 | 104.12d |  |  | 498.16h | 498.16h | 11,745 | 11,745 | 11,745 |
| 133 | 1.2.3.1 | **Análisis Funcional** |  | 42.5d | 2017-04-27 A | 2017-06-28 A |  | 100% | 2017-04-27 | 2017-06-28 | 42.5d |  |  | 253.76h | 253.76h | 5,910 | 5,910 | 5,910 |
| 134 | 1.2.3.1.1 | Elaborar Documento Funcional de Atención |  | 6d | 2017-04-27 A | 2017-05-08 A | 130 | 100% | 2017-04-27 | 2017-05-08 | 6d |  | Gustavo Anchante [60%]; Jeny Espinoza [10%] | 33.6h | 33.6h | 1,080 | 1,080 | 1,080 |
| 135 | 1.2.3.1.2 | Revisión y firma DF Atención |  | 1d | 2017-06-01 A | 2017-06-02 A | 140 | 100% | 2017-06-01 | 2017-06-02 | 1d |  | Duglas Quiñones [1%]; Gustavo Anchante [20%]; Jeny Espinoza [20%]; Jessy Saenz [20%]; Manuel Horna [1%]; Melannie Acevedo [20%]; Sonia Herrera [1%]; Waldir Tume [1%]; Wilfredo Caballero [20%] | 8.32h | 8.32h | 60 | 60 | 60 |
| 136 | 1.2.3.1.3 | Elaborar Documento Funcional de Registro |  | 6d | 2017-05-08 A | 2017-05-16 A | 134 | 100% | 2017-05-08 | 2017-05-16 | 6d |  | Gustavo Anchante [60%]; Jeny Espinoza [10%] | 33.6h | 33.6h | 1,080 | 1,080 | 1,080 |
| 137 | 1.2.3.1.4 | Revisión y firma DF Registro |  | 1d | 2017-06-02 A | 2017-06-05 A | 135 | 100% | 2017-06-02 | 2017-06-05 | 1d |  | Duglas Quiñones [1%]; Gustavo Anchante [20%]; Jeny Espinoza [20%]; Jessy Saenz [20%]; Manuel Horna [1%]; Melannie Acevedo [20%]; Sonia Herrera [1%]; Waldir Tume [1%]; Wilfredo Caballero [20%] | 8.32h | 8.32h | 60 | 60 | 60 |
| 138 | 1.2.3.1.5 | Elaborar Documento Funcional de Derivación |  | 6d | 2017-05-16 A | 2017-05-24 A | 136 | 100% | 2017-05-16 | 2017-05-24 | 6d |  | Gustavo Anchante [60%]; Jeny Espinoza [10%] | 33.6h | 33.6h | 1,080 | 1,080 | 1,080 |
| 139 | 1.2.3.1.6 | Revisión y firma DF Derivación |  | 0.5d | 2017-06-05 A | 2017-06-06 A | 137 | 100% | 2017-06-05 | 2017-06-06 | 0.5d |  | Duglas Quiñones [1%]; Gustavo Anchante [20%]; Jeny Espinoza [20%]; Jessy Saenz [20%]; Manuel Horna [1%]; Melannie Acevedo [20%]; Sonia Herrera [1%]; Waldir Tume [1%]; Wilfredo Caballero [20%] | 4.16h | 4.16h | 30 | 30 | 30 |
| 140 | 1.2.3.1.7 | Elaborar Documento Funcional de Notificación |  | 6d | 2017-05-24 A | 2017-06-01 A | 138 | 100% | 2017-05-24 | 2017-06-01 | 6d |  | Gustavo Anchante [60%]; Jeny Espinoza [10%] | 33.6h | 33.6h | 1,080 | 1,080 | 1,080 |
| 141 | 1.2.3.1.8 | Revisión y firma DF Notificación |  | 1d | 2017-06-06 A | 2017-06-07 A | 139 | 100% | 2017-06-06 | 2017-06-07 | 1d |  | Duglas Quiñones [1%]; Gustavo Anchante [20%]; Jeny Espinoza [20%]; Jessy Saenz [20%]; Manuel Horna [1%]; Melannie Acevedo [20%]; Sonia Herrera [1%]; Waldir Tume [1%]; Wilfredo Caballero [20%] | 8.32h | 8.32h | 60 | 60 | 60 |
| 142 | 1.2.3.1.9 | Elaborar Documento Funcional de Configuración |  | 8d | 2017-06-07 A | 2017-06-19 A | 141 | 100% | 2017-06-07 | 2017-06-19 | 8d |  | Gustavo Anchante [40%]; Jeny Espinoza [10%] | 32h | 32h | 960 | 960 | 960 |
| 143 | 1.2.3.1.10 | Revisión y firma DF Configuración |  | 7d | 2017-06-19 A | 2017-06-28 A | 142 | 100% | 2017-06-19 | 2017-06-28 | 7d |  | Duglas Quiñones [1%]; Gustavo Anchante [20%]; Jeny Espinoza [20%]; Jessy Saenz [20%]; Manuel Horna [1%]; Melannie Acevedo [20%]; Sonia Herrera [1%]; Waldir Tume [1%]; Wilfredo Caballero [20%] | 58.24h | 58.24h | 420 | 420 | 420 |
| 144 | 1.2.3.1.11 | Documento de Definición Funcional | milestone | 0d | 2017-06-28 A | 2017-06-28 A | 143 | 100% | 2017-06-28 | 2017-06-28 | 0d |  |  |  |  |  |  |  |
| 145 | 1.2.3.2 | **Análisis Técnico** |  | 86d | 2017-06-13 A | 2017-10-16 A |  | 100% | 2017-06-13 | 2017-09-27 | 73d |  |  | 244.4h | 244.4h | 5,835 | 5,835 | 5,835 |
| 146 | 1.2.3.2.1 | Elaboración de Documento Técnico de Notificación |  | 7d | 2017-06-13 A | 2017-06-21 A |  | 100% | 2017-06-13 | 2017-06-21 | 7d | start no earlier than 2017-06-13 | Gustavo Anchante [50%] | 28h | 28h | 1,050 | 1,050 | 1,050 |
| 147 | 1.2.3.2.2 | Revisión de DT Notificación |  | 2d | 2017-06-22 A | 2017-06-23 A | 146 | 100% | 2017-06-22 | 2017-06-23 | 2d |  | Edgard Marquez [20%]; Luis Celis [20%]; Marleny del Piélago [20%] | 9.6h | 9.6h |  |  |  |
| 148 | 1.2.3.2.3 | Levantamiento de observaciones DT Notificación |  | 3d | 2017-07-04 A | 2017-07-06 A | 149 | 100% | 2017-07-04 | 2017-07-06 | 3d |  | Gustavo Anchante [50%] | 12h | 12h | 450 | 450 | 450 |
| 149 | 1.2.3.2.4 | Elaboración de Documento Técnico de Configuración |  | 4d | 2017-06-26 A | 2017-07-03 A | 147 | 100% | 2017-06-26 | 2017-07-03 | 4d |  | Gustavo Anchante [50%] | 16h | 16h | 600 | 600 | 600 |
| 150 | 1.2.3.2.5 | Revisión de DT Configuración |  | 3d | 2017-07-07 A | 2017-07-11 A | 148 | 100% | 2017-07-07 | 2017-07-11 | 3d |  | Edgard Marquez [20%]; Luis Celis [20%]; Marleny del Piélago [20%] | 14.4h | 14.4h |  |  |  |
| 151 | 1.2.3.2.6 | Levantamiento de observaciones DT Configuración |  | 3d | 2017-07-12 A | 2017-07-14 A | 150 | 100% | 2017-07-12 | 2017-07-14 | 3d |  | Gustavo Anchante [50%] | 12h | 12h | 450 | 450 | 450 |
| 152 | 1.2.3.2.7 | Segunda revisión DT Configuración |  | 3d | 2017-08-09 A | 2017-08-11 A | 151FS+16d | 100% | 2017-08-09 | 2017-08-11 | 3d |  | Edgard Marquez [20%]; Luis Celis [20%]; Marleny del Piélago [20%] | 14.4h | 14.4h |  |  |  |
| 153 | 1.2.3.2.8 | Elaboración Documento Técnico Derivación |  | 5d | 2017-08-09 A | 2017-08-15 A | 152SS | 100% | 2017-08-09 | 2017-08-15 | 5d |  | Gustavo Anchante [50%] | 20h | 20h | 750 | 750 | 750 |
| 154 | 1.2.3.2.9 | Revisión interna DT Derivación |  | 1d | 2017-08-16 A | 2017-08-16 A | 153 | 100% | 2017-08-16 | 2017-08-16 | 1d |  | Gustavo Anchante [15%]; Luis Meneses [30%] | 3.6h | 3.6h | 45 | 45 | 45 |
| 155 | 1.2.3.2.10 | Levantamiento de observaciones DT Derivación |  | 1d | 2017-08-17 A | 2017-08-17 A | 154 | 100% | 2017-08-17 | 2017-08-17 | 1d |  | Gustavo Anchante [50%] | 4h | 4h | 150 | 150 | 150 |
| 156 | 1.2.3.2.11 | Revisión de DT Derivación |  | 3d | 2017-08-18 A | 2017-08-22 A | 155 | 100% | 2017-08-18 | 2017-08-22 | 3d |  | Edgard Marquez [20%]; Luis Celis [20%]; Marleny del Piélago [20%] | 14.4h | 14.4h |  |  |  |
| 157 | 1.2.3.2.12 | Levantamiento de observaciones DT Derivación |  | 2d | 2017-08-23 A | 2017-08-24 A | 156 | 100% | 2017-08-23 | 2017-08-24 | 2d |  | Gustavo Anchante [50%] | 8h | 8h | 300 | 300 | 300 |
| 158 | 1.2.3.2.13 | Revisión interna DT Derivación |  | 1d | 2017-08-25 A | 2017-08-25 A | 157 | 100% | 2017-08-25 | 2017-08-25 | 1d |  | Gustavo Anchante [15%]; Luis Meneses [30%] | 3.6h | 3.6h | 45 | 45 | 45 |
| 159 | 1.2.3.2.14 | Segunda revisión de DT Derivación |  | 2d | 2017-08-28 A | 2017-08-29 A | 158 | 100% | 2017-08-28 | 2017-08-29 | 2d |  | Edgard Marquez [20%]; Luis Celis [20%]; Marleny del Piélago [20%] | 9.6h | 9.6h |  |  |  |
| 160 | 1.2.3.2.15 | Elaboración de acta de conformidad y firmas |  | 1d | 2017-08-31 A | 2017-08-31 A | 159 | 100% | 2017-08-31 | 2017-08-31 | 1d |  | Gustavo Anchante [50%] | 4h | 4h | 150 | 150 | 150 |
| 161 | 1.2.3.2.16 | Elaboración Documento Técnico Registro - Atención |  | 6d | 2017-09-22 A | 2017-09-29 A | 194 | 100% | 2017-09-05 | 2017-09-12 | 6d | finish no earlier than 2017-09-29 | Gustavo Anchante [50%] | 24h | 24h | 900 | 900 | 900 |
| 162 | 1.2.3.2.17 | Revisión interna DT Registro - Atención |  | 1d | 2017-10-02 A | 2017-10-02 A | 161 | 100% | 2017-09-13 | 2017-09-13 | 1d |  | Gustavo Anchante [15%]; Luis Meneses [30%] | 3.6h | 3.6h | 45 | 45 | 45 |
| 163 | 1.2.3.2.18 | Levantamiento de observaciones DT Registro - Atención |  | 2d | 2017-10-03 A | 2017-10-04 A | 162 | 100% | 2017-09-14 | 2017-09-15 | 2d |  | Gustavo Anchante [50%] | 8h | 8h | 300 | 300 | 300 |
| 164 | 1.2.3.2.19 | Revisión de DT Registro - Atención |  | 2d | 2017-10-05 A | 2017-10-06 A | 163 | 100% | 2017-09-18 | 2017-09-19 | 2d |  | Edgard Marquez [20%]; Luis Celis [20%]; Marleny del Piélago [20%] | 9.6h | 9.6h |  |  |  |
| 165 | 1.2.3.2.20 | Levantamiento de observaciones DT Registro - Atención |  | 3d | 2017-10-09 A | 2017-10-11 A | 164 | 100% | 2017-09-20 | 2017-09-22 | 3d |  | Gustavo Anchante [50%] | 12h | 12h | 450 | 450 | 450 |
| 166 | 1.2.3.2.21 | Segunda revisión de DT Registro - Atención |  | 2d | 2017-10-12 A | 2017-10-13 A | 165 | 100% | 2017-09-25 | 2017-09-26 | 2d |  | Edgard Marquez [20%]; Luis Celis [20%]; Marleny del Piélago [20%] | 9.6h | 9.6h |  |  |  |
| 167 | 1.2.3.2.22 | Elaboración de acta de conformidad y firmas |  | 1d | 2017-10-16 A | 2017-10-16 A | 166 | 100% | 2017-09-27 | 2017-09-27 | 1d |  | Gustavo Anchante [50%] | 4h | 4h | 150 | 150 | 150 |
| 168 | 1.2.3.2.23 | Documento Técnico de Sistemas | milestone | 0d | 2017-10-16 A | 2017-10-16 A | 167 | 100% | 2017-09-27 | 2017-09-27 | 0d |  |  |  |  |  |  |  |

| ID | WBS | Task | Type | Duration | Start | Finish | Predecessors | Complete | Remaining | Baseline start | Baseline finish | Baseline duration | Total slack | Free slack | Constraint | Resources | Work | Actual work | Cost | Baseline cost | Actual cost |
| --- | --- | --- | --- | --- | --- | --- | --- | --- | --- | --- | --- | --- | --- | --- | --- | --- | --- | --- | --- | --- | --- |
| 169 | 1.2.4 | **Construcción** |  | 123.62d | 2017-06-28 A | 2017-12-27 |  | 57% | 52.71d | 2017-03-06 | 2017-11-24 | 182d | 3d |  |  |  | 1299.6h | 702.8h | 22,140 | 13,690 | 17,410 |
| 170 | 1.2.4.1 | **Requerimiento 1 - Notificación y Configuracion (149120)** |  | 95.62d | 2017-06-28 A | 2017-11-15 |  | 89% | 10.41d | 2017-03-06 | 2017-09-07 | 127d | 31d |  |  |  | 570h | 534.8h | 15,730 | 9,880 | 15,610 |
| 171 | 1.2.4.1.1 | **Desarrollo** |  | 58.62d | 2017-06-28 A | 2017-09-22 A |  | 100% |  | 2017-06-28 | 2017-08-18 | 34.62d |  |  |  |  | 500h | 500h | 15,475 | 9,625 | 15,475 |
| 172 | 1.2.4.1.1.1 | Elaboración de casos de prueba |  | 3d | 2017-08-01 A | 2017-08-03 A |  | 100% |  | 2017-08-01 | 2017-08-03 | 3d |  |  | start no earlier than 2017-08-01 | Gustavo Anchante [50%] | 12h | 12h | 450 | 450 | 450 |
| 173 | 1.2.4.1.1.2 | Preparación del ambiente |  | 1d | 2017-06-28 A | 2017-07-03 A | 143 | 100% |  | 2017-06-28 | 2017-07-03 | 1d |  |  |  | Eduardo Passano [50%]; Jaime Durand [50%]; Julio Morales [50%] | 12h | 12h | 375 | 375 | 375 |
| 174 | 1.2.4.1.1.3 | Inducción al desarrollador DT Notificación |  | 1d | 2017-07-03 A | 2017-07-04 A | 173 | 100% |  | 2017-07-03 | 2017-07-04 | 1d |  |  |  | Julio Morales [50%] | 4h | 4h | 125 | 125 | 125 |
| 175 | 1.2.4.1.1.4 | Inducción al desarrollador DT Configuración |  | 1d | 2017-07-14 A | 2017-07-14 A | 151FF | 100% |  | 2017-07-14 | 2017-07-14 | 1d |  |  |  | Jaime Durand [50%] | 4h | 4h | 125 | 125 | 125 |
| 176 | 1.2.4.1.1.5 | Codificación de formularios Notificación |  | 17d | 2017-07-04 A | 2017-07-27 A | 174 | 100% |  | 2017-07-04 | 2017-07-27 | 17d |  |  |  | Julio Morales [70%] | 95.2h | 95.2h | 2,975 | 2,975 | 2,975 |
| 177 | 1.2.4.1.1.6 | Codificación de formularios Configuración |  | 15d | 2017-07-17 A | 2017-08-07 A | 175 | 100% |  | 2017-07-17 | 2017-07-25 | 7d |  |  |  | Jaime Durand [70%] | 84h | 84h | 2,625 | 1,225 | 2,625 |
| 178 | 1.2.4.1.1.7 | Ejecución de pruebas unitarias de los formularios Notificación |  | 10d | 2017-08-04 A | 2017-08-17 A | 172 | 100% |  | 2017-08-04 | 2017-08-09 | 4d |  |  |  | Julio Morales [70%] | 56h | 56h | 1,750 | 700 | 1,750 |
| 179 | 1.2.4.1.1.8 | Ejecución de pruebas unitarias de los formularios Configuración |  | 10d | 2017-08-08 A | 2017-08-21 A | 177 | 100% |  | 2017-07-26 | 2017-08-01 | 4d |  |  |  | Jaime Durand [70%] | 56h | 56h | 1,750 | 700 | 1,750 |
| 180 | 1.2.4.1.1.9 | Codificación de PQT DTS |  | 15d | 2017-08-22 A | 2017-09-12 A | 179 | 100% |  | 2017-08-02 | 2017-08-10 | 7d |  |  |  | Eduardo Passano [70%]; Jaime Durand [30%] | 120h | 120h | 3,750 | 1,750 | 3,750 |
| 181 | 1.2.4.1.1.10 | Ejecución de pruebas unitarias de PQT DTS |  | 5d | 2017-09-13 A | 2017-09-19 A | 180 | 100% |  | 2017-08-11 | 2017-08-15 | 3d |  |  |  | Eduardo Passano [70%]; Jaime Durand [70%] | 35.2h | 35.2h | 1,100 | 750 | 1,100 |
| 182 | 1.2.4.1.1.11 | Elaboración de documentación de pase |  | 3d | 2017-09-15 A | 2017-09-19 A | 181FF | 100% |  | 2017-08-11 | 2017-08-15 | 3d |  |  |  | Gustavo Anchante [50%] | 12h | 12h | 450 | 450 | 450 |
| 183 | 1.2.4.1.1.12 | Validación del Arquitecto y Líder Funcional |  | 3d | 2017-09-20 A | 2017-09-22 A | 181 | 100% |  | 2017-08-16 | 2017-08-18 | 3d |  |  |  | Edgard Marquez [20%]; Luis Meneses [20%] | 9.6h | 9.6h |  |  |  |
| 184 | 1.2.4.1.2 | **Pruebas** |  | 30d | 2017-09-25 A | 2017-11-06 |  | 60% | 12d | 2017-08-21 | 2017-08-28 | 6d | 31d |  |  |  | 66.8h | 34.8h | 135 | 135 | 135 |
| 185 | 1.2.4.1.2.1 | Revisión del pase por parte del A.F.C.C.T.I. |  | 3d | 2017-09-25 A | 2017-09-27 A |  | 100% |  | 2017-08-21 | 2017-08-23 | 3d |  |  | start no earlier than 2017-09-25 | Analista de AFCCTI | 24h | 24h |  |  |  |
| 186 | 1.2.4.1.2.2 | Ejecución de pruebas de aceptación |  | 3d | 2017-09-28 A | 2017-10-02 A | 185 | 100% |  | 2017-08-24 | 2017-08-28 | 3d |  |  |  | Gustavo Anchante [50%]; Luis Meneses [30%] | 10.8h | 10.8h | 135 | 135 | 135 |
| 187 | 1.2.4.1.2.3 | Revisión del pase por parte del A.F.C.C.T.I. |  | 2d | 2017-10-31 | 2017-11-02 | 186 |  |  |  |  |  | 31d | 0d | start no earlier than 2017-10-31 | Analista de AFCCTI | 16h |  |  |  |  |
| 188 | 1.2.4.1.2.4 | Ejecución de pruebas de aceptación |  | 2d | 2017-11-03 | 2017-11-06 | 187 |  |  |  |  |  | 31d | 0d |  | Jonathan Aldave | 16h |  |  |  |  |
| 189 | 1.2.4.1.3 | Solicitud de Pase a Producción |  | 2d | 2017-11-07 | 2017-11-08 | 188 |  |  | 2017-08-29 | 2017-08-31 | 2d | 31d | 0d |  | Gustavo Anchante [20%] | 3.2h |  | 120 | 120 |  |
| 190 | 1.2.4.1.4 | Seguimiento |  | 5d | 2017-11-09 | 2017-11-15 | 189 |  |  | 2017-09-01 | 2017-09-07 | 5d | 31d | 0d |  |  |  |  |  |  |  |
| 191 | 1.2.4.1.5 | Pase a Producción 1 | milestone | 0d | 2017-11-15 | 2017-11-15 | 190 |  |  | 2017-03-06 | 2017-03-06 | 0d | 31d |  |  |  |  |  |  |  |  |
| 192 | 1.2.4.2 | **Requerimiento 2 - Derivación y Asignación (####)** |  | 76d | 2017-08-21 A | 2017-12-06 |  | 37% | 48.25d | 2017-03-06 | 2017-10-31 | 165d | 16d |  |  |  | 473.6h | 168h | 4,160 | 1,440 | 1,800 |
| 193 | 1.2.4.2.1 | **Desarrollo** |  | 62d | 2017-08-21 A | 2017-11-16 |  | 47% | 32.9d | 2017-08-21 | 2017-10-05 | 33d | 30d |  |  |  | 414.4h | 168h | 3,800 | 600 | 1,800 |
| 194 | 1.2.4.2.1.1 | Elaboración de casos de prueba |  | 2d | 2017-09-01 A | 2017-09-04 A | 160 | 100% |  | 2017-09-01 | 2017-09-04 | 2d |  |  |  | Gustavo Anchante [50%] | 8h | 8h | 300 | 300 | 300 |
| 195 | 1.2.4.2.1.2 | Inducción al desarrollador DT Derivación |  | 1d | 2017-08-21 A | 2017-08-21 A |  | 100% |  | 2017-08-21 | 2017-08-21 | 1d |  |  | start no earlier than 2017-08-21 |  |  |  |  |  |  |

| ID | WBS | Task | Duration | Start | Finish | Predecessors | Complete | Remaining | Baseline start | Baseline finish | Baseline duration | Total slack | Free slack | Constraint | Resources | Work | Actual work | Cost | Baseline cost | Actual cost |
| --- | --- | --- | --- | --- | --- | --- | --- | --- | --- | --- | --- | --- | --- | --- | --- | --- | --- | --- | --- | --- |
| 196 | 1.2.4.2.1.3 | **Derivacion Automatica** | 13d | 2017-10-17 A | 2017-11-03 |  | 73% | 3.55d |  |  |  | 37d |  |  |  | 88h | 64h |  |  |  |
| 197 | 1.2.4.2.1.3.1 | 1ra Derivacion | 3d | 2017-10-17 A | 2017-10-19 A |  | 100% |  |  |  |  |  |  | start no earlier than 2017-10-17 | Bryan Luna | 24h | 24h |  |  |  |
| 198 | 1.2.4.2.1.3.2 | 1ra Recepcion | 1d | 2017-10-20 A | 2017-10-20 A | 197 | 100% |  |  |  |  |  |  |  | Bryan Luna | 8h | 8h |  |  |  |
| 199 | 1.2.4.2.1.3.3 | Envio de correo | 0.5d | 2017-11-02 | 2017-11-02 | 201 |  |  |  |  |  | 37d | 0d |  | Bryan Luna | 4h |  |  |  |  |
| 200 | 1.2.4.2.1.3.4 | 2da Derivacion | 3d | 2017-10-25 A | 2017-10-27 A |  | 100% |  |  |  |  |  |  | start no earlier than 2017-10-25 | Bryan Luna | 24h | 24h |  |  |  |
| 201 | 1.2.4.2.1.3.5 | 2da Recepcion | 2d | 2017-10-30 A | 2017-10-31 | 200 | 50% | 1d |  |  |  | 37d | 0d |  | Bryan Luna | 16h | 8h |  |  |  |
| 202 | 1.2.4.2.1.3.6 | Envio de correo | 0.5d | 2017-11-02 | 2017-11-02 | 199 |  |  |  |  |  | 37d | 0d |  | Bryan Luna | 4h |  |  |  |  |
| 203 | 1.2.4.2.1.3.7 | Generacion de Acta de pruebas | 1d | 2017-11-03 | 2017-11-03 | 202 |  |  |  |  |  | 37d | 0d |  | Bryan Luna | 8h |  |  |  |  |
| 204 | 1.2.4.2.1.4 | **Asignación Automatica** | 15d | 2017-10-23 A | 2017-11-13 |  | 55% | 6.82d |  |  |  | 33d |  |  |  | 88h | 48h | 2,000 |  | 1,500 |
| 205 | 1.2.4.2.1.4.1 | Balanceo de carga | 2d | 2017-10-23 A | 2017-10-24 A |  | 100% |  |  |  |  |  |  | start no earlier than 2017-10-23 | Eduardo Passano | 16h | 16h | 500 |  | 500 |
| 206 | 1.2.4.2.1.4.2 | Asignacion Automatica | 5d | 2017-10-25 A | 2017-10-31 | 205 | 80% | 1d |  |  |  | 37d | 0d |  | Eduardo Passano | 40h | 32h | 1,250 |  | 1,000 |
| 207 | 1.2.4.2.1.4.3 | Integracion con Derivacion Automatica | 1d | 2017-11-02 | 2017-11-02 | 206 |  |  |  |  |  | 37d | 0d |  | Eduardo Passano | 8h |  | 250 |  |  |
| 208 | 1.2.4.2.1.4.4 | Envio de Correo Resolutor | 1d | 2017-11-06 | 2017-11-06 | 203 |  |  |  |  |  | 37d | 0d |  | Bryan Luna | 8h |  |  |  |  |
| 209 | 1.2.4.2.1.4.5 | Envio de Correo Archivo | 1d | 2017-11-07 | 2017-11-07 | 208 |  |  |  |  |  | 37d |  |  | Bryan Luna | 8h |  |  |  |  |
| 210 | 1.2.4.2.1.4.6 | Generacion de Acta de pruebas | 1d | 2017-11-13 | 2017-11-13 | 220 |  |  |  |  |  | 33d |  |  | Bryan Luna | 8h |  |  |  |  |
| 211 | 1.2.4.2.1.5 | **Retirar la opción de inventario (automatizar)** | 10d | 2017-10-24 A | 2017-11-07 |  | 40% | 6d | 2017-08-22 | 2017-08-28 | 5d | 37d |  |  |  | 120h | 48h | 750 |  |  |
| 212 | 1.2.4.2.1.5.1 | Mapeo de Objetos de BD | 1d | 2017-10-24 A | 2017-10-24 A |  | 100% |  |  |  |  |  |  | start no earlier than 2017-10-24 | Edward Lopez | 8h | 8h |  |  |  |
| 213 | 1.2.4.2.1.5.2 | Mapeo de Objetos de Fuentes | 3d | 2017-10-30 A | 2017-11-02 |  | 33% | 2d |  |  |  | 40d |  | start no earlier than 2017-10-30 | Jonathan Aldave | 24h | 8h |  |  |  |
| 214 | 1.2.4.2.1.5.3 | Retirar el uso de la tabla Inventario en las Derivaciones | 6d | 2017-10-25 A | 2017-11-02 |  | 67% | 2d |  |  |  | 0d |  | start no earlier than 2017-10-25 | Edward Lopez | 48h | 32h |  |  |  |
| 215 | 1.2.4.2.1.5.4 | Retirar el uso de la tabla Inventario en la aplicación | 2d | 2017-11-03 | 2017-11-06 | 214 |  |  |  |  |  | 0d |  |  | Edward Lopez | 16h |  |  |  |  |
| 216 | 1.2.4.2.1.5.5 | Retirar el uso de la tabla Inventario en la BD | 3d | 2017-11-03 | 2017-11-07 | 207 |  |  |  |  |  | 37d |  |  | Eduardo Passano | 24h |  | 750 |  |  |
| 217 | 1.2.4.2.1.6 | **N Derivaciones** | 5d | 2017-11-07 | 2017-11-13 |  |  |  |  |  |  | 0d |  |  |  | 16h |  |  |  |  |
| 218 | 1.2.4.2.1.6.1 | Modificar la aplicación para soporte de todos los destinos | 1d | 2017-11-07 | 2017-11-07 | 215 |  |  |  |  |  | 0d |  |  | Edward Lopez | 8h |  |  |  |  |
| 219 | 1.2.4.2.1.6.2 | Generacion de Acta de pruebas | 1d | 2017-11-13 | 2017-11-13 | 220 |  |  |  |  |  | 33d |  |  | Edward Lopez | 8h |  |  |  |  |
| 220 | 1.2.4.2.1.7 | Ejecución de pruebas integrales del proceso | 3d | 2017-11-08 | 2017-11-10 | 218 |  |  | 2017-09-22 | 2017-09-28 | 5d | 0d |  |  | Edward Lopez; Bryan Luna; Eduardo Passano | 72h |  | 750 |  |  |
| 221 | 1.2.4.2.1.8 | Elaboración de documentación de pase | 2d | 2017-11-13 | 2017-11-14 | 220 |  |  | 2017-09-29 | 2017-10-02 | 2d | 0d |  |  | Jonathan Aldave | 16h |  |  | 300 |  |
| 222 | 1.2.4.2.1.9 | Validación del Arquitecto y el Líder Funcional | 2d | 2017-11-15 | 2017-11-16 | 221 |  |  | 2017-10-03 | 2017-10-05 | 3d | 0d |  |  | Edgard Marquez [20%]; Luis Meneses [20%] | 6.4h |  |  |  |  |

| ID | WBS | Task | Type | Duration | Start | Finish | Predecessors | Complete | Remaining | Baseline start | Baseline finish | Baseline duration | Total slack | Free slack | Constraint | Resources | Work | Actual work | Cost | Baseline cost | Actual cost |
| --- | --- | --- | --- | --- | --- | --- | --- | --- | --- | --- | --- | --- | --- | --- | --- | --- | --- | --- | --- | --- | --- |
| 223 | 1.2.4.2.2 | **Pruebas** |  | 7d | 2017-11-17 | 2017-11-27 |  |  |  | 2017-10-06 | 2017-10-20 | 11d | 16d |  |  |  | 43.2h |  | 360 | 720 |  |
| 224 | 1.2.4.2.2.1 | Revisión del pase por parte del A.F.C.C.T.I. |  | 3d | 2017-11-17 | 2017-11-21 | 222 |  |  | 2017-10-06 | 2017-10-10 | 3d | 16d | 0d |  | Analista de AFCCTI | 24h |  |  |  |  |
| 225 | 1.2.4.2.2.2 | Ejecución de pruebas de aceptación |  | 4d | 2017-11-22 | 2017-11-27 | 224 |  |  | 2017-10-11 | 2017-10-20 | 8d | 16d | 0d |  | Gustavo Anchante [30%]; Luis Meneses [30%] | 19.2h |  | 360 | 720 |  |
| 226 | 1.2.4.2.3 | Pase a producción |  | 2d | 2017-11-28 | 2017-11-29 | 225 |  |  | 2017-10-23 | 2017-10-24 | 2d | 16d | 0d |  | Jonathan Aldave | 16h |  |  | 120 |  |
| 227 | 1.2.4.2.4 | Seguimiento |  | 5d | 2017-11-30 | 2017-12-06 | 226 |  |  | 2017-10-25 | 2017-10-31 | 5d | 16d | 0d |  |  |  |  |  |  |  |
| 228 | 1.2.4.2.5 | Pase a Producción 2 | milestone | 0d | 2017-12-06 | 2017-12-06 | 227 |  |  | 2017-03-06 | 2017-03-06 | 0d | 16d |  |  |  |  |  |  |  |  |
| 229 | 1.2.4.3 | **Requerimiento 3 - Registro y Atención (####)** |  | 27d | 2017-11-17 | 2017-12-27 |  |  |  | 2017-09-25 | 2017-11-24 | 44d | 0d |  |  |  | 256h |  | 2,250 | 2,370 |  |
| 230 | 1.2.4.3.1 | **Desarrollo** |  | 14d | 2017-11-17 | 2017-12-06 |  |  |  | 2017-09-25 | 2017-10-30 | 26d | 0d |  |  |  | 182.4h |  | 2,250 | 1,200 |  |
| 231 | 1.2.4.3.1.1 | Elaboración de casos de prueba |  | 0.5d | 2017-11-17 | 2017-11-17 | 222 |  |  | 2017-09-25 | 2017-09-27 | 3d | 0d |  |  | Jonathan Aldave; Luis Meneses | 8h |  |  | 450 |  |
| 232 | 1.2.4.3.1.2 | Inducción al desarrollador DT Registro - Atención |  | 0.5d | 2017-11-17 | 2017-11-17 | 231 |  |  | 2017-09-29 | 2017-09-29 | 1d | 0d |  |  | Jonathan Aldave; Luis Meneses | 8h |  |  |  |  |
| 233 | 1.2.4.3.1.3 | Codificación de procedimientos almacenados |  | 3d | 2017-11-20 | 2017-11-22 | 232 |  |  | 2017-10-02 | 2017-10-03 | 2d | 0d |  |  | Edward Lopez | 24h |  |  |  |  |
| 234 | 1.2.4.3.1.4 | Codificación de Formularios |  | 3d | 2017-11-23 | 2017-11-27 | 233 |  |  | 2017-10-09 | 2017-10-18 | 8d | 0d |  |  | Edward Lopez | 24h |  |  |  |  |
| 235 | 1.2.4.3.1.5 | Codificación de PQT DTS |  | 4d | 2017-11-20 | 2017-11-23 | 232 |  |  | 2017-10-04 | 2017-10-06 | 3d | 23d | 0d |  | Eduardo Passano | 32h |  | 1,000 |  |  |
| 236 | 1.2.4.3.1.6 | Generacion de Acta de pruebas |  | 2d | 2017-11-24 | 2017-11-27 | 235 |  |  |  |  |  | 23d |  | start no earlier than 2017-11-24 | Eduardo Passano | 16h |  | 500 |  |  |
| 237 | 1.2.4.3.1.7 | Ejecución de pruebas integrales |  | 3d | 2017-11-28 | 2017-11-30 | 234 |  |  | 2017-10-19 | 2017-10-24 | 4d | 0d |  |  | Edward Lopez; Eduardo Passano | 48h |  | 750 |  |  |
| 238 | 1.2.4.3.1.8 | Elaboración de documentación de pase |  | 2d | 2017-12-01 | 2017-12-04 | 237 |  |  | 2017-10-19 | 2017-10-25 | 5d | 0d |  |  | Jonathan Aldave | 16h |  |  | 750 |  |
| 239 | 1.2.4.3.1.9 | Validación del Arquitecto y el Líder Funcional |  | 2d | 2017-12-05 | 2017-12-06 | 238 |  |  | 2017-10-26 | 2017-10-30 | 3d | 0d |  |  | Edgard Marquez [20%]; Luis Meneses [20%] | 6.4h |  |  |  |  |
| 240 | 1.2.4.3.2 | **Pruebas** |  | 6d | 2017-12-07 | 2017-12-15 |  |  |  | 2017-10-31 | 2017-11-14 | 10d | 0d |  |  |  | 57.6h |  |  | 1,050 |  |
| 241 | 1.2.4.3.2.1 | Revisión del pase por parte del A.F.C.C.T.I. |  | 2d | 2017-12-07 | 2017-12-11 | 239 |  |  | 2017-10-31 | 2017-11-03 | 3d | 0d |  |  | Analista de AFCCTI | 16h |  |  |  |  |
| 242 | 1.2.4.3.2.2 | Ejecución de pruebas de aceptación |  | 4d | 2017-12-12 | 2017-12-15 | 241 |  |  | 2017-11-06 | 2017-11-14 | 7d | 0d |  |  | Jonathan Aldave; Luis Meneses [30%] | 41.6h |  |  | 1,050 |  |
| 243 | 1.2.4.3.3 | Pase a Producción |  | 2d | 2017-12-18 | 2017-12-19 | 242 |  |  | 2017-11-15 | 2017-11-16 | 2d | 0d |  |  | Jonathan Aldave | 16h |  |  | 120 |  |
| 244 | 1.2.4.3.4 | Seguimiento |  | 5d | 2017-12-20 | 2017-12-27 | 243 |  |  | 2017-11-17 | 2017-11-24 | 6d | 0d |  |  |  |  |  |  |  |  |
| 245 | 1.2.4.3.5 | Pase a producción 4 | milestone | 0d | 2017-12-27 | 2017-12-27 | 244 |  |  | 2017-11-16 | 2017-11-16 | 0d | 0d |  |  |  |  |  |  |  |  |
| 246 | 1.2.5 | **Actividades Complementarias** |  | 137d | 2017-05-30 A | 2017-12-14 |  | 82% | 23.99d | 2017-05-30 | 2017-11-10 | 114d | 11d |  |  |  | 193.6h | 193.6h | 4,700 | 9,700 | 4,700 |
| 247 | 1.2.5.1 | Formularios de criterios de configuración |  | 10d | 2017-08-28 A | 2017-09-11 A |  | 100% |  | 2017-08-28 | 2017-09-11 | 10d |  |  | start no earlier than 2017-08-28 | Jerson Vidal [50%]; Wilfredo Caballero [10%] | 48h | 48h | 1,250 | 1,250 | 1,250 |

| ID | WBS | Task | Type | Duration | Start | Finish | Predecessors | Complete | Remaining | Baseline start | Baseline finish | Baseline duration | Total slack | Free slack | Constraint | Resources | Work | Actual work | Cost | Baseline cost | Actual cost |
| --- | --- | --- | --- | --- | --- | --- | --- | --- | --- | --- | --- | --- | --- | --- | --- | --- | --- | --- | --- | --- | --- |
| 248 | 1.2.5.2 | **Propuesta de Categorización** |  | 16.5d | 2017-05-30 A | 2017-06-21 A |  | 100% |  | 2017-05-30 | 2017-06-21 | 16.5d |  |  |  |  | 66.88h | 66.88h | 1,650 | 1,650 | 1,650 |
| 249 | 1.2.5.2.1 | Elaboración |  | 14d | 2017-05-30 A | 2017-06-16 A |  | 100% |  | 2017-05-30 | 2017-06-16 | 14d |  |  | start no earlier than 2017-05-30 | Romina Arredondo [40%] | 44.8h | 44.8h | 1,400 | 1,400 | 1,400 |
| 250 | 1.2.5.2.2 | Revisión y aprobación |  | 2.5d | 2017-06-19 A | 2017-06-21 A | 249 | 100% |  | 2017-06-19 | 2017-06-21 | 2.5d |  |  |  | Romina Arredondo [40%]; Duglas Quiñones [2%]; Jessy Saenz [20%]; Manuel Horna [2%]; Melannie Acevedo [20%]; Miguel Amaya [20%]; Sonia Herrera [2%]; Waldir Tume [2%]; Wilfredo Caballero [20%] | 22.08h | 22.08h | 250 | 250 | 250 |
| 251 | 1.2.5.3 | **Sección "Trámites" - Página Web del SAT** |  | 120d | 2017-06-05 A | 2017-11-24 |  | 75% | 30d | 2017-06-05 | 2017-11-10 | 110d | 11d |  |  |  | 78.72h | 78.72h | 1,800 | 6,800 | 1,800 |
| 252 | 1.2.5.3.1 | Elaboración |  | 15d | 2017-06-05 A | 2017-06-23 A |  | 100% |  | 2017-06-05 | 2017-06-23 | 15d |  |  | start no earlier than 2017-06-05 | Romina Arredondo [40%] | 48h | 48h | 1,500 | 1,500 | 1,500 |
| 253 | 1.2.5.3.2 | Revisión y aprobación |  | 3d | 2017-06-26 A | 2017-06-28 A | 252 | 100% |  | 2017-06-26 | 2017-06-28 | 3d |  |  |  | Romina Arredondo [40%]; Duglas Quiñones [2%]; Jessy Saenz [20%]; Manuel Horna [2%]; Melannie Acevedo [20%]; Miguel Amaya [20%]; Sonia Herrera [2%]; Waldir Tume [2%]; Wilfredo Caballero [20%] | 30.72h | 30.72h | 300 | 300 | 300 |
| 254 | 1.2.5.3.3 | Elaboración de guías de llenado de formatos | milestone | 0d | 2017-06-28 A | 2017-06-28 A | 253 | 100% |  | 2017-08-02 | 2017-10-11 | 50d |  |  | start no earlier than 2017-08-02 | Jerson Vidal [40%] |  |  |  | 5,000 |  |
| 255 | 1.2.5.3.4 | Diseño página web | milestone | 0d | 2017-06-28 A | 2017-06-28 A | 254 | 100% |  | 2017-08-22 | 2017-09-01 | 8d |  |  |  | Edith Huere [20%] |  |  |  |  |  |
| 256 | 1.2.5.3.5 | Implementación |  | 5d | 2017-11-17 | 2017-11-23 | 222 |  |  | 2017-11-02 | 2017-11-10 | 7d | 11d | 0d |  |  |  |  |  |  |  |
| 257 | 1.2.5.3.6 | Generacion de Acta de pruebas |  | 1d | 2017-11-24 | 2017-11-24 | 256 |  |  |  |  |  | 11d | 0d |  |  |  |  |  |  |  |
| 258 | 1.2.5.4 | **Pruebas** |  | 6d | 2017-11-27 | 2017-12-04 |  |  |  | 2017-10-31 | 2017-11-14 | 10d | 11d |  |  |  |  |  |  | 1,050 |  |
| 259 | 1.2.5.4.1 | Revisión del pase por parte del A.F.C.C.T.I. |  | 2d | 2017-11-27 | 2017-11-28 | 257 |  |  | 2017-10-31 | 2017-11-03 | 3d | 11d | 0d |  |  |  |  |  |  |  |
| 260 | 1.2.5.4.2 | Ejecución de pruebas de aceptación |  | 4d | 2017-11-29 | 2017-12-04 | 259 |  |  | 2017-11-06 | 2017-11-14 | 7d | 11d | 0d |  |  |  |  |  | 1,050 |  |
| 261 | 1.2.5.5 | Pase a Producción |  | 2d | 2017-12-05 | 2017-12-06 | 260 |  |  | 2017-11-15 | 2017-11-16 | 2d | 11d | 0d |  |  |  |  |  | 120 |  |
| 262 | 1.2.5.6 | Seguimiento |  | 5d | 2017-12-07 | 2017-12-14 | 261 |  |  | 2017-11-17 | 2017-11-24 | 6d | 11d | 0d |  |  |  |  |  |  |  |
| 263 | 1.2.5.7 | Pase a producción 3 | milestone | 0d | 2017-12-14 | 2017-12-14 | 262 |  |  | 2017-11-16 | 2017-11-16 | 0d | 11d |  |  |  |  |  |  |  |  |
| 264 | 1.2.5.8 | **Dimensionamiento** |  | 52d | 2017-06-26 A | 2017-09-11 A |  | 100% |  | 2017-06-26 | 2017-09-11 | 52d |  |  |  |  |  |  |  |  |  |
| 265 | 1.2.5.8.1 | Elaboración de informe de Dimensionamiento I |  | 8d | 2017-06-26 A | 2017-07-07 A | 253SS | 100% |  | 2017-06-26 | 2017-07-07 | 8d |  |  |  |  |  |  |  |  |  |
| 266 | 1.2.5.8.2 | Elaboración de Informe de Dimensionamiento II |  | 30d | 2017-07-19 A | 2017-08-31 A | 19 | 100% |  | 2017-07-19 | 2017-08-31 | 30d |  |  |  |  |  |  |  |  |  |
| 267 | 1.2.5.8.3 | Revisión y Aprobación |  | 7d | 2017-09-01 A | 2017-09-11 A | 266 | 100% |  | 2017-09-01 | 2017-09-11 | 7d |  |  |  |  |  |  |  |  |  |
