# Proyecto1-AE PAGO FACIL

Schedule from MS Project, 2017-03-06 to 2017-10-20, status date 2017-09-30, costs in S/., A marks actual dates.

## Calendars

- Estándar: Mon-Fri 09:00-13:00, 15:00-19:00; Sat-Sun off. Exceptions (off unless hours are given): 2017-04-13 to 2017-04-14 (Semana Santa), 2017-05-01 (Dia del trabajo), 2017-06-29 (dia del Campesino), 2017-07-28 (Fiestas Patrias), 2017-08-30 (Santa rosa).

## Resources

| Resource | Rate |
| --- | --- |
| Marie holguin |  |
| Jorge Montes | 31.25 |

## Schedule

| ID | WBS | Task | Duration | Start | Finish | Predecessors | Complete | Remaining | Baseline start | Baseline finish | Baseline duration | Total slack | Constraint | Resources | Work | Actual work | Cost | Baseline cost | Actual cost |
| --- | --- | --- | --- | --- | --- | --- | --- | --- | --- | --- | --- | --- | --- | --- | --- | --- | --- | --- | --- |
| 1 | 1 | **AE-PAGO FACIL** | 159d | 2017-03-06 A | 2017-10-20 |  | 94% | 9.28d | 2017-03-06 | 2017-10-10 | 151d | 0d |  |  | 960h | 904h | 7,250 | 6,000 | 5,500 |
| 2 | 1.1 | Planificacion | 46d | 2017-03-06 A | 2017-05-11 A |  | 100% |  | 2017-03-06 | 2017-05-11 | 46d |  |  | Marie holguin | 368h | 368h |  |  |  |
| 3 | 1.2 | Modelado de procesos | 45d | 2017-05-12 A | 2017-07-14 A | 2 | 100% |  | 2017-05-12 | 2017-07-14 | 45d |  |  | Marie holguin | 360h | 360h |  |  |  |
| 4 | 1.3 | **Construccion** | 68d | 2017-07-17 A | 2017-10-20 |  | 76% | 16.41d | 2017-07-17 | 2017-10-10 | 60d | 0d |  |  | 232h | 176h | 7,250 | 6,000 | 5,500 |
| 5 | 1.3.1 | **Scotiabank - Imp. Vehicular** | 68d | 2017-07-17 A | 2017-10-20 |  | 76% | 16.41d | 2017-07-17 | 2017-10-10 | 60d | 0d |  |  | 232h | 176h | 7,250 | 6,000 | 5,500 |
| 6 | 1.3.1.1 | **Desarrollo** | 68d | 2017-07-17 A | 2017-10-20 A |  | 100% |  | 2017-07-17 | 2017-07-24 | 6d |  |  |  | 88h | 88h | 2,750 | 1,500 | 2,750 |
| 7 | 1.3.1.1.1 | Consulta Placa | 2d | 2017-07-17 A | 2017-07-18 A | 3 | 100% |  | 2017-07-17 | 2017-07-18 | 2d |  |  | Jorge Montes | 16h | 16h | 500 | 500 | 500 |
| 8 | 1.3.1.1.2 | Pago con Placa | 2d | 2017-07-19 A | 2017-07-20 A | 7 | 100% |  | 2017-07-19 | 2017-07-20 | 2d |  |  | Jorge Montes | 16h | 16h | 500 | 500 | 500 |
| 9 | 1.3.1.1.3 | Extorno con Placa | 1d | 2017-07-21 A | 2017-07-21 A | 8 | 100% |  | 2017-07-21 | 2017-07-21 | 1d |  |  | Jorge Montes | 8h | 8h | 250 | 250 | 250 |
| 10 | 1.3.1.1.4 | Conciliacion con Placa | 6d | 2017-07-24 A | 2017-10-20 A |  | 100% |  | 2017-07-24 | 2017-07-24 | 1d |  |  | Jorge Montes | 48h | 48h | 1,500 | 250 | 1,500 |
| 11 | 1.3.1.2 | Prueba | 2d | 2017-08-07 A | 2017-08-08 A |  | 100% |  | 2017-08-07 | 2017-08-08 | 2d |  | start no earlier than 2017-08-07 | Jorge Montes | 16h | 16h | 500 | 500 | 500 |
| 12 | 1.3.1.3 | Control de Calidad | 3d | 2017-08-09 A | 2017-08-11 A | 11 | 100% |  | 2017-08-09 | 2017-08-11 | 3d |  |  | Jorge Montes | 24h | 24h | 750 | 750 | 750 |
| 13 | 1.3.1.4 | Pruebas de Aceptación | 6d | 2017-09-22 A | 2017-09-29 A |  | 100% |  | 2017-09-22 | 2017-09-29 | 6d |  | start no earlier than 2017-09-22 | Jorge Montes | 48h | 48h | 1,500 | 1,500 | 1,500 |
| 14 | 1.3.1.5 | Pase a Producción | 7d | 2017-10-02 | 2017-10-10 |  |  |  | 2017-10-02 | 2017-10-10 | 7d | 8d | start no earlier than 2017-10-02 | Jorge Montes | 56h |  | 1,750 | 1,750 |  |
