# Cronograma de Actividades SAJU

Schedule from MS Project, 2017-03-09 to 2018-02-27, A marks actual dates.
S.A.T.

## Calendars

- Estándar: Mon-Fri 09:00-13:00, 14:00-18:00; Sat-Sun off. Exceptions (off unless hours are given): 2017-04-13 to 2017-04-14 (FERIADO), 2017-05-01 (DIA DEL TRABAJO), 2017-06-29 (FERIADO), 2017-07-28 (FIESTAS PATRIAS), 2017-08-30 (SANTA ROSA), 2017-11-01 (FERIADO), 2017-12-08 (FERIADO), 2017-12-25 (NAVIDAD).

## Resources

| Resource |
| --- |
| Rosicarmen |
| Diego |
| Marjorie |
| Luis |
| América |
| Usuario |
| Emperatriz |
| Edgard Marquez |
| Ronald Raico |
| Celis |
| AF Calidad |
| Jose Luis |
| Logistica |
| Todos |
| Proveedor |
| Trazabilidad |

## Schedule

| ID | WBS | Task | Duration | Start | Finish | Predecessors | Complete | Remaining | Baseline start | Baseline finish | Baseline duration | Total slack | Constraint | Resources | Work | Actual work |
| --- | --- | --- | --- | --- | --- | --- | --- | --- | --- | --- | --- | --- | --- | --- | --- | --- |
| 1 | 1 | **Ejecución de AE SAJU** | 245d | 2017-03-09 A | 2018-02-27 |  | 55% | 109.94d | 2017-03-09 | 2018-01-01 | 204d | 0d |  |  | 2784.6h | 2395.68h |
| 2 | 1.1 | **1. ACTIVIDADES DE GESTIÓN** | 204d | 2017-03-09 A | 2018-01-01 |  | 67% | 66.89d | 2017-03-09 | 2018-01-01 | 204d | 41d |  |  | 55.2h | 55.2h |
| 3 | 1.1.1 | **1.1 Planificación** | 7d | 2017-05-22 A | 2017-05-30 A |  | 100% |  | 2017-05-22 | 2017-05-30 | 7d |  |  |  | 55.2h | 55.2h |
| 4 | 1.1.1.1 | **1.1.1 Gestión del Alcance** | 7d | 2017-05-22 A | 2017-05-30 A |  | 100% |  | 2017-05-22 | 2017-05-30 | 7d |  |  |  | 55.2h | 55.2h |
| 5 | 1.1.1.1.1 | Elaboración del documento | 3d | 2017-05-22 A | 2017-05-24 A |  | 100% |  | 2017-05-22 | 2017-05-24 | 3d |  | start no earlier than 2017-05-22 | América [50%] | 12h | 12h |
| 6 | 1.1.1.1.2 | Revisión del documento | 1d | 2017-05-25 A | 2017-05-25 A | 5 | 100% |  | 2017-05-25 | 2017-05-25 | 1d |  |  | Luis [45%]; Marjorie [80%]; Usuario [70%] | 15.6h | 15.6h |
| 7 | 1.1.1.1.3 | Levantamiento de observaciones | 1d | 2017-05-26 A | 2017-05-26 A | 6 | 100% |  | 2017-05-26 | 2017-05-26 | 1d |  |  | América [50%] | 4h | 4h |
| 8 | 1.1.1.1.4 | Validación Final | 1d | 2017-05-29 A | 2017-05-29 A | 7 | 100% |  | 2017-05-29 | 2017-05-29 | 1d |  |  | Luis [45%]; Marjorie [80%]; Usuario [70%] | 15.6h | 15.6h |
| 9 | 1.1.1.1.5 | Aprobación del documento | 1d | 2017-05-30 A | 2017-05-30 A | 8 | 100% |  | 2017-05-30 | 2017-05-30 | 1d |  |  | Todos | 8h | 8h |
| 10 | 1.1.2 | **1.2 Ejecución** | 204d | 2017-03-09 A | 2018-01-01 |  | 82% | 36.27d | 2017-03-09 | 2018-01-01 | 204d | 41d |  |  |  |  |
| 11 | 1.1.2.1 | **1.2.1 Gestión de las Adquisiciones** | 204d | 2017-03-09 A | 2018-01-01 |  | 82% | 36.27d | 2017-03-09 | 2018-01-01 | 204d | 41d |  |  |  |  |
| 12 | 1.1.2.1.1 | **1.2.1.1 Servicios de Terceros** | 204d | 2017-03-09 A | 2018-01-01 |  | 82% | 36.27d | 2017-03-09 | 2018-01-01 | 204d | 41d |  |  |  |  |
| 13 | 1.1.2.1.1.1 | **1.2.1.1.1 Contratación** | 158d | 2017-03-09 A | 2017-10-24 |  | 95% | 7.9d | 2017-03-09 | 2017-10-24 | 158d | 87d |  |  |  |  |
| 14 | 1.1.2.1.1.1.1 | **A. Persona Natural** | 158d | 2017-03-09 A | 2017-10-24 |  | 70% | 47.4d | 2017-03-09 | 2017-10-24 | 158d | 87d |  |  |  |  |
| 15 | 1.1.2.1.1.1.1.1 | Rosicarmen Alcazaba (procesos) | 1d | 2017-03-09 A | 2017-03-09 A |  | 100% |  | 2017-03-09 | 2017-03-09 | 1d |  |  |  |  |  |
| 16 | 1.1.2.1.1.1.1.2 | Saúl Vásquez (sistemas) | 1d | 2017-03-09 A | 2017-03-09 A |  | 100% |  | 2017-03-09 | 2017-03-09 | 1d |  |  |  |  |  |
| 17 | 1.1.2.1.1.1.1.3 | Diego Condezo (sistemas) | 1d | 2017-04-17 A | 2017-04-17 A |  | 100% |  | 2017-04-17 | 2017-04-17 | 1d |  | start no earlier than 2017-04-17 |  |  |  |
| 18 | 1.1.2.1.1.1.1.4 | Diego Condezo (sistemas) | 1d | 2017-06-22 A | 2017-06-22 A |  | 100% |  | 2017-06-22 | 2017-06-22 | 1d |  | start no earlier than 2017-06-22 |  |  |  |
| 19 | 1.1.2.1.1.1.1.5 | Diego Condezo (sistemas) | 1d | 2017-09-25 | 2017-09-25 |  |  |  | 2017-09-25 | 2017-09-25 | 1d | 108d | start no earlier than 2017-09-25 |  |  |  |
| 20 | 1.1.2.1.1.1.1.6 | Emperatriz Rosario (procesos) | 1d | 2017-06-19 A | 2017-06-19 A |  | 100% |  | 2017-06-19 | 2017-06-19 | 1d |  | start no earlier than 2017-06-19 |  |  |  |
| 21 | 1.1.2.1.1.1.1.7 | Jose Luis (programador) | 1d | 2017-06-01 A | 2017-06-01 A |  | 100% |  | 2017-06-01 | 2017-06-01 | 1d |  | start no earlier than 2017-06-01 |  |  |  |
| 22 | 1.1.2.1.1.1.1.8 | Jose Luis (programador) | 1d | 2017-07-03 A | 2017-07-03 A |  | 100% |  | 2017-07-03 | 2017-07-03 | 1d |  | start no earlier than 2017-07-03 |  |  |  |
| 23 | 1.1.2.1.1.1.1.9 | Jose Luis (programador) | 1d | 2017-08-28 | 2017-08-28 |  |  |  | 2017-08-28 | 2017-08-28 | 1d | 127d | start no earlier than 2017-08-28 |  |  |  |
| 24 | 1.1.2.1.1.1.1.10 | Jose Luis (programador) | 1d | 2017-10-24 | 2017-10-24 |  |  |  | 2017-10-24 | 2017-10-24 | 1d | 87d | start no earlier than 2017-10-24 |  |  |  |

| ID | WBS | Task | Duration | Start | Finish | Predecessors | Complete | Baseline start | Baseline finish | Baseline duration | Constraint |
| --- | --- | --- | --- | --- | --- | --- | --- | --- | --- | --- | --- |
| 25 | 1.1.2.1.1.1.2 | **B. Persona Jurídica** | 58d | 2017-06-05 A | 2017-08-25 A |  | 100% | 2017-06-05 | 2017-08-25 | 58d |  |
| 26 | 1.1.2.1.1.1.2.1 | **PROCESO DE CONTRATACIÓN (SAJU) 1** | 29d | 2017-06-05 A | 2017-07-14 A |  | 100% | 2017-06-05 | 2017-07-14 | 29d |  |
| 27 | 1.1.2.1.1.1.2.1.1 | Elaboración de TDR | 3d | 2017-06-05 A | 2017-06-07 A |  | 100% | 2017-06-05 | 2017-06-07 | 3d | start no earlier than 2017-06-05 |
| 28 | 1.1.2.1.1.1.2.1.2 | Aprobación de los TDR | 1d | 2017-06-07 A | 2017-06-07 A |  | 100% | 2017-06-07 | 2017-06-07 | 1d | start no earlier than 2017-06-07 |
| 29 | 1.1.2.1.1.1.2.1.3 | Elaboración y Firma de Bases | 1d | 2017-07-03 A | 2017-07-03 A |  | 100% | 2017-07-03 | 2017-07-03 | 1d | start no earlier than 2017-07-03 |
| 30 | 1.1.2.1.1.1.2.1.4 | Publicación de convocatoria | 1d | 2017-07-03 A | 2017-07-03 A |  | 100% | 2017-07-03 | 2017-07-03 | 1d | start no earlier than 2017-07-03 |
| 31 | 1.1.2.1.1.1.2.1.5 | Registro de participantes | 9d | 2017-07-03 A | 2017-07-13 A |  | 100% | 2017-07-03 | 2017-07-13 | 9d | start no earlier than 2017-07-03 |
| 32 | 1.1.2.1.1.1.2.1.6 | Consultas y observaciones | 2d | 2017-07-04 A | 2017-07-05 A |  | 100% | 2017-07-04 | 2017-07-05 | 2d | start no earlier than 2017-07-04 |
| 33 | 1.1.2.1.1.1.2.1.7 | Absolución de consultas y observaciones | 1d | 2017-07-06 A | 2017-07-06 A |  | 100% | 2017-07-06 | 2017-07-06 | 1d | start no earlier than 2017-07-06 |
| 34 | 1.1.2.1.1.1.2.1.8 | Integración de Bases | 1d | 2017-07-07 A | 2017-07-07 A |  | 100% | 2017-07-07 | 2017-07-07 | 1d | start no earlier than 2017-07-07 |
| 35 | 1.1.2.1.1.1.2.1.9 | Presentación de ofertas | 1d | 2017-07-13 A | 2017-07-13 A |  | 100% | 2017-07-13 | 2017-07-13 | 1d | finish no earlier than 2017-07-13 |
| 36 | 1.1.2.1.1.1.2.1.10 | Evaluación y calificación | 1d | 2017-07-13 A | 2017-07-13 A |  | 100% | 2017-07-13 | 2017-07-13 | 1d | start no earlier than 2017-07-13 |
| 37 | 1.1.2.1.1.1.2.1.11 | Otorgamiento de la nueva Pro | 1d | 2017-07-14 A | 2017-07-14 A |  | 100% | 2017-07-14 | 2017-07-14 | 1d | start no earlier than 2017-07-14 |
| 38 | 1.1.2.1.1.1.2.2 | **PROCESO DE CONTRATACIÓN (SAJU) -2da** | 24d | 2017-07-24 A | 2017-08-25 A |  | 100% | 2017-07-24 | 2017-08-25 | 24d |  |
| 39 | 1.1.2.1.1.1.2.2.1 | Elaboración y Firma de Bases | 2d | 2017-07-24 A | 2017-07-25 A |  | 100% | 2017-07-24 | 2017-07-25 | 2d | start no earlier than 2017-07-24 |
| 40 | 1.1.2.1.1.1.2.2.2 | Publicación de convocatoria | 1d | 2017-07-26 A | 2017-07-26 A |  | 100% | 2017-07-26 | 2017-07-26 | 1d | start no earlier than 2017-07-26 |
| 41 | 1.1.2.1.1.1.2.2.3 | Registro de participantes | 10d | 2017-07-31 A | 2017-08-11 A |  | 100% | 2017-07-31 | 2017-08-11 | 10d | finish no earlier than 2017-08-11 |
| 42 | 1.1.2.1.1.1.2.2.4 | Consultas y observaciones | 2d | 2017-07-31 A | 2017-08-01 A |  | 100% | 2017-07-31 | 2017-08-01 | 2d | start no earlier than 2017-07-31 |
| 43 | 1.1.2.1.1.1.2.2.5 | Absolución de consultas y observaciones | 1d | 2017-08-02 A | 2017-08-02 A | 42 | 100% | 2017-08-02 | 2017-08-02 | 1d | start no earlier than 2017-08-02 |
| 44 | 1.1.2.1.1.1.2.2.6 | Integración de Bases | 1d | 2017-08-08 A | 2017-08-08 A |  | 100% | 2017-08-08 | 2017-08-08 | 1d | start no earlier than 2017-08-08 |
| 45 | 1.1.2.1.1.1.2.2.7 | Presentación de ofertas | 1d | 2017-08-11 A | 2017-08-11 A |  | 100% | 2017-08-11 | 2017-08-11 | 1d | start no earlier than 2017-08-11 |
| 46 | 1.1.2.1.1.1.2.2.8 | Evaluación y calificación | 1d | 2017-08-14 A | 2017-08-14 A | 45 | 100% | 2017-08-14 | 2017-08-14 | 1d | start no earlier than 2017-08-14 |
| 47 | 1.1.2.1.1.1.2.2.9 | Otorgamiento de la nueva Pro | 1d | 2017-08-14 A | 2017-08-14 A | 46 | 100% | 2017-08-14 | 2017-08-14 | 1d | start no earlier than 2017-08-14 |
| 48 | 1.1.2.1.1.1.2.2.10 | Firma de Contrato | 8d | 2017-08-16 A | 2017-08-25 A | 47 | 100% | 2017-08-16 | 2017-08-25 | 8d | start no earlier than 2017-08-25 |

Notes:
- 37: Se declaró desierto

| ID | WBS | Task | Duration | Start | Finish | Complete | Remaining | Baseline start | Baseline finish | Baseline duration | Total slack | Constraint |
| --- | --- | --- | --- | --- | --- | --- | --- | --- | --- | --- | --- | --- |
| 49 | 1.1.2.1.1.2 | **1.2.1.1.2 Inducción** | 2d | 2017-03-09 A | 2017-03-10 A | 100% |  | 2017-03-09 | 2017-03-10 | 2d |  |  |
| 50 | 1.1.2.1.1.2.1 | Presentación de equipos | 1d | 2017-03-09 A | 2017-03-09 A | 100% |  | 2017-03-09 | 2017-03-09 | 1d |  |  |
| 51 | 1.1.2.1.1.2.2 | Capacitación en Procesos | 1d | 2017-03-10 A | 2017-03-10 A | 100% |  | 2017-03-10 | 2017-03-10 | 1d |  | start no earlier than 2017-03-10 |
| 52 | 1.1.2.1.1.2.3 | Capacitación en la nueva arquitectura | 1d | 2017-03-09 A | 2017-03-09 A | 100% |  | 2017-03-09 | 2017-03-09 | 1d |  |  |
| 53 | 1.1.2.1.1.2.4 | Pasantía con el área usuaria | 2d | 2017-03-09 A | 2017-03-10 A | 100% |  | 2017-03-09 | 2017-03-10 | 2d |  |  |
| 54 | 1.1.2.1.1.3 | **1.2.1.1.3 Informes** | 187d | 2017-04-03 A | 2018-01-01 | 48% | 97.24d | 2017-04-03 | 2018-01-01 | 187d | 41d |  |
| 55 | 1.1.2.1.1.3.1 | **A. Persona Natural** | 164d | 2017-04-03 A | 2017-11-27 | 57% | 70.29d | 2017-04-03 | 2017-11-27 | 164d | 64d |  |
| 56 | 1.1.2.1.1.3.1.1 | Rosicarmen Alcazaba (procesos) | 1d | 2017-04-03 A | 2017-04-03 A | 100% |  | 2017-04-03 | 2017-04-03 | 1d |  | start no earlier than 2017-04-03 |
| 57 | 1.1.2.1.1.3.1.2 | Rosicarmen Alcazaba (procesos) | 1d | 2017-05-03 A | 2017-05-03 A | 100% |  | 2017-05-03 | 2017-05-03 | 1d |  | start no earlier than 2017-05-03 |
| 58 | 1.1.2.1.1.3.1.3 | Rosicarmen Alcazaba (procesos) | 1d | 2017-06-05 A | 2017-06-05 A | 100% |  | 2017-06-05 | 2017-06-05 | 1d |  | start no earlier than 2017-06-05 |
| 59 | 1.1.2.1.1.3.1.4 | Saúl Vásquez (sistemas) | 1d | 2017-04-03 A | 2017-04-03 A | 100% |  | 2017-04-03 | 2017-04-03 | 1d |  | start no earlier than 2017-04-03 |
| 60 | 1.1.2.1.1.3.1.5 | Diego Condezo (sistemas) | 1d | 2017-04-28 A | 2017-04-28 A | 100% |  | 2017-04-28 | 2017-04-28 | 1d |  | start no earlier than 2017-04-28 |
| 61 | 1.1.2.1.1.3.1.6 | Diego Condezo (sistemas) | 1d | 2017-05-26 A | 2017-05-26 A | 100% |  | 2017-05-26 | 2017-05-26 | 1d |  | start no earlier than 2017-05-26 |
| 62 | 1.1.2.1.1.3.1.7 | Diego Condezo (sistemas) | 1d | 2017-06-26 A | 2017-06-26 A | 100% |  | 2017-06-26 | 2017-06-26 | 1d |  | start no earlier than 2017-06-26 |
| 63 | 1.1.2.1.1.3.1.8 | Diego Condezo (sistemas) | 1d | 2017-07-24 A | 2017-07-24 A | 100% |  | 2017-07-24 | 2017-07-24 | 1d |  | start no earlier than 2017-07-24 |
| 64 | 1.1.2.1.1.3.1.9 | Diego Condezo (sistemas) | 1d | 2017-08-28 | 2017-08-28 |  |  | 2017-08-28 | 2017-08-28 | 1d | 127d | start no earlier than 2017-08-28 |
| 65 | 1.1.2.1.1.3.1.10 | Diego Condezo (sistemas) | 1d | 2017-09-26 | 2017-09-26 |  |  | 2017-09-26 | 2017-09-26 | 1d | 107d | start no earlier than 2017-09-26 |
| 66 | 1.1.2.1.1.3.1.11 | Diego Condezo (sistemas) | 1d | 2017-10-26 | 2017-10-26 |  |  | 2017-10-26 | 2017-10-26 | 1d | 85d | start no earlier than 2017-10-26 |
| 67 | 1.1.2.1.1.3.1.12 | Diego Condezo (sistemas) | 1d | 2017-11-27 | 2017-11-27 |  |  | 2017-11-27 | 2017-11-27 | 1d | 64d | start no earlier than 2017-11-27 |
| 68 | 1.1.2.1.1.3.1.13 | Emperatriz Rosario (procesos) | 1d | 2017-07-14 A | 2017-07-14 A | 100% |  | 2017-07-14 | 2017-07-14 | 1d |  | start no earlier than 2017-07-14 |
| 69 | 1.1.2.1.1.3.1.14 | Emperatriz Rosario (procesos) | 1d | 2017-08-15 A | 2017-08-15 A | 100% |  | 2017-08-15 | 2017-08-15 | 1d |  | start no earlier than 2017-08-15 |
| 70 | 1.1.2.1.1.3.1.15 | Emperatriz Rosario (procesos) | 1d | 2017-09-19 | 2017-09-19 |  |  | 2017-09-19 | 2017-09-19 | 1d | 112d | start no earlier than 2017-09-19 |
| 71 | 1.1.2.1.1.3.1.16 | Jose Luis (programador) | 1d | 2017-06-27 A | 2017-06-27 A | 100% |  | 2017-06-27 | 2017-06-27 | 1d |  | start no earlier than 2017-06-27 |
| 72 | 1.1.2.1.1.3.1.17 | Jose Luis (programador) | 1d | 2017-07-24 A | 2017-07-24 A | 100% |  | 2017-07-24 | 2017-07-24 | 1d |  | start no earlier than 2017-07-24 |
| 73 | 1.1.2.1.1.3.1.18 | Jose Luis (programador) | 1d | 2017-08-28 | 2017-08-28 |  |  | 2017-08-28 | 2017-08-28 | 1d | 127d | start no earlier than 2017-08-28 |
| 74 | 1.1.2.1.1.3.1.19 | Jose Luis (programador) | 1d | 2017-09-25 | 2017-09-25 |  |  | 2017-09-25 | 2017-09-25 | 1d | 108d | start no earlier than 2017-09-25 |
| 75 | 1.1.2.1.1.3.1.20 | Jose Luis (programador) | 1d | 2017-10-24 | 2017-10-24 |  |  | 2017-10-24 | 2017-10-24 | 1d | 87d | start no earlier than 2017-10-24 |
| 76 | 1.1.2.1.1.3.1.21 | Jose Luis (programador) | 1d | 2017-11-24 | 2017-11-24 |  |  | 2017-11-24 | 2017-11-24 | 1d | 65d | start no earlier than 2017-11-24 |

| ID | WBS | Task | Duration | Start | Finish | Complete | Remaining | Baseline start | Baseline finish | Baseline duration | Total slack | Constraint |
| --- | --- | --- | --- | --- | --- | --- | --- | --- | --- | --- | --- | --- |
| 77 | 1.1.2.1.1.3.2 | **B. Persona Jurídica** | 79d | 2017-09-08 | 2018-01-01 |  |  | 2017-09-08 | 2018-01-01 | 79d | 41d |  |
| 78 | 1.1.2.1.1.3.2.1 | Entregable 1 | 1d | 2017-09-08 | 2017-09-08 |  |  | 2017-09-08 | 2017-09-08 | 1d | 119d | start no earlier than 2017-09-08 |
| 79 | 1.1.2.1.1.3.2.2 | Entregable 2 | 1d | 2017-09-28 | 2017-09-28 |  |  | 2017-09-28 | 2017-09-28 | 1d | 105d | start no earlier than 2017-09-28 |
| 80 | 1.1.2.1.1.3.2.3 | Entregable 3 | 1d | 2017-11-08 | 2017-11-08 |  |  | 2017-11-08 | 2017-11-08 | 1d | 77d | start no earlier than 2017-11-08 |
| 81 | 1.1.2.1.1.3.2.4 | Entregable 4 | 1d | 2018-01-01 | 2018-01-01 |  |  | 2018-01-01 | 2018-01-01 | 1d | 41d | start no earlier than 2018-01-01 |
| 82 | 1.1.3 | **1.3 Seguiminto y Control** | 105d | 2017-07-31 A | 2017-12-28 | 4% | 100.62d | 2017-07-31 | 2017-12-28 | 105d | 43d |  |
| 83 | 1.1.3.1 | **1.3.1 Informe mensual** | 105d | 2017-07-31 A | 2017-12-28 | 17% | 87.5d | 2017-07-31 | 2017-12-28 | 105d | 43d |  |
| 84 | 1.1.3.1.1 | Informe mensual 1 | 1d | 2017-07-31 A | 2017-07-31 A | 100% |  | 2017-07-31 | 2017-07-31 | 1d |  | start no earlier than 2017-07-28 |
| 85 | 1.1.3.1.2 | Informe mensual 2 | 1d | 2017-08-28 | 2017-08-28 |  |  | 2017-08-28 | 2017-08-28 | 1d | 127d | start no earlier than 2017-08-28 |
| 86 | 1.1.3.1.3 | Informe mensual 3 | 1d | 2017-09-28 | 2017-09-28 |  |  | 2017-09-28 | 2017-09-28 | 1d | 105d | start no earlier than 2017-09-28 |
| 87 | 1.1.3.1.4 | Informe mensual 4 | 1d | 2017-10-30 | 2017-10-30 |  |  | 2017-10-30 | 2017-10-30 | 1d | 83d | start no earlier than 2017-10-30 |
| 88 | 1.1.3.1.5 | Informe mensual 5 | 1d | 2017-11-28 | 2017-11-28 |  |  | 2017-11-28 | 2017-11-28 | 1d | 63d | start no earlier than 2017-11-28 |
| 89 | 1.1.3.1.6 | Informe mensual 6 | 1d | 2017-12-28 | 2017-12-28 |  |  | 2017-12-28 | 2017-12-28 | 1d | 43d | start no earlier than 2017-12-28 |
| 90 | 1.1.3.2 | **1.3.2 Reuniones de Seguimiento** | 83d | 2017-08-31 | 2017-12-28 |  |  | 2017-08-31 | 2017-12-28 | 83d | 43d |  |
| 91 | 1.1.3.2.1 | Reuniones de Seguimiento 1 | 1d | 2017-08-31 | 2017-08-31 |  |  | 2017-08-31 | 2017-08-31 | 1d | 125d | start no earlier than 2017-08-31 |
| 92 | 1.1.3.2.2 | Reuniones de Seguimiento 2 | 1d | 2017-09-07 | 2017-09-07 |  |  | 2017-09-07 | 2017-09-07 | 1d | 120d | start no earlier than 2017-09-07 |
| 93 | 1.1.3.2.3 | Reuniones de Seguimiento 3 | 1d | 2017-09-14 | 2017-09-14 |  |  | 2017-09-14 | 2017-09-14 | 1d | 115d | start no earlier than 2017-09-14 |
| 94 | 1.1.3.2.4 | Reuniones de Seguimiento 4 | 1d | 2017-09-21 | 2017-09-21 |  |  | 2017-09-21 | 2017-09-21 | 1d | 110d | start no earlier than 2017-09-21 |
| 95 | 1.1.3.2.5 | Reuniones de Seguimiento 5 | 1d | 2017-09-28 | 2017-09-28 |  |  | 2017-09-28 | 2017-09-28 | 1d | 105d | start no earlier than 2017-09-28 |
| 96 | 1.1.3.2.6 | Reuniones de Seguimiento 6 | 1d | 2017-10-05 | 2017-10-05 |  |  | 2017-10-05 | 2017-10-05 | 1d | 100d | start no earlier than 2017-10-05 |
| 97 | 1.1.3.2.7 | Reuniones de Seguimiento 7 | 1d | 2017-10-12 | 2017-10-12 |  |  | 2017-10-12 | 2017-10-12 | 1d | 95d | start no earlier than 2017-10-12 |
| 98 | 1.1.3.2.8 | Reuniones de Seguimiento 8 | 1d | 2017-10-19 | 2017-10-19 |  |  | 2017-10-19 | 2017-10-19 | 1d | 90d | start no earlier than 2017-10-19 |
| 99 | 1.1.3.2.9 | Reuniones de Seguimiento 9 | 1d | 2017-10-26 | 2017-10-26 |  |  | 2017-10-26 | 2017-10-26 | 1d | 85d | start no earlier than 2017-10-26 |
| 100 | 1.1.3.2.10 | Reuniones de Seguimiento 10 | 1d | 2017-11-02 | 2017-11-02 |  |  | 2017-11-02 | 2017-11-02 | 1d | 81d | start no earlier than 2017-11-02 |
| 101 | 1.1.3.2.11 | Reuniones de Seguimiento 11 | 1d | 2017-11-09 | 2017-11-09 |  |  | 2017-11-09 | 2017-11-09 | 1d | 76d | start no earlier than 2017-11-09 |
| 102 | 1.1.3.2.12 | Reuniones de Seguimiento 12 | 1d | 2017-11-16 | 2017-11-16 |  |  | 2017-11-16 | 2017-11-16 | 1d | 71d | start no earlier than 2017-11-16 |
| 103 | 1.1.3.2.13 | Reuniones de Seguimiento 13 | 1d | 2017-11-23 | 2017-11-23 |  |  | 2017-11-23 | 2017-11-23 | 1d | 66d | start no earlier than 2017-11-23 |
| 104 | 1.1.3.2.14 | Reuniones de Seguimiento 14 | 1d | 2017-11-30 | 2017-11-30 |  |  | 2017-11-30 | 2017-11-30 | 1d | 61d | start no earlier than 2017-11-30 |
| 105 | 1.1.3.2.15 | Reuniones de Seguimiento 15 | 1d | 2017-12-07 | 2017-12-07 |  |  | 2017-12-07 | 2017-12-07 | 1d | 56d | start no earlier than 2017-12-07 |
| 106 | 1.1.3.2.16 | Reuniones de Seguimiento 16 | 1d | 2017-12-14 | 2017-12-14 |  |  | 2017-12-14 | 2017-12-14 | 1d | 52d | start no earlier than 2017-12-14 |
| 107 | 1.1.3.2.17 | Reuniones de Seguimiento 17 | 1d | 2017-12-21 | 2017-12-21 |  |  | 2017-12-21 | 2017-12-21 | 1d | 47d | start no earlier than 2017-12-21 |
| 108 | 1.1.3.2.18 | Reuniones de Seguimiento 18 | 1d | 2017-12-28 | 2017-12-28 |  |  | 2017-12-28 | 2017-12-28 | 1d | 43d | start no earlier than 2017-12-28 |

| ID | WBS | Task | Duration | Start | Finish | Predecessors | Complete | Remaining | Baseline start | Baseline finish | Baseline duration | Total slack | Free slack | Constraint | Resources | Work | Actual work |
| --- | --- | --- | --- | --- | --- | --- | --- | --- | --- | --- | --- | --- | --- | --- | --- | --- | --- |
| 109 | 1.1.4 | **1.4 Cierre** | 1d | 2017-12-29 | 2017-12-29 |  |  |  | 2017-12-29 | 2017-12-29 | 1d | 42d |  |  |  |  |  |
| 110 | 1.1.4.1 | Informe de Cierre | 1d | 2017-12-29 | 2017-12-29 |  |  |  | 2017-12-29 | 2017-12-29 | 1d | 42d |  | start no earlier than 2017-12-29 |  |  |  |
| 111 | 1.2 | **2. ACTIVIDADES DE INGENIERÍA** | 245d | 2017-03-09 A | 2018-02-27 |  | 52% | 118.37d | 2017-03-09 | 2017-03-09 | 1d | 0d |  |  |  | 2729.4h | 2340.48h |
| 112 | 1.2.1 | **2.1 Planificación** | 56d | 2017-03-09 A | 2017-05-30 A |  | 100% |  | 2017-03-09 | 2017-05-30 | 56d |  |  |  |  | 1078.8h | 1078.8h |
| 113 | 1.2.1.1 | Reuniones con los involucrados y elaboración de AS IS | 24d | 2017-03-09 A | 2017-04-11 A |  | 100% |  | 2017-03-09 | 2017-04-11 | 24d |  |  |  | América [50%]; Luis [45%]; Marjorie [80%]; Rosicarmen; Usuario [70%] | 662.4h | 662.4h |
| 114 | 1.2.1.2 | Revisión (Usuario - GOP - GPY - GIN) | 7d | 2017-04-11 A | 2017-04-21 A |  | 100% |  | 2017-04-11 | 2017-04-21 | 7d |  |  | start no earlier than 2017-04-11 | América [50%]; Luis [45%]; Marjorie [80%]; Rosicarmen; Usuario [70%] | 193.2h | 193.2h |
| 115 | 1.2.1.3 | Levantamiento de observaciones | 10d | 2017-04-24 A | 2017-05-08 A | 114 | 100% |  | 2017-04-24 | 2017-05-08 | 10d |  |  |  | Rosicarmen | 80h | 80h |
| 116 | 1.2.1.4 | Validación Final del AS IS | 13d | 2017-05-09 A | 2017-05-25 A | 115 | 100% |  | 2017-05-09 | 2017-05-25 | 13d |  |  |  | Marjorie [80%] | 83.2h | 83.2h |
| 117 | 1.2.1.5 | Aprobación del Relevamiento de Información | 3d | 2017-05-26 A | 2017-05-30 A | 116 | 100% |  | 2017-05-26 | 2017-05-30 | 3d |  |  |  | Usuario [70%]; Marjorie [80%]; Rosicarmen | 60h | 60h |
| 118 | 1.2.2 | **2.2 Modelado de Procesos** | 101d | 2017-04-03 A | 2017-08-28 |  | 98% | 2.52d | 2017-04-03 | 2017-08-28 | 101d | 127d |  |  |  | 548h | 531.08h |
| 119 | 1.2.2.1 | **2.2.1 Ficha Técnica del Proceso** | 39d | 2017-04-03 A | 2017-05-30 A |  | 100% |  | 2017-04-03 | 2017-05-30 | 39d |  |  |  |  | 341.6h | 341.6h |
| 120 | 1.2.2.1.1 | Elaboración del TO BE | 10d | 2017-04-03 A | 2017-04-18 A |  | 100% |  | 2017-04-03 | 2017-04-18 | 10d |  |  |  | Rosicarmen | 80h | 80h |
| 121 | 1.2.2.1.2 | Revisión (Usuario - GOP - GPY - GIN) | 2d | 2017-04-19 A | 2017-04-20 A | 120 | 100% |  | 2017-04-19 | 2017-04-20 | 2d |  |  |  | América [50%]; Luis [45%]; Marjorie [80%]; Rosicarmen; Usuario [70%] | 55.2h | 55.2h |
| 122 | 1.2.2.1.3 | Levantamiento de observaciones | 4d | 2017-04-21 A | 2017-04-26 A | 121 | 100% |  | 2017-04-21 | 2017-04-26 | 4d |  |  |  | Rosicarmen | 32h | 32h |
| 123 | 1.2.2.1.4 | Validación Final del TO BE | 1d | 2017-04-27 A | 2017-04-27 A | 122 | 100% |  | 2017-04-27 | 2017-04-27 | 1d |  |  |  | Marjorie [80%] | 6.4h | 6.4h |
| 124 | 1.2.2.1.5 | Ficha Técnica del Proceso | 13d | 2017-04-28 A | 2017-05-17 A | 123 | 100% |  | 2017-04-28 | 2017-05-17 | 13d |  |  |  | Rosicarmen | 104h | 104h |
| 125 | 1.2.2.1.6 | Revisión de GOP | 3d | 2017-05-18 A | 2017-05-22 A | 124 | 100% |  | 2017-05-18 | 2017-05-22 | 3d |  |  |  | Marjorie [80%] | 19.2h | 19.2h |
| 126 | 1.2.2.1.7 | Levantamiento de observaciones | 2d | 2017-05-23 A | 2017-05-24 A | 125 | 100% |  | 2017-05-23 | 2017-05-24 | 2d |  |  |  | Rosicarmen | 16h | 16h |
| 127 | 1.2.2.1.8 | Validación Final de la Ficha Técnica de Proceso | 2d | 2017-05-25 A | 2017-05-26 A | 126 | 100% |  | 2017-05-25 | 2017-05-26 | 2d |  |  |  | Marjorie [80%] | 12.8h | 12.8h |
| 128 | 1.2.2.1.9 | Aprobación del documento | 2d | 2017-05-29 A | 2017-05-30 A | 127 | 100% |  | 2017-05-29 | 2017-05-30 | 2d |  |  |  | Todos | 16h | 16h |
| 129 | 1.2.2.2 | **2.2.2 Procedimiento** | 25d | 2017-07-24 A | 2017-08-28 |  | 94% | 1.6d | 2017-07-24 | 2017-08-28 | 25d | 127d |  |  |  | 206.4h | 189.48h |
| 130 | 1.2.2.2.1 | Elaboración del procedimiento | 12d | 2017-07-24 A | 2017-08-09 A |  | 100% |  | 2017-07-24 | 2017-08-09 | 12d |  |  | start no earlier than 2017-07-24 | Emperatriz | 96h | 96h |
| 131 | 1.2.2.2.2 | Revisión del procedimiento (Usuario y GOP) | 6d | 2017-08-10 A | 2017-08-17 | 130 | 95% | 0.3d | 2017-08-10 | 2017-08-17 | 6d | 2.85d | 0d |  | Marjorie [80%] | 38.4h | 36.48h |
| 132 | 1.2.2.2.3 | Levantamiento de observaciones | 3d | 2017-08-18 A | 2017-08-22 | 131 | 95% | 0.15d | 2017-08-18 | 2017-08-22 | 3d | 2.85d | 0d |  | Emperatriz | 24h | 22.8h |
| 133 | 1.2.2.2.4 | Validación (GOP, Usuario) | 3d | 2017-08-23 A | 2017-08-25 | 132 | 95% | 0.15d | 2017-08-23 | 2017-08-25 | 3d | 127d | 0d |  | Marjorie [80%]; Usuario [70%] | 36h | 34.2h |
| 134 | 1.2.2.2.5 | Aprobación del documento | 1d | 2017-08-28 | 2017-08-28 | 133 |  |  | 2017-08-28 | 2017-08-28 | 1d | 127d |  |  | Marjorie [80%]; Usuario [70%] | 12h |  |

| ID | WBS | Task | Duration | Start | Finish | Predecessors | Complete | Remaining | Baseline start | Baseline finish | Baseline duration | Total slack | Free slack | Constraint | Resources | Work | Actual work |
| --- | --- | --- | --- | --- | --- | --- | --- | --- | --- | --- | --- | --- | --- | --- | --- | --- | --- |
| 135 | 1.2.3 | **2.3 Análisis y Diseño del Sistema** | 74d | 2017-05-22 A | 2017-09-05 |  | 66% | 25.25d | 2017-05-22 | 2017-08-29 | 69.88d | 122d |  |  |  | 1047.4h | 691.4h |
| 136 | 1.2.3.1 | **Definición Funcional SAJU** | 17d | 2017-05-22 A | 2017-06-13 A |  | 100% |  | 2017-05-22 | 2017-06-13 | 17d |  |  |  |  | 295.2h | 295.2h |
| 137 | 1.2.3.1.1 | Elaboración de la Definición Funcional | 12d | 2017-05-22 A | 2017-06-06 A |  | 100% |  | 2017-05-22 | 2017-06-06 | 12d |  |  |  | Diego; Rosicarmen | 192h | 192h |
| 138 | 1.2.3.1.2 | Revisión de GIN GOP y Usuario | 1d | 2017-06-07 A | 2017-06-07 A | 137 | 100% |  | 2017-06-07 | 2017-06-07 | 1d |  |  |  | América [50%]; Diego; Luis [45%]; Marjorie [80%]; Rosicarmen; Usuario [70%] | 35.6h | 35.6h |
| 139 | 1.2.3.1.3 | Levantamiento de Observaciones de la DF | 3d | 2017-06-08 A | 2017-06-12 A | 138 | 100% |  | 2017-06-08 | 2017-06-12 | 3d |  |  |  | Diego; Rosicarmen | 48h | 48h |
| 140 | 1.2.3.1.4 | Validación Final DF (Usuario, GOP y GIN) | 1d | 2017-06-13 A | 2017-06-13 A | 139 | 100% |  | 2017-06-13 | 2017-06-13 | 1d |  |  | finish no earlier than 2017-06-13 | América [50%]; Luis [45%]; Marjorie [80%]; Usuario [70%] | 19.6h | 19.6h |
| 141 | 1.2.3.2 | **Definición Funcional SGD** | 6d | 2017-06-14 A | 2017-06-21 A |  | 100% |  | 2017-06-14 | 2017-06-21 | 6d |  |  |  |  | 43.6h | 43.6h |
| 142 | 1.2.3.2.1 | Elaboración de la Definición Funcional | 1d | 2017-06-14 A | 2017-06-14 A |  | 100% |  | 2017-06-14 | 2017-06-14 | 1d |  |  |  | Diego | 8h | 8h |
| 143 | 1.2.3.2.2 | Revisión de GOP (reglas de negocio) | 1d | 2017-06-15 A | 2017-06-15 A | 142 | 100% |  | 2017-06-15 | 2017-06-15 | 1d |  |  |  | Marjorie [80%] | 6.4h | 6.4h |
| 144 | 1.2.3.2.3 | Revisión de GIN y Usuario | 1d | 2017-06-16 A | 2017-06-16 A | 143 | 100% |  | 2017-06-16 | 2017-06-16 | 1d |  |  |  | América [50%]; Luis [45%]; Usuario [70%] | 13.2h | 13.2h |
| 145 | 1.2.3.2.4 | Levantamiento de Observaciones de la DF | 1d | 2017-06-19 A | 2017-06-19 A | 144 | 100% |  | 2017-06-19 | 2017-06-19 | 1d |  |  |  | Diego | 8h | 8h |
| 146 | 1.2.3.2.5 | Validación Final DF (Usuario, GOP y GIN) | 1d | 2017-06-20 A | 2017-06-21 A | 145 | 100% |  | 2017-06-20 | 2017-06-21 | 1d |  |  | finish no earlier than 2017-06-21 | Todos | 8h | 8h |
| 147 | 1.2.3.3 | **Documento Técnico SGD** | 35d | 2017-07-17 A | 2017-09-05 |  | 85% | 5.32d | 2017-07-17 | 2017-08-07 | 14.12d | 122d |  |  |  | 454.2h | 352.6h |
| 148 | 1.2.3.3.1 | Elaboración del DT | 24.88d | 2017-07-17 A | 2017-08-21 A |  | 100% |  | 2017-07-17 | 2017-07-26 | 7d |  |  | finish no earlier than 2017-08-21 | Diego | 199h | 199h |
| 149 | 1.2.3.3.2 | Revisión del documento | 8d | 2017-08-02 A | 2017-08-29 | 148 | 80% | 1.6d | 2017-07-26 | 2017-07-31 | 2d | 122d | 0d | finish no earlier than 2017-08-29 | Celis; Edgard Marquez; Ronald Raico | 192h | 153.6h |
| 150 | 1.2.3.3.3 | Revisión de GIN (Arquitectura /Modelo de Datos) | 2d | 2017-08-31 | 2017-09-01 | 149 |  |  | 2017-07-31 | 2017-08-02 | 2d | 122d | 0d |  | Diego | 16h |  |
| 151 | 1.2.3.3.4 | Levantamiento de observaciones | 1d | 2017-09-04 | 2017-09-04 | 150 |  |  | 2017-08-02 | 2017-08-04 | 2d | 122d | 0d |  | Celis; Edgard Marquez; Luis [45%] | 19.6h |  |
| 152 | 1.2.3.3.5 | Validación Final | 1d | 2017-09-05 | 2017-09-05 | 151 |  |  | 2017-08-04 | 2017-08-07 | 1d | 122d |  |  | Celis; Edgard Marquez; Luis [45%]; Ronald Raico | 27.6h |  |
| 153 | 1.2.3.4 | **Documento Técnico SAJU (proveedor)** | 23.88d | 2017-07-26 | 2017-08-29 |  |  |  | 2017-07-26 | 2017-08-29 | 23.88d | 126.12d |  |  |  | 254.4h |  |
| 154 | 1.2.3.4.1 | Elaboración de la DT | 15d | 2017-07-26 | 2017-08-18 |  |  |  | 2017-07-26 | 2017-08-18 | 15d | 126.12d | 0d | start no earlier than 2017-07-26 | Proveedor | 120h |  |
| 155 | 1.2.3.4.2 | Revisión de GIN (Arquitectura /Modelo de Datos) | 3d | 2017-08-18 | 2017-08-23 | 154 |  |  | 2017-08-18 | 2017-08-23 | 3d | 126.12d | 0d |  | Celis; Edgard Marquez; Luis [45%]; Ronald Raico | 82.8h |  |
| 156 | 1.2.3.4.3 | Levantamiento de Observaciones | 2d | 2017-08-23 | 2017-08-25 | 155 |  |  | 2017-08-23 | 2017-08-25 | 2d | 126.12d | 0d |  | Proveedor | 16h |  |
| 157 | 1.2.3.4.4 | Revisión 2 de GIN (Arquitectura /Modelo de Datos) | 1d | 2017-08-25 | 2017-08-28 | 156 |  |  | 2017-08-25 | 2017-08-28 | 1d | 126.12d | 0d |  | Celis; Edgard Marquez; Luis [45%]; Ronald Raico | 27.6h |  |
| 158 | 1.2.3.4.5 | Validación Final | 1d | 2017-08-28 | 2017-08-29 | 157 |  |  | 2017-08-28 | 2017-08-29 | 1d | 126.12d |  |  | Todos | 8h |  |

| ID | WBS | Task | Duration | Start | Finish | Predecessors | Complete | Remaining | Baseline start | Baseline finish | Baseline duration | Total slack | Free slack | Constraint | Resources | Work | Actual work |
| --- | --- | --- | --- | --- | --- | --- | --- | --- | --- | --- | --- | --- | --- | --- | --- | --- | --- |
| 159 | 1.2.4 | **2.4 Construcción** | 123d | 2017-07-17 A | 2018-01-10 |  | 14% | 105.82d | 2017-07-17 | 2018-01-10 | 123d | 34d |  |  |  | 55.2h | 39.2h |
| 160 | 1.2.4.1 | **2.4.1 SGD** | 92d | 2017-07-17 A | 2017-11-24 |  | 25% | 69.45d | 2017-07-17 | 2017-11-17 | 87d | 65d |  |  |  | 55.2h | 39.2h |
| 161 | 1.2.4.1.1 | **Iteración 1** | 41d | 2017-07-17 A | 2017-09-13 |  | 64% | 14.72d | 2017-07-17 | 2017-09-13 | 41d | 116d |  |  |  | 55.2h | 39.2h |
| 162 | 1.2.4.1.1.1 | **A. Desarrollo** | 31d | 2017-07-17 A | 2017-08-29 |  | 93% | 2.3d | 2017-07-17 | 2017-08-25 | 29d | 126d |  |  |  | 55.2h | 39.2h |
| 163 | 1.2.4.1.1.1.1 | RQ 001: Consulta de Trámites | 3d | 2017-07-17 A | 2017-07-19 A |  | 100% |  | 2017-07-17 | 2017-07-19 | 3d |  |  | start no earlier than 2017-07-17 |  |  |  |
| 164 | 1.2.4.1.1.1.2 | RQ 002: Registrar Trámites en forma Masiva | 3d | 2017-07-17 A | 2017-07-20 A |  | 100% |  | 2017-07-17 | 2017-07-20 | 3d |  |  | start no earlier than 2017-07-17 |  |  |  |
| 165 | 1.2.4.1.1.1.3 | RQ 002: Registrar Trámites en forma Masiva | 2d | 2017-07-20 A | 2017-07-21 A |  | 100% |  | 2017-07-20 | 2017-07-21 | 2d |  |  | start no earlier than 2017-07-20 |  |  |  |
| 166 | 1.2.4.1.1.1.4 | RQ 002: Registrar Tramites en forma Masiva | 3d | 2017-07-24 A | 2017-07-26 A |  | 100% |  | 2017-07-24 | 2017-07-26 | 3d |  |  |  |  |  |  |
| 167 | 1.2.4.1.1.1.5 | RQ 001: Gestionar Registro de Expedientes Judiciales (SAJU) | 10d | 2017-07-31 A | 2017-08-12 A |  | 100% |  | 2017-07-31 | 2017-08-12 | 10d |  |  | finish no earlier than 2017-08-12 |  |  |  |
| 168 | 1.2.4.1.1.1.6 | Revisión integral y modificaciones | 2d | 2017-08-14 A | 2017-08-15 A | 167 | 100% |  | 2017-08-14 | 2017-08-15 | 2d |  |  |  | Diego; Luis [45%] | 23.2h | 23.2h |
| 169 | 1.2.4.1.1.1.7 | Revisión en Desarrollo 1 | 1d | 2017-08-24 A | 2017-08-24 A | 168 | 100% |  | 2017-08-24 | 2017-08-24 | 1d |  |  |  | Edgard Marquez; Ronald Raico | 16h | 16h |
| 170 | 1.2.4.1.1.1.8 | Levantamiento de observaciones | 1d | 2017-08-25 A | 2017-08-25 A | 169 | 100% |  | 2017-08-25 | 2017-08-25 | 1d |  |  |  |  |  |  |
| 171 | 1.2.4.1.1.1.9 | Revisión en Desarrollo 2 | 2d | 2017-08-28 | 2017-08-29 | 170 |  |  |  |  |  | 126d |  |  | Edgard Marquez | 16h |  |
| 172 | 1.2.4.1.1.2 | **B. Pruebas** | 7d | 2017-08-28 | 2017-09-06 |  |  |  | 2017-08-28 | 2017-09-06 | 7d | 65d |  |  |  |  |  |
| 173 | 1.2.4.1.1.2.1 | Documentación para el pase | 1d | 2017-08-28 | 2017-08-28 | 170 |  |  | 2017-08-28 | 2017-08-28 | 1d | 65d | 0d | start no earlier than 2017-08-25 |  |  |  |
| 174 | 1.2.4.1.1.2.2 | Envío y Revisión por AF Calidad (Rev 1) | 3d | 2017-08-29 | 2017-09-01 | 173 |  |  | 2017-08-29 | 2017-09-01 | 3d | 65d | 0d | start no earlier than 2017-08-28 |  |  |  |
| 175 | 1.2.4.1.1.2.3 | Pruebas con el equipo AE | 1d | 2017-09-04 | 2017-09-04 | 174 |  |  | 2017-09-04 | 2017-09-04 | 1d | 65d | 0d | start no earlier than 2017-09-01 |  |  |  |
| 176 | 1.2.4.1.1.2.4 | Pruebas de Aceptación (usuario) | 2d | 2017-09-05 | 2017-09-06 | 175 |  |  | 2017-09-05 | 2017-09-06 | 2d | 65d | 0d | start no earlier than 2017-09-01 |  |  |  |
| 177 | 1.2.4.1.1.3 | C. Producción | 1d | 2017-09-07 | 2017-09-07 | 176 |  |  | 2017-09-07 | 2017-09-07 | 1d | 116d | 0d |  |  |  |  |
| 178 | 1.2.4.1.1.4 | D. Seguimiento | 4d | 2017-09-08 | 2017-09-13 | 177 |  |  | 2017-09-08 | 2017-09-13 | 4d | 116d |  |  |  |  |  |
| 179 | 1.2.4.1.2 | **Iteración 2** | 32d | 2017-09-07 | 2017-10-20 |  |  |  | 2017-09-07 | 2017-10-20 | 32d | 65d |  |  |  |  |  |
| 180 | 1.2.4.1.2.1 | **A. Desarrollo** | 22d | 2017-09-07 | 2017-10-06 |  |  |  | 2017-09-07 | 2017-10-06 | 22d | 65d |  |  |  |  |  |
| 181 | 1.2.4.1.2.1.1 | RQ 003: Gestionar Registro de Notificaciones - cédulas (importar) | 19d | 2017-09-07 | 2017-10-03 | 176 |  |  | 2017-09-07 | 2017-10-03 | 19d | 65d | 0d | start no earlier than 2017-08-09 |  |  |  |
| 182 | 1.2.4.1.2.1.2 | Revisión en Desarrollo | 2d | 2017-10-04 | 2017-10-05 | 181 |  |  | 2017-10-04 | 2017-10-05 | 2d | 65d | 0d |  |  |  |  |
| 183 | 1.2.4.1.2.1.3 | Levantamiento de observaciones | 1d | 2017-10-06 | 2017-10-06 | 182 |  |  | 2017-10-06 | 2017-10-06 | 1d | 65d | 0d |  |  |  |  |

Notes:
- 163: Consulta
- 164: Registro masivo de trámites
- 165: Registro masivo de trámites
- 167: Registrar

| ID | WBS | Task | Duration | Start | Finish | Predecessors | Baseline start | Baseline finish | Baseline duration | Total slack | Free slack | Constraint |
| --- | --- | --- | --- | --- | --- | --- | --- | --- | --- | --- | --- | --- |
| 184 | 1.2.4.1.2.2 | **B. Pruebas** | 5d | 2017-10-09 | 2017-10-13 |  | 2017-10-09 | 2017-10-13 | 5d | 65d |  |  |
| 185 | 1.2.4.1.2.2.1 | Documentación para el pase | 1d | 2017-10-09 | 2017-10-09 | 183 | 2017-10-09 | 2017-10-09 | 1d | 65d | 0d | start no earlier than 2017-08-23 |
| 186 | 1.2.4.1.2.2.2 | Envío y Revisión por AF Calidad (Rev 1) | 2d | 2017-10-10 | 2017-10-11 | 185 | 2017-10-10 | 2017-10-11 | 2d | 65d | 0d | start no earlier than 2017-08-25 |
| 187 | 1.2.4.1.2.2.3 | Levantamiento de Observaciones | 1d | 2017-10-12 | 2017-10-12 | 186 | 2017-10-12 | 2017-10-12 | 1d | 65d | 0d | start no earlier than 2017-08-29 |
| 188 | 1.2.4.1.2.2.4 | Pruebas con el equipo AE | 1d | 2017-10-13 | 2017-10-13 | 187 | 2017-10-13 | 2017-10-13 | 1d | 94d |  | start no earlier than 2017-09-01 |
| 189 | 1.2.4.1.2.2.5 | Pruebas de Aceptación (usuario) | 1d | 2017-10-13 | 2017-10-13 | 187 | 2017-10-13 | 2017-10-13 | 1d | 65d | 0d | start no earlier than 2017-09-01 |
| 190 | 1.2.4.1.2.3 | C. Pase a producción | 1d | 2017-10-16 | 2017-10-16 | 189 | 2017-10-16 | 2017-10-16 | 1d | 89d | 0d |  |
| 191 | 1.2.4.1.2.4 | D. Seguimiento | 4d | 2017-10-17 | 2017-10-20 | 190 | 2017-10-17 | 2017-10-20 | 4d | 89d |  |  |
| 192 | 1.2.4.1.3 | **Iteración 3** | 29d | 2017-10-16 | 2017-11-24 |  | 2017-10-16 | 2017-11-17 | 24d | 65d |  |  |
| 193 | 1.2.4.1.3.1 | **A. Desarrollo** | 18d | 2017-10-16 | 2017-11-09 |  | 2017-10-16 | 2017-11-02 | 13d | 65d |  |  |
| 194 | 1.2.4.1.3.1.1 | Rq Atención | 15d | 2017-10-16 | 2017-11-06 | 189 | 2017-10-16 | 2017-10-27 | 10d | 65d | 0d |  |
| 195 | 1.2.4.1.3.1.2 | Revisión en Desarrollo | 2d | 2017-11-07 | 2017-11-08 | 194 | 2017-10-30 | 2017-10-31 | 2d | 65d | 0d |  |
| 196 | 1.2.4.1.3.1.3 | Levantamiento de observaciones | 1d | 2017-11-09 | 2017-11-09 | 195 | 2017-11-02 | 2017-11-02 | 1d | 65d | 0d |  |
| 197 | 1.2.4.1.3.2 | **B. Pruebas** | 6d | 2017-11-10 | 2017-11-17 |  | 2017-11-03 | 2017-11-10 | 6d | 65d |  |  |
| 198 | 1.2.4.1.3.2.1 | Documentación para el pase | 1d | 2017-11-10 | 2017-11-10 | 196 | 2017-11-03 | 2017-11-03 | 1d | 65d | 0d |  |
| 199 | 1.2.4.1.3.2.2 | Envío y Revisión por AF Calidad (Rev 1) | 3d | 2017-11-13 | 2017-11-15 | 198 | 2017-11-06 | 2017-11-08 | 3d | 65d | 0d |  |
| 200 | 1.2.4.1.3.2.3 | Pruebas con el equipo AE | 1d | 2017-11-16 | 2017-11-16 | 199 | 2017-11-09 | 2017-11-09 | 1d | 71d |  |  |
| 201 | 1.2.4.1.3.2.4 | Pruebas de Aceptación (usuario) | 2d | 2017-11-16 | 2017-11-17 | 199 | 2017-11-09 | 2017-11-10 | 2d | 65d | 0d |  |
| 202 | 1.2.4.1.3.3 | C. Pase a producción | 1d | 2017-11-20 | 2017-11-20 | 201 | 2017-11-13 | 2017-11-13 | 1d | 65d | 0d |  |
| 203 | 1.2.4.1.3.4 | D. Seguimiento | 4d | 2017-11-21 | 2017-11-24 | 202 | 2017-11-14 | 2017-11-17 | 4d | 65d |  |  |
| 204 | 1.2.4.2 | **2.4.2 SAJU** | 70d | 2017-10-02 | 2018-01-10 |  | 2017-10-02 | 2018-01-10 | 70d | 34d |  |  |
| 205 | 1.2.4.2.1 | **Iteración 1** | 39d | 2017-10-02 | 2017-11-24 |  | 2017-10-02 | 2017-11-24 | 39d | 34d |  |  |
| 206 | 1.2.4.2.1.1 | **A. Desarrollo** | 26d | 2017-10-02 | 2017-11-07 |  | 2017-10-02 | 2017-11-07 | 26d | 34d |  |  |
| 207 | 1.2.4.2.1.1.1 | RQ 001 al 10 | 20d | 2017-10-02 | 2017-10-27 |  | 2017-10-02 | 2017-10-27 | 20d | 34d | 0d | start no earlier than 2017-10-02 |
| 208 | 1.2.4.2.1.1.2 | Revisión en Desarrollo | 4d | 2017-10-30 | 2017-11-03 | 207 | 2017-10-30 | 2017-11-03 | 4d | 34d | 0d |  |
| 209 | 1.2.4.2.1.1.3 | Levantamiento de observaciones | 2d | 2017-11-06 | 2017-11-07 | 208 | 2017-11-06 | 2017-11-07 | 2d | 34d | 0d |  |

| ID | WBS | Task | Duration | Start | Finish | Predecessors | Complete | Remaining | Baseline start | Baseline finish | Baseline duration | Total slack | Free slack | Constraint |
| --- | --- | --- | --- | --- | --- | --- | --- | --- | --- | --- | --- | --- | --- | --- |
| 210 | 1.2.4.2.1.2 | **B. Pruebas** | 8d | 2017-11-08 | 2017-11-17 |  |  |  | 2017-11-08 | 2017-11-17 | 8d | 34d |  |  |
| 211 | 1.2.4.2.1.2.1 | Documentación para el pase | 1d | 2017-11-08 | 2017-11-08 | 209 |  |  | 2017-11-08 | 2017-11-08 | 1d | 34d | 0d |  |
| 212 | 1.2.4.2.1.2.2 | Envío y Revisión por AF Calidad (Rev 1) | 3d | 2017-11-09 | 2017-11-13 | 211 |  |  | 2017-11-09 | 2017-11-13 | 3d | 34d | 0d |  |
| 213 | 1.2.4.2.1.2.3 | Levantamiento de Observaciones | 2d | 2017-11-14 | 2017-11-15 | 212 |  |  | 2017-11-14 | 2017-11-15 | 2d | 34d | 0d |  |
| 214 | 1.2.4.2.1.2.4 | Pruebas con el equipo AE | 1d | 2017-11-16 | 2017-11-16 | 213 |  |  | 2017-11-16 | 2017-11-16 | 1d | 71d |  |  |
| 215 | 1.2.4.2.1.2.5 | Pruebas de Aceptación (usuario) | 2d | 2017-11-16 | 2017-11-17 | 213 |  |  | 2017-11-16 | 2017-11-17 | 2d | 34d | 0d |  |
| 216 | 1.2.4.2.1.3 | C. Pase a producción | 1d | 2017-11-20 | 2017-11-20 | 215 |  |  | 2017-11-20 | 2017-11-20 | 1d | 65d | 0d |  |
| 217 | 1.2.4.2.1.4 | D. Seguimiento | 4d | 2017-11-21 | 2017-11-24 | 216 |  |  | 2017-11-21 | 2017-11-24 | 4d | 65d |  |  |
| 218 | 1.2.4.2.2 | **Iteración 2** | 36d | 2017-11-20 | 2018-01-10 |  |  |  | 2017-11-20 | 2018-01-10 | 36d | 34d |  |  |
| 219 | 1.2.4.2.2.1 | **A. Desarrollo** | 26d | 2017-11-20 | 2017-12-27 |  |  |  | 2017-11-20 | 2017-12-27 | 26d | 34d |  |  |
| 220 | 1.2.4.2.2.1.1 | RQ 10 al 20 | 20d | 2017-11-20 | 2017-12-18 | 215 |  |  | 2017-11-20 | 2017-12-18 | 20d | 34d | 0d |  |
| 221 | 1.2.4.2.2.1.2 | Revisión en Desarrollo | 4d | 2017-12-19 | 2017-12-22 | 220 |  |  | 2017-12-19 | 2017-12-22 | 4d | 34d | 0d |  |
| 222 | 1.2.4.2.2.1.3 | Levantamiento de observaciones | 2d | 2017-12-26 | 2017-12-27 | 221 |  |  | 2017-12-26 | 2017-12-27 | 2d | 34d | 0d |  |
| 223 | 1.2.4.2.2.2 | **B. Pruebas** | 5d | 2017-12-28 | 2018-01-03 |  |  |  | 2017-12-28 | 2018-01-03 | 5d | 34d |  |  |
| 224 | 1.2.4.2.2.2.1 | Documentación para el pase | 1d | 2017-12-28 | 2017-12-28 | 222 |  |  | 2017-12-28 | 2017-12-28 | 1d | 34d | 0d |  |
| 225 | 1.2.4.2.2.2.2 | Envío y Revisión por AF Calidad (Rev 1) | 2d | 2017-12-29 | 2018-01-01 | 224 |  |  | 2017-12-29 | 2018-01-01 | 2d | 34d | 0d |  |
| 226 | 1.2.4.2.2.2.3 | Levantamiento de Observaciones | 1d | 2018-01-02 | 2018-01-02 | 225 |  |  | 2018-01-02 | 2018-01-02 | 1d | 34d | 0d |  |
| 227 | 1.2.4.2.2.2.4 | Pruebas con el equipo AE | 1d | 2018-01-03 | 2018-01-03 | 226 |  |  | 2018-01-03 | 2018-01-03 | 1d | 39d |  |  |
| 228 | 1.2.4.2.2.2.5 | Pruebas de Aceptación (usuario) | 1d | 2018-01-03 | 2018-01-03 | 226 |  |  | 2018-01-03 | 2018-01-03 | 1d | 34d | 0d |  |
| 229 | 1.2.4.2.2.3 | C. Pase a Producción | 1d | 2018-01-04 | 2018-01-04 | 228 |  |  | 2018-01-04 | 2018-01-04 | 1d | 34d | 0d |  |
| 230 | 1.2.4.2.2.4 | D. Seguimiento | 4d | 2018-01-05 | 2018-01-10 | 229 |  |  | 2018-01-05 | 2018-01-10 | 4d | 34d |  |  |
| 231 | 1.2.5 | **2.5 Actividades complementarias** | 175d | 2017-06-20 A | 2018-02-27 |  | 50% | 87.5d | 2017-06-20 | 2018-02-27 | 175d | 0d |  |  |
| 232 | 1.2.5.1 | **2.5.1 Dimensionamiento** | 48d | 2017-06-20 A | 2017-08-28 |  | 96% | 1.92d | 2017-06-20 | 2017-08-28 | 48d | 127d |  |  |
| 233 | 1.2.5.1.1 | Levantamiento de información | 20d | 2017-06-20 A | 2017-07-18 A |  | 100% |  | 2017-06-20 | 2017-07-18 | 20d |  |  | start no earlier than 2017-06-20 |
| 234 | 1.2.5.1.2 | Informe final | 4d | 2017-07-19 A | 2017-07-24 A | 233 | 100% |  | 2017-07-19 | 2017-07-24 | 4d |  |  |  |
| 235 | 1.2.5.1.3 | Aprobación con GOP y Usuario | 1d | 2017-08-28 | 2017-08-28 |  |  |  | 2017-08-28 | 2017-08-28 | 1d | 127d |  | start no earlier than 2017-08-28 |

| ID | WBS | Task | Duration | Start | Finish | Predecessors | Baseline start | Baseline finish | Baseline duration | Total slack | Free slack | Constraint |
| --- | --- | --- | --- | --- | --- | --- | --- | --- | --- | --- | --- | --- |
| 236 | 1.2.5.2 | **2.5.2 Manual de Usuario** | 18d | 2017-12-11 | 2018-01-04 |  | 2017-12-11 | 2018-01-04 | 18d | 38d |  |  |
| 237 | 1.2.5.2.1 | Elaboración del Manual de Usuario | 16d | 2017-12-11 | 2018-01-02 |  | 2017-12-11 | 2018-01-02 | 16d | 38d | 0d | start no earlier than 2017-12-11 |
| 238 | 1.2.5.2.2 | Aprobación del Manual | 2d | 2018-01-03 | 2018-01-04 | 237 | 2018-01-03 | 2018-01-04 | 2d | 38d |  |  |
| 239 | 1.2.5.3 | 2.5.3 Capacitación a Usuarios | 3d | 2018-01-08 | 2018-01-10 |  | 2018-01-08 | 2018-01-10 | 3d | 34d |  | start no earlier than 2018-01-08 |
| 240 | 1.2.5.4 | **2.5.4 Transferencia a Informática** | 2d | 2018-02-26 | 2018-02-27 |  | 2018-02-26 | 2018-02-27 | 2d | 0d |  |  |
| 241 | 1.2.5.4.1 | Elaborar documento de transferencia | 1d | 2018-02-26 | 2018-02-26 |  | 2018-02-26 | 2018-02-26 | 1d | 0d |  | start no earlier than 2018-02-26 |
| 242 | 1.2.5.4.2 | Envío de documento formal | 1d | 2018-02-27 | 2018-02-27 | 241 | 2018-02-27 | 2018-02-27 | 1d | 0d |  |  |
