# Cronograma de AE Digitalización - Etapa de Construcción

Schedule from MS Project, 2017-06-19 to 2017-12-12, A marks actual dates.
Hewlett-Packard Company

## Calendars

- Estándar: Mon-Fri 09:00-13:00, 15:00-19:00; Sat-Sun off. Exceptions (off unless hours are given): 2017-07-28 (Fiestas Patrias), 2017-08-30 (Festividad de Santa Rosa de Lima), 2017-11-01 (Día de Todos los Santos), 2017-12-08 (Día de la Inmaculada Concepción).

## Resources

| Resource |
| --- |
| Fernando |
| Fernando Bustamante |
| Cesar Atalaya |
| UC |
| Todos |
| Luis Meneses |
| Ronald Raico |
| Edgard Marquez |

## Schedule

| ID | WBS | Task | Duration | Start | Finish | Predecessors | Complete | Remaining | Total slack | Constraint | Resources | Work | Actual work |
| --- | --- | --- | --- | --- | --- | --- | --- | --- | --- | --- | --- | --- | --- |
| 1 | 1 | **CONSTRUCCIÓN: AE DIGITALIZACIÓN DE EXPEDIENTE COACTIVO** | 123d | 2017-06-19 A | 2017-12-12 |  | 30% | 86.24d | 0d |  |  | 2232h | 768h |
| 2 | 1.1 | SGD: Implementar el Cargo de Recepción con código de barras | 15d | 2017-06-19 A | 2017-07-07 A |  | 100% |  |  | start no earlier than 2017-06-19 | Cesar Atalaya; Fernando Bustamante | 240h | 240h |
| 3 | 1.2 | **ECV: Generación de archivo PDF** | 65d | 2017-07-10 A | 2017-10-10 |  | 67% | 21.22d | 0d |  |  | 784h | 528h |
| 4 | 1.2.1 | Generación de archivos PDF | 29d | 2017-07-10 A | 2017-08-18 A | 2 | 100% |  |  |  | Cesar Atalaya | 232h | 232h |
| 5 | 1.2.2 | **Cortado de archivos PDF** | 33d | 2017-07-10 A | 2017-08-24 A | 2 | 100% |  |  |  |  | 264h | 264h |
| 6 | 1.2.2.1 | DLL que realizar el corte de PDF | 16d | 2017-07-10 A | 2017-08-01 A | 2 | 100% |  |  |  | Fernando Bustamante | 128h | 128h |
| 7 | 1.2.2.2 | Servicio Windows y Servicio WEB para ejecución automática | 8d | 2017-08-02 A | 2017-08-11 A | 6 | 100% |  |  |  | Fernando Bustamante | 64h | 64h |
| 8 | 1.2.2.3 | Revisión de Arquitectura | 2d | 2017-08-14 A | 2017-08-15 A | 7 | 100% |  |  |  | Ronald Raico | 16h | 16h |
| 9 | 1.2.2.4 | Subsanación de Observaciones | 7d | 2017-08-16 A | 2017-08-24 A | 8 | 100% |  |  |  | Fernando Bustamante | 56h | 56h |
| 10 | 1.2.3 | Generación de archivo PDF en RS | 2d | 2017-08-21 A | 2017-08-22 A | 4 | 100% |  |  |  | Cesar Atalaya | 16h | 16h |
| 11 | 1.2.4 | Generación de archivo PDF en Copia | 1d | 2017-08-23 A | 2017-08-23 A | 10 | 100% |  |  |  | Cesar Atalaya | 8h | 8h |
| 12 | 1.2.5 | Generación de archivo PDF en CIR y REC Transito | 1d | 2017-08-24 A | 2017-08-24 A | 11 | 100% |  |  |  | Cesar Atalaya | 8h | 8h |
| 13 | 1.2.6 | Revisión de Código Fuente | 1d | 2017-08-25 | 2017-08-25 | 12 |  |  | 0d |  | Edgard Marquez | 8h |  |
| 14 | 1.2.7 | Subsanación de Observaciones | 3d | 2017-08-28 | 2017-08-31 | 13 |  |  | 0d |  | Cesar Atalaya | 24h |  |
| 15 | 1.2.8 | Generación de archivo PDF en RMC - módulo MC | 5d | 2017-09-01 | 2017-09-07 | 14 |  |  | 0d |  | Cesar Atalaya | 40h |  |
| 16 | 1.2.9 | Generación de archivo PDF en RIEF - módulo MC | 2d | 2017-09-08 | 2017-09-11 | 15 |  |  | 0d |  | Cesar Atalaya | 16h |  |
| 17 | 1.2.10 | Generación de archivo PDF en Nulidad - módulo MC | 2d | 2017-09-12 | 2017-09-13 | 16 |  |  | 0d |  | Cesar Atalaya | 16h |  |
| 18 | 1.2.11 | Generación de archivo PDF en Esquela de Entrega - módulo Depósito | 3d | 2017-09-14 | 2017-09-18 | 17 |  |  | 0d |  | Cesar Atalaya | 24h |  |
| 19 | 1.2.12 | Generación de archivo PDF en Acta de Secuestro Conservativo - módulo Depósito | 2d | 2017-09-19 | 2017-09-20 | 18 |  |  | 0d |  | Cesar Atalaya | 16h |  |
| 20 | 1.2.13 | Revisión de Código Fuente | 1d | 2017-09-21 | 2017-09-21 | 19 |  |  | 0d |  | Edgard Marquez | 8h |  |
| 21 | 1.2.14 | Subsanación de Observaciones | 2d | 2017-09-22 | 2017-09-25 | 20 |  |  | 0d |  | Cesar Atalaya | 16h |  |
| 22 | 1.2.15 | **Pase a Producción** | 11d | 2017-09-26 | 2017-10-10 |  |  |  | 0d |  |  | 88h |  |
| 23 | 1.2.15.1 | Documentación para el pase | 3d | 2017-09-26 | 2017-09-28 | 21 |  |  | 0d |  | Cesar Atalaya | 24h |  |
| 24 | 1.2.15.2 | Revisión de Calidad | 3d | 2017-09-29 | 2017-10-03 | 23 |  |  | 0d |  | UC | 24h |  |
| 25 | 1.2.15.3 | Levantamiento de Observaciones de Calidad | 2d | 2017-10-04 | 2017-10-05 | 24 |  |  | 0d |  | Cesar Atalaya | 16h |  |
| 26 | 1.2.15.4 | Pruebas con usuario | 3d | 2017-10-06 | 2017-10-10 | 25 |  |  | 0d |  | Todos | 24h |  |

| ID | WBS | Task | Duration | Start | Finish | Predecessors | Total slack | Free slack | Constraint | Resources | Work |
| --- | --- | --- | --- | --- | --- | --- | --- | --- | --- | --- | --- |
| 27 | 1.3 | **ECV: Expediente Coactivo Virtual - 1ra parte** | 8d | 2017-08-25 | 2017-09-06 |  | 9d | 0d |  |  | 64h |
| 28 | 1.3.1 | Visualizar documentos digitales del Expediente Coactivo Virtual | 8d | 2017-08-25 | 2017-09-06 | 9 | 9d |  |  | Fernando Bustamante | 64h |
| 29 | 1.4 | **SGD: Atención de trámites** | 32d | 2017-09-07 | 2017-10-20 |  | 9d | 0d |  |  | 256h |
| 30 | 1.4.1 | Atención: Solicitar firmantes en proyecto respuesta | 5d | 2017-09-07 | 2017-09-13 | 27 | 9d | 0d | start no earlier than 2017-09-04 | Fernando Bustamante | 40h |
| 31 | 1.4.2 | Atención: Firma mecanizada en documento respuesta | 2d | 2017-09-14 | 2017-09-15 | 30 | 9d | 0d |  | Fernando Bustamante | 16h |
| 32 | 1.4.3 | Atención: Selecccionar efectos en proyecto respuesta | 5d | 2017-09-18 | 2017-09-22 | 31 | 9d | 0d |  | Fernando Bustamante | 40h |
| 33 | 1.4.4 | Atención: Generar automáticamente el documento respuesta | 2d | 2017-09-25 | 2017-09-26 | 32 | 9d | 0d |  | Fernando Bustamante | 16h |
| 34 | 1.4.5 | Reporte Unificado No Tributario | 5d | 2017-09-27 | 2017-10-03 | 33 | 9d | 0d |  | Fernando Bustamante | 40h |
| 35 | 1.4.6 | Traslado del documento digitalizado al directorio de ubicación final | 5d | 2017-10-04 | 2017-10-10 | 34 | 9d | 0d |  | Fernando Bustamante | 40h |
| 36 | 1.4.7 | Visualizar el documento digitalizado | 2d | 2017-10-11 | 2017-10-12 | 35 | 9d | 0d |  | Fernando Bustamante | 16h |
| 37 | 1.4.8 | **Pase a Producción** | 6d | 2017-10-13 | 2017-10-20 |  | 9d |  |  |  | 48h |
| 38 | 1.4.8.1 | Documentación para el pase | 2d | 2017-10-13 | 2017-10-16 | 36 | 9d | 0d |  | Fernando Bustamante | 16h |
| 39 | 1.4.8.2 | Revisión de Calidad y Levantamiento | 2d | 2017-10-17 | 2017-10-18 | 38 | 9d | 0d |  | UC | 16h |
| 40 | 1.4.8.3 | Pruebas con usuario | 2d | 2017-10-19 | 2017-10-20 | 39 | 9d |  |  | Todos | 16h |
| 41 | 1.5 | **ECV: Expediente Coactivo Virtual - 2da parte** | 32d | 2017-10-11 | 2017-11-24 |  | 0d |  |  |  | 392h |
| 42 | 1.5.1 | Solicitudes de Impresión de Expediente Coactivo | 10d | 2017-10-23 | 2017-11-06 | 29 | 9d | 0d |  | Fernando Bustamante | 80h |
| 43 | 1.5.2 | Ingresar documentos digitales manuales al Expediente Coactivo Virtual | 5d | 2017-11-07 | 2017-11-13 | 42 | 9d |  |  | Fernando Bustamante | 40h |
| 44 | 1.5.3 | Implementación de cuatro (4) Reportes | 26d | 2017-10-11 | 2017-11-16 | 3 | 0d |  |  | Cesar Atalaya | 208h |
| 45 | 1.5.4 | **Pase a Producción** | 6d | 2017-11-17 | 2017-11-24 |  | 0d |  |  |  | 64h |
| 46 | 1.5.4.1 | Documentación para el pase | 2d | 2017-11-17 | 2017-11-20 | 44 | 0d |  |  | Fernando Bustamante; Cesar Atalaya | 32h |
| 47 | 1.5.4.2 | Revisión de Calidad y Levantamiento | 2d | 2017-11-21 | 2017-11-22 | 46 | 0d |  |  | UC | 16h |
| 48 | 1.5.4.3 | Pruebas con usuario | 2d | 2017-11-23 | 2017-11-24 | 47 | 0d |  |  | Todos | 16h |
| 49 | 1.6 | **SGD: Reportes de Coactiva** | 11d | 2017-11-27 | 2017-12-12 |  | 0d |  |  |  | 16h |
| 50 | 1.6.1 | Implementación de cuatro (4) Reportes | 8d | 2017-11-27 | 2017-12-06 | 41 | 0d |  |  |  |  |

Notes:
- 34: Depende de SAJU

| ID | WBS | Task | Duration | Start | Finish | Predecessors | Total slack | Resources | Work |
| --- | --- | --- | --- | --- | --- | --- | --- | --- | --- |
| 51 | 1.6.2 | **Pase a Producción** | 3d | 2017-12-07 | 2017-12-12 |  | 0d |  | 16h |
| 52 | 1.6.2.1 | Documentación para el pase | 1d | 2017-12-07 | 2017-12-07 | 50 | 0d |  |  |
| 53 | 1.6.2.2 | Revisión de Calidad y Levantamiento | 1d | 2017-12-11 | 2017-12-11 | 52 | 0d | UC | 8h |
| 54 | 1.6.2.3 | Pruebas con usuario | 1d | 2017-12-12 | 2017-12-12 | 53 | 0d | Todos | 8h |
| 55 | 1.7 | SGD: Derivación, Recepción y Asignación | 60d | 2017-08-01 | 2017-10-24 |  | 33d | Luis Meneses | 480h |
