# Cronograma de Actividades SAJU

Schedule from MS Project, 2017-03-09 to 2018-01-01, A marks actual dates.
S.A.T.

## Calendars

- Estándar: Mon-Fri 09:00-13:00, 14:00-18:00; Sat-Sun off. Exceptions (off unless hours are given): 2017-04-13 to 2017-04-14 (semana santa), 2017-05-01 (dia del trabajo), 2017-06-29 (feriado), 2017-07-28 (fiestas patrias), 2017-08-30 (santa rosa), 2017-11-01 (feriado), 2017-12-08 (feriado), 2017-12-25 (navidad).

## Resources

| Resource |
| --- |
| Marjorie Gil |
| Wilson R |
| América B |
| Luis Leiva |
| Fernando B |
| César A |
| AF Calidad |
| Usuario |
| Edgar Marquez |
| Modelador de Datos |
| Ronald Raico |
| Celis |
| Proveedor |
| logistica |

## Schedule

| ID | WBS | Task | Duration | Start | Finish | Predecessors | Complete | Remaining | Baseline start | Baseline finish | Baseline duration | Total slack | Constraint | Work | Actual work |
| --- | --- | --- | --- | --- | --- | --- | --- | --- | --- | --- | --- | --- | --- | --- | --- |
| 1 | 1 | **Ejecución de la AE Digitalización de Expedientes Coactivos** | 204d | 2017-03-09 A | 2018-01-01 |  | 52% | 97.49d | 2017-03-09 | 2018-01-01 | 204d | 0d |  | 2542.4h | 1342.4h |
| 2 | 1.1 | **1. ACTIVIDADES DE GESTIÓN** | 204d | 2017-03-09 A | 2018-01-01 |  | 31% | 140.69d | 2017-03-09 | 2018-01-01 | 204d | 0d |  |  |  |
| 3 | 1.1.1 | **1.1 Planificación** | 12d | 2017-05-22 A | 2017-06-06 A |  | 100% |  | 2017-05-22 | 2017-06-06 | 12d |  |  |  |  |
| 4 | 1.1.1.1 | **1.1.1 Gestión del Alcance** | 12d | 2017-05-22 A | 2017-06-06 A |  | 100% |  | 2017-05-22 | 2017-06-06 | 12d |  |  |  |  |
| 5 | 1.1.1.1.1 | Elaboración del documento | 3d | 2017-05-22 A | 2017-05-24 A |  | 100% |  | 2017-05-22 | 2017-05-24 | 3d |  | start no earlier than 2017-05-22 |  |  |
| 6 | 1.1.1.1.2 | Revisión del documento | 1d | 2017-05-25 A | 2017-05-25 A | 5 | 100% |  | 2017-05-25 | 2017-05-25 | 1d |  | start no earlier than 2017-05-25 |  |  |
| 7 | 1.1.1.1.3 | Levantamiento de observaciones | 1d | 2017-05-26 A | 2017-05-26 A | 6 | 100% |  | 2017-05-26 | 2017-05-26 | 1d |  | start no earlier than 2017-05-26 |  |  |
| 8 | 1.1.1.1.4 | Validación Final | 5d | 2017-05-29 A | 2017-06-02 A | 7 | 100% |  | 2017-05-29 | 2017-06-02 | 5d |  | start no earlier than 2017-05-29 |  |  |
| 9 | 1.1.1.1.5 | Aprobación del documento | 2d | 2017-06-05 A | 2017-06-06 A | 8 | 100% |  | 2017-06-05 | 2017-06-06 | 2d |  | finish no earlier than 2017-06-06 |  |  |
| 10 | 1.1.2 | **1.2 Ejecución** | 203d | 2017-03-09 A | 2017-12-29 |  | 28% | 146.91d | 2017-03-09 | 2017-12-29 | 203d | 1d |  |  |  |
| 11 | 1.1.2.1 | **1.2.1 Gestión de las adquisiciones** | 203d | 2017-03-09 A | 2017-12-29 |  | 28% | 146.91d | 2017-03-09 | 2017-12-29 | 203d | 1d |  |  |  |
| 12 | 1.1.2.1.1 | **1.2.1.1 Servicio de Terceros** | 203d | 2017-03-09 A | 2017-12-29 |  | 28% | 146.91d | 2017-03-09 | 2017-12-29 | 203d | 1d |  |  |  |
| 13 | 1.1.2.1.1.1 | **1.2.1.1.1 Contratación** | 168d | 2017-03-09 A | 2017-11-08 |  | 15% | 142.43d | 2017-03-09 | 2017-11-08 | 168d | 36d |  |  |  |
| 14 | 1.1.2.1.1.1.1 | **Persona Natural** | 168d | 2017-03-09 A | 2017-11-08 |  | 54% | 77.54d | 2017-03-09 | 2017-11-08 | 168d | 36d |  |  |  |
| 15 | 1.1.2.1.1.1.1.1 | Luis Leiva (Procesos) | 1d | 2017-03-09 A | 2017-03-09 A |  | 100% |  | 2017-03-09 | 2017-03-09 | 1d |  |  |  |  |
| 16 | 1.1.2.1.1.1.1.2 | Luis Leiva (Sistemas) | 1d | 2017-05-08 A | 2017-05-08 A |  | 100% |  | 2017-05-08 | 2017-05-08 | 1d |  | start no earlier than 2017-05-08 |  |  |
| 17 | 1.1.2.1.1.1.1.3 | Luis Leiva (Sistemas) | 1d | 2017-08-08 A | 2017-08-08 A |  | 100% |  | 2017-08-08 | 2017-08-08 | 1d |  | start no earlier than 2017-08-08 |  |  |
| 18 | 1.1.2.1.1.1.1.4 | Luis Leiva (Sistemas) | 1d | 2017-09-08 | 2017-09-08 |  |  |  | 2017-09-08 | 2017-09-08 | 1d | 78d | start no earlier than 2017-09-08 |  |  |
| 19 | 1.1.2.1.1.1.1.5 | Luis Leiva (Sistemas) | 1d | 2017-11-08 | 2017-11-08 |  |  |  | 2017-11-08 | 2017-11-08 | 1d | 36d | start no earlier than 2017-11-08 |  |  |
| 20 | 1.1.2.1.1.1.1.6 | Fernando Bustamante (Programador) | 1d | 2017-06-01 A | 2017-06-01 A |  | 100% |  | 2017-06-01 | 2017-06-01 | 1d |  | start no earlier than 2017-06-01 |  |  |
| 21 | 1.1.2.1.1.1.1.7 | Fernando Bustamante (Programador) | 1d | 2017-06-30 A | 2017-06-30 A |  | 100% |  | 2017-06-30 | 2017-06-30 | 1d |  | start no earlier than 2017-06-30 |  |  |
| 22 | 1.1.2.1.1.1.1.8 | Fernando Bustamante (Programador) | 1d | 2017-08-29 | 2017-08-29 |  |  |  | 2017-08-29 | 2017-08-29 | 1d | 85d | start no earlier than 2017-08-29 |  |  |
| 23 | 1.1.2.1.1.1.1.9 | Fernando Bustamante (Programador) | 1d | 2017-10-25 | 2017-10-25 |  |  |  | 2017-10-25 | 2017-10-25 | 1d | 45d | start no earlier than 2017-10-25 |  |  |
| 24 | 1.1.2.1.1.1.1.10 | César Atalaya (Programador) | 1d | 2017-06-01 A | 2017-06-01 A |  | 100% |  | 2017-06-01 | 2017-06-01 | 1d |  | start no earlier than 2017-06-01 |  |  |
| 25 | 1.1.2.1.1.1.1.11 | César Atalaya (Programador) | 1d | 2017-06-30 A | 2017-06-30 A |  | 100% |  | 2017-06-30 | 2017-06-30 | 1d |  | start no earlier than 2017-06-30 |  |  |
| 26 | 1.1.2.1.1.1.1.12 | César Atalaya (Programador) | 1d | 2017-08-29 | 2017-08-29 |  |  |  | 2017-08-29 | 2017-08-29 | 1d | 85d | start no earlier than 2017-08-29 |  |  |
| 27 | 1.1.2.1.1.1.1.13 | César Atalaya (Programador) | 1d | 2017-10-25 | 2017-10-25 |  |  |  | 2017-10-25 | 2017-10-25 | 1d | 45d | start no earlier than 2017-10-25 |  |  |

| ID | WBS | Task | Duration | Start | Finish | Predecessors | Complete | Remaining | Baseline start | Baseline finish | Baseline duration | Total slack | Free slack | Constraint |
| --- | --- | --- | --- | --- | --- | --- | --- | --- | --- | --- | --- | --- | --- | --- |
| 28 | 1.1.2.1.1.1.2 | **Persona Jurídica** | 27d | 2017-09-19 | 2017-10-25 |  |  |  | 2017-09-19 | 2017-10-25 | 27d | 45d |  |  |
| 29 | 1.1.2.1.1.1.2.1 | Elaboración de TDR | 9d | 2017-09-19 | 2017-09-29 |  |  |  | 2017-09-19 | 2017-09-29 | 9d | 51d | 0d | start no earlier than 2017-09-19 |
| 30 | 1.1.2.1.1.1.2.2 | Elaboración y Firma de Bases | 2d | 2017-10-02 | 2017-10-03 | 29 |  |  | 2017-10-02 | 2017-10-03 | 2d | 51d | 0d |  |
| 31 | 1.1.2.1.1.1.2.3 | Publicación de convocatoria | 1d | 2017-10-04 | 2017-10-04 | 30 |  |  | 2017-10-04 | 2017-10-04 | 1d | 51d | 0d |  |
| 32 | 1.1.2.1.1.1.2.4 | Registro de participantes | 9d | 2017-10-05 | 2017-10-17 | 31 |  |  | 2017-10-05 | 2017-10-17 | 9d | 51d |  |  |
| 33 | 1.1.2.1.1.1.2.5 | Consultas y observaciones | 2d | 2017-10-10 | 2017-10-11 |  |  |  | 2017-10-10 | 2017-10-11 | 2d | 45d | 0d | start no earlier than 2017-10-10 |
| 34 | 1.1.2.1.1.1.2.6 | Absolución de consultas y observaciones | 1d | 2017-10-12 | 2017-10-12 | 33 |  |  | 2017-10-12 | 2017-10-12 | 1d | 45d | 0d |  |
| 35 | 1.1.2.1.1.1.2.7 | Integración de Bases | 1d | 2017-10-13 | 2017-10-13 | 34 |  |  | 2017-10-13 | 2017-10-13 | 1d | 45d | 0d |  |
| 36 | 1.1.2.1.1.1.2.8 | Presentación de ofertas | 1d | 2017-10-16 | 2017-10-16 | 35 |  |  | 2017-10-16 | 2017-10-16 | 1d | 45d | 0d |  |
| 37 | 1.1.2.1.1.1.2.9 | Evaluación y calificación | 1d | 2017-10-17 | 2017-10-17 | 36 |  |  | 2017-10-17 | 2017-10-17 | 1d | 45d | 0d |  |
| 38 | 1.1.2.1.1.1.2.10 | Otorgamiento de la nueva Pro | 1d | 2017-10-18 | 2017-10-18 | 37 |  |  | 2017-10-18 | 2017-10-18 | 1d | 45d | 0d |  |
| 39 | 1.1.2.1.1.1.2.11 | Firma de Contrato | 5d | 2017-10-19 | 2017-10-25 | 38 |  |  | 2017-10-19 | 2017-10-25 | 5d | 45d |  |  |
| 40 | 1.1.2.1.1.2 | **1.2.1.1.2 Inducción** | 2d | 2017-03-09 A | 2017-03-10 A |  | 100% |  | 2017-03-09 | 2017-03-10 | 2d |  |  |  |
| 41 | 1.1.2.1.1.2.1 | Presentación de equipos | 1d | 2017-03-09 A | 2017-03-09 A |  | 100% |  | 2017-03-09 | 2017-03-09 | 1d |  |  |  |
| 42 | 1.1.2.1.1.2.2 | Capacitación en Procesos | 1d | 2017-03-10 A | 2017-03-10 A | 41 | 100% |  | 2017-03-10 | 2017-03-10 | 1d |  |  |  |
| 43 | 1.1.2.1.1.2.3 | Capacitación en la nueva arquitectura | 1d | 2017-03-09 A | 2017-03-09 A |  | 100% |  | 2017-03-09 | 2017-03-09 | 1d |  |  |  |
| 44 | 1.1.2.1.1.2.4 | Pasantía con el área usuaria | 2d | 2017-03-09 A | 2017-03-10 A |  | 100% |  | 2017-03-09 | 2017-03-10 | 2d |  |  |  |
| 45 | 1.1.2.1.1.3 | **1.2.1.1.3 Informes** | 203d | 2017-03-09 A | 2017-12-29 |  | 36% | 129.92d | 2017-03-09 | 2017-12-29 | 203d | 1d |  |  |
| 46 | 1.1.2.1.1.3.1 | **A. Persona Natural** | 200d | 2017-03-09 A | 2017-12-26 |  | 39% | 121.74d | 2017-03-09 | 2017-12-26 | 200d | 4d |  |  |
| 47 | 1.1.2.1.1.3.1.1 | Informe de Pago - Luis Leiva (procesos) | 1d | 2017-04-03 A | 2017-04-03 A |  | 100% |  | 2017-04-03 | 2017-04-03 | 1d |  |  | start no earlier than 2017-04-03 |
| 48 | 1.1.2.1.1.3.1.2 | Informe de Pago - Luis Leiva (sistemas) | 1d | 2017-05-02 A | 2017-05-02 A |  | 100% |  | 2017-05-02 | 2017-05-02 | 1d |  |  | start no earlier than 2017-05-02 |
| 49 | 1.1.2.1.1.3.1.3 | Informe de Pago - Luis Leiva (sistemas) | 1d | 2017-06-02 A | 2017-06-02 A |  | 100% |  | 2017-06-02 | 2017-06-02 | 1d |  |  | start no earlier than 2017-06-02 |
| 50 | 1.1.2.1.1.3.1.4 | Informe de Pago - Luis Leiva (sistemas) | 1d | 2017-07-03 A | 2017-07-03 A |  | 100% |  | 2017-07-03 | 2017-07-03 | 1d |  |  | start no earlier than 2017-07-03 |
| 51 | 1.1.2.1.1.3.1.5 | Informe de Pago - Luis Leiva (sistemas) | 1d | 2017-08-01 A | 2017-08-01 A |  | 100% |  | 2017-08-01 | 2017-08-01 | 1d |  |  | start no earlier than 2017-08-01 |
| 52 | 1.1.2.1.1.3.1.6 | Informe de Pago - Luis Leiva (sistemas) | 1d | 2017-09-01 | 2017-09-01 |  |  |  | 2017-09-01 | 2017-09-01 | 1d | 83d |  | start no earlier than 2017-09-01 |
| 53 | 1.1.2.1.1.3.1.7 | Informe de Pago - Luis Leiva (sistemas) | 1d | 2017-10-02 | 2017-10-02 |  |  |  | 2017-10-02 | 2017-10-02 | 1d | 62d |  | start no earlier than 2017-10-02 |
| 54 | 1.1.2.1.1.3.1.8 | Informe de Pago - Luis Leiva (sistemas) | 1d | 2017-11-02 | 2017-11-02 |  |  |  | 2017-11-02 | 2017-11-02 | 1d | 40d |  | start no earlier than 2017-11-02 |
| 55 | 1.1.2.1.1.3.1.9 | Informe de Pago - Luis Leiva (sistemas) | 1d | 2017-12-01 | 2017-12-01 |  |  |  | 2017-12-01 | 2017-12-01 | 1d | 19d |  | start no earlier than 2017-12-01 |
| 56 | 1.1.2.1.1.3.1.10 | Informe de Pago - Luis Leiva (sistemas) | 1d | 2017-03-09 | 2017-03-09 |  |  |  | 2017-03-09 | 2017-03-09 | 1d | 203d |  |  |
| 57 | 1.1.2.1.1.3.1.11 | Informe de Pago - Fernando (programador) | 1d | 2017-06-27 A | 2017-06-27 A |  | 100% |  | 2017-06-27 | 2017-06-27 | 1d |  |  | start no earlier than 2017-06-27 |
| 58 | 1.1.2.1.1.3.1.12 | Informe de Pago - Fernando (programador) | 1d | 2017-07-24 A | 2017-07-24 A |  | 100% |  | 2017-07-24 | 2017-07-24 | 1d |  |  | start no earlier than 2017-07-24 |
| 59 | 1.1.2.1.1.3.1.13 | Informe de Pago - Fernando (programador) | 1d | 2017-08-28 | 2017-08-28 |  |  |  | 2017-08-28 | 2017-08-28 | 1d | 86d |  | start no earlier than 2017-08-28 |
| 60 | 1.1.2.1.1.3.1.14 | Informe de Pago - Fernando (programador) | 1d | 2017-09-26 | 2017-09-26 |  |  |  | 2017-09-26 | 2017-09-26 | 1d | 66d |  | start no earlier than 2017-09-26 |
| 61 | 1.1.2.1.1.3.1.15 | Informe de Pago - Fernando (programador) | 1d | 2017-10-25 | 2017-10-25 |  |  |  | 2017-10-25 | 2017-10-25 | 1d | 45d |  | start no earlier than 2017-10-25 |
| 62 | 1.1.2.1.1.3.1.16 | Informe de Pago - Fernando (programador) | 1d | 2017-11-24 | 2017-11-24 |  |  |  | 2017-11-24 | 2017-11-24 | 1d | 24d |  | start no earlier than 2017-11-24 |
| 63 | 1.1.2.1.1.3.1.17 | Informe de Pago - Fernando (programador) | 1d | 2017-12-26 | 2017-12-26 |  |  |  | 2017-12-26 | 2017-12-26 | 1d | 4d |  | start no earlier than 2017-12-26 |
| 64 | 1.1.2.1.1.3.1.18 | Informe de Pago - César (programador) | 1d | 2017-06-27 A | 2017-06-27 A |  | 100% |  | 2017-06-27 | 2017-06-27 | 1d |  |  | start no earlier than 2017-06-27 |
| 65 | 1.1.2.1.1.3.1.19 | Informe de Pago - César (programador) | 1d | 2017-07-24 A | 2017-07-24 A |  | 100% |  | 2017-07-24 | 2017-07-24 | 1d |  |  | start no earlier than 2017-07-24 |
| 66 | 1.1.2.1.1.3.1.20 | Informe de Pago - César (programador) | 1d | 2017-08-28 | 2017-08-28 |  |  |  | 2017-08-28 | 2017-08-28 | 1d | 86d |  | start no earlier than 2017-08-28 |
| 67 | 1.1.2.1.1.3.1.21 | Informe de Pago - César (programador) | 1d | 2017-09-26 | 2017-09-26 |  |  |  | 2017-09-26 | 2017-09-26 | 1d | 66d |  | start no earlier than 2017-09-26 |
| 68 | 1.1.2.1.1.3.1.22 | Informe de Pago - César (programador) | 1d | 2017-10-25 | 2017-10-25 |  |  |  | 2017-10-25 | 2017-10-25 | 1d | 45d |  | start no earlier than 2017-10-25 |
| 69 | 1.1.2.1.1.3.1.23 | Informe de Pago - César (programador) | 1d | 2017-11-24 | 2017-11-24 |  |  |  | 2017-11-24 | 2017-11-24 | 1d | 24d |  | start no earlier than 2017-11-24 |

| ID | WBS | Task | Duration | Start | Finish | Complete | Remaining | Baseline start | Baseline finish | Baseline duration | Total slack | Constraint |
| --- | --- | --- | --- | --- | --- | --- | --- | --- | --- | --- | --- | --- |
| 70 | 1.1.2.1.1.3.2 | **B. Persona Jurídica** | 20d | 2017-11-30 | 2017-12-29 |  |  | 2017-11-30 | 2017-12-29 | 20d | 1d |  |
| 71 | 1.1.2.1.1.3.2.1 | Entregable 1 | 1d | 2017-11-30 | 2017-11-30 |  |  | 2017-11-30 | 2017-11-30 | 1d | 20d | start no earlier than 2017-11-30 |
| 72 | 1.1.2.1.1.3.2.2 | Entregable 2 | 1d | 2017-12-29 | 2017-12-29 |  |  | 2017-12-29 | 2017-12-29 | 1d | 1d | start no earlier than 2017-12-29 |
| 73 | 1.1.3 | **1.3 Seguimiento y Control** | 127d | 2017-06-30 A | 2018-01-01 | 11% | 112.89d | 2017-06-30 | 2018-01-01 | 127d | 0d |  |
| 74 | 1.1.3.1 | **1.3.1 Informe Mensual** | 127d | 2017-06-30 A | 2018-01-01 | 14% | 108.86d | 2017-06-30 | 2018-01-01 | 127d | 0d |  |
| 75 | 1.1.3.1.1 | Informe Mensual 1 | 1d | 2017-06-30 | 2017-06-30 |  |  | 2017-06-30 | 2017-06-30 | 1d | 126d | start no earlier than 2017-06-30 |
| 76 | 1.1.3.1.2 | Informe Mensual 2 | 1d | 2017-07-31 A | 2017-07-31 A | 100% |  | 2017-07-31 | 2017-07-31 | 1d |  | start no earlier than 2017-07-30 |
| 77 | 1.1.3.1.3 | Informe Mensual 3 | 1d | 2017-08-31 | 2017-08-31 |  |  | 2017-08-31 | 2017-08-31 | 1d | 84d | start no earlier than 2017-08-30 |
| 78 | 1.1.3.1.4 | Informe Mensual 4 | 1d | 2017-10-02 | 2017-10-02 |  |  | 2017-10-02 | 2017-10-02 | 1d | 62d | start no earlier than 2017-09-30 |
| 79 | 1.1.3.1.5 | Informe Mensual 5 | 1d | 2017-10-30 | 2017-10-30 |  |  | 2017-10-30 | 2017-10-30 | 1d | 42d | start no earlier than 2017-10-30 |
| 80 | 1.1.3.1.6 | Informe Mensual 6 | 1d | 2017-11-30 | 2017-11-30 |  |  | 2017-11-30 | 2017-11-30 | 1d | 20d | start no earlier than 2017-11-30 |
| 81 | 1.1.3.1.7 | Informe Mensual 7 | 1d | 2018-01-01 | 2018-01-01 |  |  | 2018-01-01 | 2018-01-01 | 1d | 0d | start no earlier than 2017-12-30 |
| 82 | 1.1.3.2 | **1.3.2 Reuniones de seguimiento** | 92d | 2017-08-18 A | 2017-12-29 | 10% | 82.8d | 2017-08-18 | 2017-12-29 | 92d | 1d |  |
| 83 | 1.1.3.2.1 | Reuniones de seguimiento 1 | 1d | 2017-08-18 A | 2017-08-18 A | 100% |  | 2017-08-18 | 2017-08-18 | 1d |  | start no earlier than 2017-08-18 |
| 84 | 1.1.3.2.2 | Reuniones de seguimiento 2 | 1d | 2017-08-25 A | 2017-08-25 A | 100% |  | 2017-08-25 | 2017-08-25 | 1d |  | start no earlier than 2017-08-25 |
| 85 | 1.1.3.2.3 | Reuniones de seguimiento 3 | 1d | 2017-09-01 | 2017-09-01 |  |  | 2017-09-01 | 2017-09-01 | 1d | 83d | start no earlier than 2017-09-01 |
| 86 | 1.1.3.2.4 | Reuniones de seguimiento 4 | 1d | 2017-09-08 | 2017-09-08 |  |  | 2017-09-08 | 2017-09-08 | 1d | 78d | start no earlier than 2017-09-08 |
| 87 | 1.1.3.2.5 | Reuniones de seguimiento 5 | 1d | 2017-09-15 | 2017-09-15 |  |  | 2017-09-15 | 2017-09-15 | 1d | 73d | start no earlier than 2017-09-15 |
| 88 | 1.1.3.2.6 | Reuniones de seguimiento 6 | 1d | 2017-09-22 | 2017-09-22 |  |  | 2017-09-22 | 2017-09-22 | 1d | 68d | start no earlier than 2017-09-22 |
| 89 | 1.1.3.2.7 | Reuniones de seguimiento 7 | 1d | 2017-09-29 | 2017-09-29 |  |  | 2017-09-29 | 2017-09-29 | 1d | 63d | start no earlier than 2017-09-29 |
| 90 | 1.1.3.2.8 | Reuniones de seguimiento 8 | 1d | 2017-10-06 | 2017-10-06 |  |  | 2017-10-06 | 2017-10-06 | 1d | 58d | start no earlier than 2017-10-06 |
| 91 | 1.1.3.2.9 | Reuniones de seguimiento 9 | 1d | 2017-10-13 | 2017-10-13 |  |  | 2017-10-13 | 2017-10-13 | 1d | 53d | start no earlier than 2017-10-13 |
| 92 | 1.1.3.2.10 | Reuniones de seguimiento 10 | 1d | 2017-10-20 | 2017-10-20 |  |  | 2017-10-20 | 2017-10-20 | 1d | 48d | start no earlier than 2017-10-20 |
| 93 | 1.1.3.2.11 | Reuniones de seguimiento 11 | 1d | 2017-10-27 | 2017-10-27 |  |  | 2017-10-27 | 2017-10-27 | 1d | 43d | start no earlier than 2017-10-27 |
| 94 | 1.1.3.2.12 | Reuniones de seguimiento 12 | 1d | 2017-11-03 | 2017-11-03 |  |  | 2017-11-03 | 2017-11-03 | 1d | 39d | start no earlier than 2017-11-03 |
| 95 | 1.1.3.2.13 | Reuniones de seguimiento 13 | 1d | 2017-11-10 | 2017-11-10 |  |  | 2017-11-10 | 2017-11-10 | 1d | 34d | start no earlier than 2017-11-10 |
| 96 | 1.1.3.2.14 | Reuniones de seguimiento 14 | 1d | 2017-11-17 | 2017-11-17 |  |  | 2017-11-17 | 2017-11-17 | 1d | 29d | start no earlier than 2017-11-17 |
| 97 | 1.1.3.2.15 | Reuniones de seguimiento 15 | 1d | 2017-11-24 | 2017-11-24 |  |  | 2017-11-24 | 2017-11-24 | 1d | 24d | start no earlier than 2017-11-24 |
| 98 | 1.1.3.2.16 | Reuniones de seguimiento 16 | 1d | 2017-12-01 | 2017-12-01 |  |  | 2017-12-01 | 2017-12-01 | 1d | 19d | start no earlier than 2017-12-01 |
| 99 | 1.1.3.2.17 | Reuniones de seguimiento 17 | 1d | 2017-12-11 | 2017-12-11 |  |  | 2017-12-11 | 2017-12-11 | 1d | 14d | start no earlier than 2017-12-08 |
| 100 | 1.1.3.2.18 | Reuniones de seguimiento 18 | 1d | 2017-12-15 | 2017-12-15 |  |  | 2017-12-15 | 2017-12-15 | 1d | 10d | start no earlier than 2017-12-15 |
| 101 | 1.1.3.2.19 | Reuniones de seguimiento 19 | 1d | 2017-12-22 | 2017-12-22 |  |  | 2017-12-22 | 2017-12-22 | 1d | 5d | start no earlier than 2017-12-22 |
| 102 | 1.1.3.2.20 | Reuniones de seguimiento 20 | 1d | 2017-12-29 | 2017-12-29 |  |  | 2017-12-29 | 2017-12-29 | 1d | 1d | start no earlier than 2017-12-29 |

| ID | WBS | Task | Duration | Start | Finish | Predecessors | Complete | Remaining | Baseline start | Baseline finish | Baseline duration | Total slack | Free slack | Constraint | Work | Actual work |
| --- | --- | --- | --- | --- | --- | --- | --- | --- | --- | --- | --- | --- | --- | --- | --- | --- |
| 103 | 1.1.4 | **1.4 Cierre** | 1d | 2017-12-29 | 2017-12-29 |  |  |  | 2017-12-29 | 2017-12-29 | 1d | 1d |  |  |  |  |
| 104 | 1.1.4.1 | 1.4.1 Informe de Cierre | 1d | 2017-12-29 | 2017-12-29 |  |  |  | 2017-12-29 | 2017-12-29 | 1d | 1d |  | start no earlier than 2017-12-29 |  |  |
| 105 | 1.2 | **2. ACTIVIDADES DE INGENIERÍA** | 203d | 2017-03-09 A | 2017-12-29 |  | 57% | 87.21d | 2017-03-09 | 2017-12-29 | 203d | 1d |  |  | 2542.4h | 1342.4h |
| 106 | 1.2.1 | **2.1 Planificación** | 58d | 2017-03-09 A | 2017-06-01 A |  | 100% |  | 2017-03-09 | 2017-06-01 | 58d |  |  |  |  |  |
| 107 | 1.2.1.1 | **2.1.1 Relevamiento de Información** | 58d | 2017-03-09 A | 2017-06-01 A |  | 100% |  | 2017-03-09 | 2017-06-01 | 58d |  |  |  |  |  |
| 108 | 1.2.1.1.1 | Reuniones con los involucrados | 23d | 2017-03-09 A | 2017-04-10 A |  | 100% |  | 2017-03-09 | 2017-04-10 | 23d |  |  |  |  |  |
| 109 | 1.2.1.1.2 | Elaboración del AS IS | 25d | 2017-03-09 A | 2017-04-12 A |  | 100% |  | 2017-03-09 | 2017-04-12 | 25d |  |  |  |  |  |
| 110 | 1.2.1.1.3 | Revisión (Usuario - GOP - GPY - GIN) | 10d | 2017-04-17 A | 2017-04-28 A | 109 | 100% |  | 2017-04-17 | 2017-04-28 | 10d |  |  |  |  |  |
| 111 | 1.2.1.1.4 | Levantamiento de observaciones | 11d | 2017-05-02 A | 2017-05-16 A | 110 | 100% |  | 2017-05-02 | 2017-05-16 | 11d |  |  |  |  |  |
| 112 | 1.2.1.1.5 | Validación Final del AS IS | 10d | 2017-05-17 A | 2017-05-30 A | 111 | 100% |  | 2017-05-17 | 2017-05-30 | 10d |  |  |  |  |  |
| 113 | 1.2.1.1.6 | Aprobación del Relevamiento de Información | 2d | 2017-05-31 A | 2017-06-01 A | 112 | 100% |  | 2017-05-31 | 2017-06-01 | 2d |  |  |  |  |  |
| 114 | 1.2.2 | **2.2 Modelado de Procesos** | 118d | 2017-04-11 A | 2017-09-29 |  | 58% | 49.52d | 2017-04-11 | 2017-09-29 | 118d | 63d |  |  |  |  |
| 115 | 1.2.2.1 | **2.2.1 Ficha Técnica del Proceso** | 35d | 2017-04-11 A | 2017-06-01 A |  | 100% |  | 2017-04-11 | 2017-06-01 | 35d |  |  |  |  |  |
| 116 | 1.2.2.1.1 | Elaboración del TO BE | 9d | 2017-04-11 A | 2017-04-25 A |  | 100% |  | 2017-04-11 | 2017-04-25 | 9d |  |  | start no earlier than 2017-04-11 |  |  |
| 117 | 1.2.2.1.2 | Revisión (Usuario - GOP - GPY - GIN) | 7d | 2017-04-26 A | 2017-05-05 A | 116 | 100% |  | 2017-04-26 | 2017-05-05 | 7d |  |  |  |  |  |
| 118 | 1.2.2.1.3 | Levantamiento de observaciones | 4d | 2017-05-08 A | 2017-05-11 A | 117 | 100% |  | 2017-05-08 | 2017-05-11 | 4d |  |  |  |  |  |
| 119 | 1.2.2.1.4 | Validación Final del TO BE | 2d | 2017-05-12 A | 2017-05-15 A | 118 | 100% |  | 2017-05-12 | 2017-05-15 | 2d |  |  |  |  |  |
| 120 | 1.2.2.1.5 | Ficha Técnica del Proceso | 5d | 2017-05-16 A | 2017-05-22 A | 119 | 100% |  | 2017-05-16 | 2017-05-22 | 5d |  |  |  |  |  |
| 121 | 1.2.2.1.6 | Revisión de GOP | 2d | 2017-05-23 A | 2017-05-24 A | 120 | 100% |  | 2017-05-23 | 2017-05-24 | 2d |  |  |  |  |  |
| 122 | 1.2.2.1.7 | Levantamiento de observaciones | 2d | 2017-05-25 A | 2017-05-26 A | 121 | 100% |  | 2017-05-25 | 2017-05-26 | 2d |  |  |  |  |  |
| 123 | 1.2.2.1.8 | Validación Final de la Ficha Técnica de Proceso | 2d | 2017-05-29 A | 2017-05-30 A | 122 | 100% |  | 2017-05-29 | 2017-05-30 | 2d |  |  |  |  |  |
| 124 | 1.2.2.1.9 | Aprobación del documento | 2d | 2017-05-31 A | 2017-06-01 A | 123 | 100% |  | 2017-05-31 | 2017-06-01 | 2d |  |  |  |  |  |
| 125 | 1.2.2.2 | **2.2.2 Documento de Soporte** | 26d | 2017-08-24 A | 2017-09-29 |  | 2% | 25.6d | 2017-08-24 | 2017-09-29 | 26d | 63d |  |  |  |  |
| 126 | 1.2.2.2.1 | **Procedimiento de Suspensión** | 9d | 2017-08-24 A | 2017-09-06 |  | 4% | 8.6d | 2017-08-24 | 2017-09-06 | 9d | 63d |  |  |  |  |
| 127 | 1.2.2.2.1.1 | Elaboración del procedimiento | 8d | 2017-08-24 A | 2017-09-05 |  | 5% | 7.6d | 2017-08-24 | 2017-09-05 | 8d | 63d | 0d | finish no earlier than 2017-09-05 |  |  |
| 128 | 1.2.2.2.1.2 | Aprobación del documento | 1d | 2017-09-06 | 2017-09-06 | 127 |  |  | 2017-09-06 | 2017-09-06 | 1d | 63d | 0d |  |  |  |

| ID | WBS | Task | Duration | Start | Finish | Predecessors | Complete | Remaining | Baseline start | Baseline finish | Baseline duration | Total slack | Free slack | Constraint | Resources | Work | Actual work |
| --- | --- | --- | --- | --- | --- | --- | --- | --- | --- | --- | --- | --- | --- | --- | --- | --- | --- |
| 129 | 1.2.2.2.2 | **Procedimiento de Tercería** | 8d | 2017-09-07 | 2017-09-18 |  |  |  | 2017-09-07 | 2017-09-18 | 8d | 63d |  |  |  |  |  |
| 130 | 1.2.2.2.2.1 | Elaboración del procedimiento | 7d | 2017-09-07 | 2017-09-15 | 128 |  |  | 2017-09-07 | 2017-09-15 | 7d | 63d | 0d |  |  |  |  |
| 131 | 1.2.2.2.2.2 | Aprobación del documento | 1d | 2017-09-18 | 2017-09-18 | 130 |  |  | 2017-09-18 | 2017-09-18 | 1d | 63d | 0d |  |  |  |  |
| 132 | 1.2.2.2.3 | **Procedimiento de Expediente Coactivo** | 9d | 2017-09-19 | 2017-09-29 |  |  |  | 2017-09-19 | 2017-09-29 | 9d | 63d |  |  |  |  |  |
| 133 | 1.2.2.2.3.1 | Elaboración del procedimiento | 8d | 2017-09-19 | 2017-09-28 | 131 |  |  | 2017-09-19 | 2017-09-28 | 8d | 63d | 0d |  |  |  |  |
| 134 | 1.2.2.2.3.2 | Aprobación del documento | 1d | 2017-09-29 | 2017-09-29 | 133 |  |  | 2017-09-29 | 2017-09-29 | 1d | 63d |  |  |  |  |  |
| 135 | 1.2.3 | **2.3 Analisis y Diseño de Sistema** | 132d | 2017-03-09 A | 2017-09-18 |  | 67% | 43.28d | 2017-03-09 | 2017-09-18 | 132d | 72d |  |  |  | 702.4h | 397.6h |
| 136 | 1.2.3.1 | **2.3.1 Definición Funcional (GA)** | 19d | 2017-06-02 A | 2017-06-28 A |  | 100% |  | 2017-06-02 | 2017-06-28 | 19d |  |  |  |  |  |  |
| 137 | 1.2.3.1.1 | Elaboración de la Definición Funcional | 10d | 2017-06-02 A | 2017-06-15 A |  | 100% |  | 2017-06-02 | 2017-06-15 | 10d |  |  |  |  |  |  |
| 138 | 1.2.3.1.2 | Revisión de GIN GOP y Usuario | 1d | 2017-06-16 A | 2017-06-16 A | 137 | 100% |  | 2017-06-16 | 2017-06-16 | 1d |  |  |  |  |  |  |
| 139 | 1.2.3.1.3 | Levantamiento de Observaciones de la DF | 4d | 2017-06-19 A | 2017-06-22 A | 138 | 100% |  | 2017-06-19 | 2017-06-22 | 4d |  |  |  |  |  |  |
| 140 | 1.2.3.1.4 | Validación Final DF (Usuario, GOP y GIN) | 3d | 2017-06-23 A | 2017-06-27 A | 139 | 100% |  | 2017-06-23 | 2017-06-27 | 3d |  |  | start no earlier than 2017-03-09 |  |  |  |
| 141 | 1.2.3.1.5 | Aprobación del Documento | 1d | 2017-06-28 A | 2017-06-28 A | 140 | 100% |  | 2017-06-28 | 2017-06-28 | 1d |  |  |  |  |  |  |
| 142 | 1.2.3.2 | **2.3.2 Definición Funcional (AMI)** | 16d | 2017-06-14 A | 2017-07-06 A |  | 100% |  | 2017-06-14 | 2017-07-06 | 16d |  |  |  |  |  |  |
| 143 | 1.2.3.2.1 | Elaboración de la Definición Funcional | 11d | 2017-06-14 A | 2017-06-28 A |  | 100% |  | 2017-06-14 | 2017-06-28 | 11d |  |  | start no earlier than 2017-06-14 |  |  |  |
| 144 | 1.2.3.2.2 | Revisión de GIN GOP y Usuario | 2d | 2017-06-29 A | 2017-06-30 A | 143 | 100% |  | 2017-06-29 | 2017-06-30 | 2d |  |  |  |  |  |  |
| 145 | 1.2.3.2.3 | Levantamiento de Observaciones de la DF | 2d | 2017-07-03 A | 2017-07-04 A | 144 | 100% |  | 2017-07-03 | 2017-07-04 | 2d |  |  |  |  |  |  |
| 146 | 1.2.3.2.4 | Validación Final DF (Usuario, GOP y GIN) | 1d | 2017-07-05 A | 2017-07-05 A | 145 | 100% |  | 2017-07-05 | 2017-07-05 | 1d |  |  | finish no earlier than 2017-06-28 |  |  |  |
| 147 | 1.2.3.2.5 | Aprobación del Documento | 1d | 2017-07-06 A | 2017-07-06 A | 146 | 100% |  | 2017-07-06 | 2017-07-06 | 1d |  |  |  |  |  |  |
| 148 | 1.2.3.3 | **2.3.3 Definición Funcional (Exp Virtual)** | 23d | 2017-07-07 A | 2017-08-09 A |  | 100% |  | 2017-07-07 | 2017-08-09 | 23d |  |  |  |  | 184h | 184h |
| 149 | 1.2.3.3.1 | Elaboración de la Definición Funcional | 9d | 2017-07-07 A | 2017-07-19 A | 147 | 100% |  | 2017-07-07 | 2017-07-19 | 9d |  |  |  | Luis Leiva | 72h | 72h |
| 150 | 1.2.3.3.2 | Revisión de GIN, GOP y Usuario | 2d | 2017-07-20 A | 2017-07-21 A | 149 | 100% |  | 2017-07-20 | 2017-07-21 | 2d |  |  |  | Luis Leiva; Marjorie Gil [50%]; Wilson R [50%] | 32h | 32h |
| 151 | 1.2.3.3.3 | Levantamiento de Observaciones de la DF | 2d | 2017-07-24 A | 2017-07-25 A | 150 | 100% |  | 2017-07-24 | 2017-07-25 | 2d |  |  |  | Luis Leiva | 16h | 16h |
| 152 | 1.2.3.3.4 | Validación Final DF (Usuario, GOP y GIN) | 2d | 2017-08-02 A | 2017-08-03 A | 151 | 100% |  | 2017-08-02 | 2017-08-03 | 2d |  |  | start no earlier than 2017-08-02 | Luis Leiva; Marjorie Gil [50%]; Usuario; Wilson R [50%] | 48h | 48h |
| 153 | 1.2.3.3.5 | Aprobación del Documento | 4d | 2017-08-04 A | 2017-08-09 A | 152 | 100% |  | 2017-08-04 | 2017-08-09 | 4d |  |  | finish no earlier than 2017-08-09 | América B [50%] | 16h | 16h |

| ID | WBS | Task | Duration | Start | Finish | Predecessors | Complete | Remaining | Baseline start | Baseline finish | Baseline duration | Total slack | Free slack | Constraint | Resources | Work | Actual work |
| --- | --- | --- | --- | --- | --- | --- | --- | --- | --- | --- | --- | --- | --- | --- | --- | --- | --- |
| 154 | 1.2.3.4 | **2.3.4 Documento Técnico Exp Virtual** | 131.82d | 2017-03-09 A | 2017-09-18 |  | 55% | 59.86d | 2017-03-09 | 2017-09-18 | 131.82d | 72.17d |  |  |  | 266.4h | 159.2h |
| 155 | 1.2.3.4.1 | Elaboración de la DT | 25d | 2017-07-26 A | 2017-08-29 |  | 70% | 7.5d | 2017-07-26 | 2017-08-29 | 25d | 3.77d | 1.38d | start no earlier than 2017-07-26 | Luis Leiva | 200h | 140h |
| 156 | 1.2.3.4.2 | Revisión de GIN (Arquitectura /Modelo de Datos) | 3d | 2017-09-01 A | 2017-09-06 | 155 | 80% | 0.6d | 2017-09-01 | 2017-09-06 | 3d | 0d |  |  | Edgar Marquez | 24h | 19.2h |
| 157 | 1.2.3.4.3 | Levantamiento de Observaciones | 3d | 2017-03-09 A | 2017-09-08 | 156 | 10% | 2.7d | 2017-03-09 | 2017-09-08 | 3d | 72.17d | 0d |  |  |  |  |
| 158 | 1.2.3.4.4 | Validación Final | 4d | 2017-09-08 | 2017-09-14 | 157 |  |  | 2017-09-08 | 2017-09-14 | 4d | 72.17d | 0d |  | Edgar Marquez [50%]; Wilson R [50%] | 24h |  |
| 159 | 1.2.3.4.5 | Aprobación del documento | 2d | 2017-09-14 | 2017-09-18 | 158 |  |  | 2017-09-14 | 2017-09-18 | 2d | 72.17d |  |  | Edgar Marquez [50%]; Wilson R [15%]; Celis [50%] | 18.4h |  |
| 160 | 1.2.3.5 | **2.3.5 Documento Técnico SGD** | 30d | 2017-08-07 A | 2017-09-18 |  | 23% | 23.2d | 2017-08-07 | 2017-09-18 | 30d | 72d |  |  |  | 252h | 54.4h |
| 161 | 1.2.3.5.1 | Elaboración de la DT | 17d | 2017-08-07 A | 2017-08-29 |  | 40% | 10.2d | 2017-08-07 | 2017-08-29 | 17d | 72d | 0d | start no earlier than 2017-08-07 | Luis Leiva | 136h | 54.4h |
| 162 | 1.2.3.5.2 | Revisión de GIN (Arquitectura /Modelo de Datos) | 3d | 2017-08-31 | 2017-09-04 | 161 |  |  | 2017-08-31 | 2017-09-04 | 3d | 72d | 0d |  | Celis; Edgar Marquez; Wilson R [50%] | 60h |  |
| 163 | 1.2.3.5.3 | Levantamiento de Observaciones | 3d | 2017-09-05 | 2017-09-07 | 162 |  |  | 2017-09-05 | 2017-09-07 | 3d | 72d | 0d |  | Luis Leiva [50%] | 12h |  |
| 164 | 1.2.3.5.4 | Revisión del Resposable del SGD | 3d | 2017-09-08 | 2017-09-12 | 163 |  |  | 2017-09-08 | 2017-09-12 | 3d | 72d | 0d |  |  |  |  |
| 165 | 1.2.3.5.5 | Validación Final | 3d | 2017-09-13 | 2017-09-15 | 164 |  |  | 2017-09-13 | 2017-09-15 | 3d | 72d | 0d |  | Celis [50%]; Edgar Marquez [50%]; Wilson R [50%] | 32h |  |
| 166 | 1.2.3.5.6 | Aprobación del documento | 1d | 2017-09-18 | 2017-09-18 | 165 |  |  | 2017-09-18 | 2017-09-18 | 1d | 72d |  |  | Edgar Marquez [50%]; Luis Leiva [50%]; Wilson R [50%] | 12h |  |
| 167 | 1.2.4 | **2.4 Construcción** | 127.9d | 2017-06-19 A | 2017-12-20 |  | 39% | 77.92d | 2017-06-19 | 2017-12-20 | 127.9d | 7.1d |  |  |  | 1840h | 944.8h |
| 168 | 1.2.4.1 | **2.4.1 Expediente Coactivo Virtual** | 101d | 2017-07-10 A | 2017-11-30 |  | 47% | 53.89d | 2017-07-10 | 2017-11-30 | 101d | 20d |  |  |  | 1496h | 824.8h |
| 169 | 1.2.4.1.1 | **2.4.1.1 Iteración 1 - Generación de archivos PDF** | 69d | 2017-07-10 A | 2017-10-16 |  | 67% | 22.86d | 2017-07-10 | 2017-10-16 | 69d | 52d |  |  |  | 1030h | 769.6h |
| 170 | 1.2.4.1.1.1 | **A. Desarrollo** | 54d | 2017-07-10 A | 2017-09-25 |  | 78% | 11.67d | 2017-07-10 | 2017-09-25 | 54d | 3.1d |  |  |  | 920h | 769.6h |
| 171 | 1.2.4.1.1.1.1 | Generación de archivos PDF | 29d | 2017-07-10 A | 2017-08-18 A |  | 100% |  | 2017-07-10 | 2017-08-18 | 29d |  |  | start no earlier than 2017-07-10 | César A | 232h | 232h |
| 172 | 1.2.4.1.1.1.2 | **Cortado de archivos PDF** | 32.88d | 2017-07-10 A | 2017-08-24 A |  | 100% |  | 2017-07-10 | 2017-08-24 | 32.88d |  |  |  | Fernando B | 488h | 488h |
| 173 | 1.2.4.1.1.1.2.1 | DLL que realiza el corte del PDF | 16d | 2017-07-10 A | 2017-08-01 A |  | 100% |  | 2017-07-10 | 2017-08-01 | 16d |  |  |  | Fernando B | 128h | 128h |
| 174 | 1.2.4.1.1.1.2.2 | Servicio windows y web para la ejecución automática | 8d | 2017-08-02 A | 2017-08-11 A | 173 | 100% |  | 2017-08-02 | 2017-08-11 | 8d |  |  |  | Fernando B | 64h | 64h |
| 175 | 1.2.4.1.1.1.2.3 | Revisión de arquitectura | 2d | 2017-08-14 A | 2017-08-15 A | 174 | 100% |  | 2017-08-14 | 2017-08-15 | 2d |  |  |  | Ronald Raico | 16h | 16h |
| 176 | 1.2.4.1.1.1.2.4 | Subsanación de observaciones | 7d | 2017-08-15 A | 2017-08-24 A | 175 | 100% |  | 2017-08-15 | 2017-08-24 | 7d |  |  |  | Fernando B | 56h | 56h |
| 177 | 1.2.4.1.1.1.3 | Generación de archivo PDF en RS | 2d | 2017-08-21 A | 2017-08-22 A | 171 | 100% |  | 2017-08-21 | 2017-08-22 | 2d |  |  | start no earlier than 2017-08-21 | César A | 16h | 16h |
| 178 | 1.2.4.1.1.1.4 | Generación de archivo PDF en Copia | 1d | 2017-08-23 A | 2017-08-23 A | 177 | 100% |  | 2017-08-23 | 2017-08-23 | 1d |  |  |  | César A | 8h | 8h |
| 179 | 1.2.4.1.1.1.5 | Generación de archivo PDF en CIR y REC Tránsito | 1d | 2017-08-24 A | 2017-08-24 A | 178 | 100% |  | 2017-08-24 | 2017-08-24 | 1d |  |  |  | César A | 8h | 8h |
| 180 | 1.2.4.1.1.1.6 | Revisión código fuente | 1d | 2017-08-25 A | 2017-08-25 A | 179 | 100% |  | 2017-08-25 | 2017-08-25 | 1d |  |  |  | Edgar Marquez | 8h | 8h |
| 181 | 1.2.4.1.1.1.7 | Levantamiento de observaciones | 3d | 2017-08-28 A | 2017-08-31 | 180 | 40% | 1.8d | 2017-08-28 | 2017-08-31 | 3d | 3.1d | 0d |  | César A | 24h | 9.6h |
| 182 | 1.2.4.1.1.1.8 | Generación de archivo PDF en RMC - módulo MC | 5d | 2017-09-01 | 2017-09-07 | 181 |  |  | 2017-09-01 | 2017-09-07 | 5d | 3.1d | 0d |  | César A | 40h |  |
| 183 | 1.2.4.1.1.1.9 | Generación de archivo PDF en RIEF - módulo MC | 2d | 2017-09-08 | 2017-09-11 | 182 |  |  | 2017-09-08 | 2017-09-11 | 2d | 3.1d | 0d |  | César A | 16h |  |
| 184 | 1.2.4.1.1.1.10 | Generación de archivo PDF en Nulidad - módulo MC | 2d | 2017-09-12 | 2017-09-13 | 183 |  |  | 2017-09-12 | 2017-09-13 | 2d | 3.1d | 0d |  | César A | 16h |  |
| 185 | 1.2.4.1.1.1.11 | Generación de archivo PDF en Esquela de Entrega - módulo Depósito | 3d | 2017-09-14 | 2017-09-18 | 184 |  |  | 2017-09-14 | 2017-09-18 | 3d | 3.1d | 0d |  | César A | 24h |  |
| 186 | 1.2.4.1.1.1.12 | Generación de archivo PDF en Acta de Secuestro Conservativo - módulo Depósito | 2d | 2017-09-19 | 2017-09-20 | 185 |  |  | 2017-09-19 | 2017-09-20 | 2d | 3.1d | 0d |  | César A | 16h |  |
| 187 | 1.2.4.1.1.1.13 | Revisión código fuente | 1d | 2017-09-21 | 2017-09-21 | 186 |  |  | 2017-09-21 | 2017-09-21 | 1d | 3.1d | 0d |  | Edgar Marquez | 8h |  |
| 188 | 1.2.4.1.1.1.14 | Levantamiento de observaciones | 2d | 2017-09-22 | 2017-09-25 | 187 |  |  | 2017-09-22 | 2017-09-25 | 2d | 3.1d | 0d |  | César A | 16h |  |

| ID | WBS | Task | Duration | Start | Finish | Predecessors | Complete | Remaining | Baseline start | Baseline finish | Baseline duration | Total slack | Free slack | Constraint | Resources | Work | Actual work |
| --- | --- | --- | --- | --- | --- | --- | --- | --- | --- | --- | --- | --- | --- | --- | --- | --- | --- |
| 189 | 1.2.4.1.1.2 | **B. Pruebas** | 10.3d | 2017-09-26 | 2017-10-10 |  |  |  | 2017-09-26 | 2017-10-10 | 10.3d | 3.1d |  |  |  | 110h |  |
| 190 | 1.2.4.1.1.2.1 | Documentación para el pase | 3d | 2017-09-26 | 2017-09-28 | 188 |  |  | 2017-09-26 | 2017-09-28 | 3d | 3.1d | 0d |  | César A | 24h |  |
| 191 | 1.2.4.1.1.2.2 | Envío y Revisión por AF Calidad (Rev 1) | 3d | 2017-09-29 | 2017-10-03 | 190 |  |  | 2017-09-29 | 2017-10-03 | 3d | 3.1d | 0d |  | AF Calidad | 24h |  |
| 192 | 1.2.4.1.1.2.3 | Levantamiento de Observaciones | 2d | 2017-10-04 | 2017-10-05 | 191 |  |  | 2017-10-04 | 2017-10-05 | 2d | 3.1d | 0d |  | César A | 16h |  |
| 193 | 1.2.4.1.1.2.4 | Pruebas con el equipo AE | 0.3d | 2017-10-06 | 2017-10-06 | 192 |  |  | 2017-10-06 | 2017-10-06 | 0.3d | 3.1d | 0d |  | César A; Luis Leiva; Wilson R [50%] | 6h |  |
| 194 | 1.2.4.1.1.2.5 | Pruebas de Aceptación (usuario) | 2d | 2017-10-06 | 2017-10-10 | 193 |  |  | 2017-10-06 | 2017-10-10 | 2d | 3.1d | 0d |  | César A; Luis Leiva; Wilson R [50%] | 40h |  |
| 195 | 1.2.4.1.1.3 | C. Pase a producción | 0.7d | 2017-10-10 | 2017-10-10 | 194 |  |  | 2017-10-10 | 2017-10-10 | 0.7d | 3.1d | 0d | start no earlier than 2017-03-09 |  |  |  |
| 196 | 1.2.4.1.1.4 | D. Seguimiento | 4d | 2017-10-11 | 2017-10-16 | 195 |  |  | 2017-10-11 | 2017-10-16 | 4d | 52d |  | start no earlier than 2017-09-07 |  |  |  |
| 197 | 1.2.4.1.2 | **2.4.1.2 Iteración 2** | 68d | 2017-08-25 A | 2017-11-30 |  | 12% | 60.05d | 2017-08-25 | 2017-11-30 | 68d | 20d |  |  |  | 466h | 55.2h |
| 198 | 1.2.4.1.2.1 | **A. Desarrollo** | 58d | 2017-08-25 A | 2017-11-16 |  | 14% | 49.83d | 2017-08-25 | 2017-11-16 | 58d | 30d |  |  |  | 376h | 55.2h |
| 199 | 1.2.4.1.2.1.1 | Visualizar documentos digitales del Expediente Coactivo Virtual | 8d | 2017-08-25 A | 2017-09-06 |  | 30% | 5.6d | 2017-08-25 | 2017-09-06 | 8d | 41d | 0d | start no earlier than 2017-08-25 | Fernando B | 64h | 19.2h |
| 200 | 1.2.4.1.2.1.2 | Solicitudes de Impresión de Expediente Coactivo | 10d | 2017-10-23 A | 2017-11-06 |  | 30% | 7d | 2017-10-23 | 2017-11-06 | 10d | 1.5d | 0d | start no earlier than 2017-10-23 | Fernando B | 80h | 24h |
| 201 | 1.2.4.1.2.1.3 | Ingresar documentos digitales manuales al Expediente Coactivo Virtual | 5d | 2017-11-07 A | 2017-11-13 | 200 | 30% | 3.5d | 2017-11-07 | 2017-11-13 | 5d | 33d |  |  | Fernando B | 40h | 12h |
| 202 | 1.2.4.1.2.1.4 | Implementación de cuatro (4) Reportes | 23d | 2017-10-11 | 2017-11-13 | 195 |  |  | 2017-10-11 | 2017-11-13 | 23d | 3.1d | 0d |  | César A | 184h |  |
| 203 | 1.2.4.1.2.1.5 | Revisión en desarrollo | 1d | 2017-11-14 | 2017-11-14 | 202 |  |  | 2017-11-14 | 2017-11-14 | 1d | 3.1d | 0d |  | Edgar Marquez | 8h |  |
| 204 | 1.2.4.1.2.1.6 | Levantamiento de observaciones | 2d | 2017-11-15 | 2017-11-16 | 203 |  |  | 2017-11-15 | 2017-11-16 | 2d | 3.1d | 0d |  |  |  |  |
| 205 | 1.2.4.1.2.2 | **B. Pruebas** | 5.5d | 2017-11-17 | 2017-11-24 |  |  |  | 2017-11-17 | 2017-11-24 | 5.5d | 3.1d |  |  |  | 90h |  |
| 206 | 1.2.4.1.2.2.1 | Documentación para el pase | 1d | 2017-11-17 | 2017-11-17 | 204 |  |  | 2017-11-17 | 2017-11-17 | 1d | 3.1d | 0d |  | Fernando B | 8h |  |
| 207 | 1.2.4.1.2.2.2 | Envío y Revisión por AF Calidad (Rev 1) | 2d | 2017-11-20 | 2017-11-21 | 206 |  |  | 2017-11-20 | 2017-11-21 | 2d | 3.1d | 0d |  | AF Calidad | 16h |  |
| 208 | 1.2.4.1.2.2.3 | Levantamiento de Observaciones | 1d | 2017-11-22 | 2017-11-22 | 207 |  |  | 2017-11-22 | 2017-11-22 | 1d | 3.1d | 0d |  | César A; Fernando B | 16h |  |
| 209 | 1.2.4.1.2.2.4 | Pruebas con el equipo AE | 0.5d | 2017-11-23 | 2017-11-23 | 208 |  |  | 2017-11-23 | 2017-11-23 | 0.5d | 3.1d | 0d |  | César A; Fernando B; Luis Leiva; Wilson R [50%] | 14h |  |
| 210 | 1.2.4.1.2.2.5 | Pruebas de Aceptación (usuario) | 1d | 2017-11-23 | 2017-11-24 | 209 |  |  | 2017-11-23 | 2017-11-24 | 1d | 3.1d | 0d |  | César A; Fernando B; Luis Leiva; Usuario; Wilson R [50%] | 36h |  |
| 211 | 1.2.4.1.2.3 | C. Pase a producción | 0.5d | 2017-11-24 | 2017-11-24 | 210 |  |  | 2017-11-24 | 2017-11-24 | 0.5d | 3.1d | 0d |  |  |  |  |
| 212 | 1.2.4.1.2.4 | D. Seguimiento | 4d | 2017-11-27 | 2017-11-30 | 211 |  |  | 2017-11-27 | 2017-11-30 | 4d | 20d |  |  |  |  |  |

| ID | WBS | Task | Type | Duration | Start | Finish | Predecessors | Complete | Remaining | Baseline start | Baseline finish | Baseline duration | Total slack | Free slack | Constraint | Resources | Work | Actual work |
| --- | --- | --- | --- | --- | --- | --- | --- | --- | --- | --- | --- | --- | --- | --- | --- | --- | --- | --- |
| 213 | 1.2.4.2 | **2.4.2 SGD - Atención de Solicitudes** |  | 127.9d | 2017-06-19 A | 2017-12-20 |  | 22% | 99.15d | 2017-06-19 | 2017-12-20 | 127.9d | 7.1d |  |  |  | 344h | 120h |
| 214 | 1.2.4.2.1 | **Iteración 1** |  | 16.5d | 2017-06-19 A | 2017-07-12 A |  | 100% |  | 2017-06-19 | 2017-07-12 | 16.5d |  |  |  |  | 120h | 120h |
| 215 | 1.2.4.2.1.1 | **A. Desarrollo** |  | 5d | 2017-06-19 A | 2017-06-23 A |  | 100% |  | 2017-06-19 | 2017-06-23 | 5d |  |  |  |  | 120h | 120h |
| 216 | 1.2.4.2.1.1.1 | Implementación de código de barras en el cargo de recepción |  | 5d | 2017-06-19 A | 2017-06-23 A |  | 100% |  | 2017-06-19 | 2017-06-23 | 5d |  |  | start no earlier than 2017-06-19 | César A; Fernando B; Luis Leiva | 120h | 120h |
| 217 | 1.2.4.2.1.2 | **B. Pruebas** |  | 8d | 2017-06-26 A | 2017-07-06 A |  | 100% |  | 2017-06-26 | 2017-07-06 | 8d |  |  |  |  |  |  |
| 218 | 1.2.4.2.1.2.1 | Documentación para el pase |  | 2d | 2017-06-26 A | 2017-06-27 A | 216 | 100% |  | 2017-06-26 | 2017-06-27 | 2d |  |  |  |  |  |  |
| 219 | 1.2.4.2.1.2.2 | Envío y Revisión por AF Calidad (Rev 1) |  | 1d | 2017-06-28 A | 2017-06-28 A | 218 | 100% |  | 2017-06-28 | 2017-06-28 | 1d |  |  |  |  |  |  |
| 220 | 1.2.4.2.1.2.3 | Levantamiento de Observaciones |  | 2d | 2017-06-30 A | 2017-07-03 A | 219 | 100% |  | 2017-06-30 | 2017-07-03 | 2d |  |  |  |  |  |  |
| 221 | 1.2.4.2.1.2.4 | Envío y Revisión por AF Calidad (Rev 2) |  | 2d | 2017-07-04 A | 2017-07-05 A | 220 | 100% |  | 2017-07-04 | 2017-07-05 | 2d |  |  |  |  |  |  |
| 222 | 1.2.4.2.1.2.5 | Pruebas con el equipo AE |  | 0.5d | 2017-07-06 A | 2017-07-06 A | 221 | 100% |  | 2017-07-06 | 2017-07-06 | 0.5d |  |  |  |  |  |  |
| 223 | 1.2.4.2.1.2.6 | Pruebas de Aceptación (usuario) |  | 0.5d | 2017-07-06 A | 2017-07-06 A | 222 | 100% |  | 2017-07-06 | 2017-07-06 | 0.5d |  |  |  |  |  |  |
| 224 | 1.2.4.2.1.3 | C. Pase a Producción |  | 0.5d | 2017-07-07 A | 2017-07-07 A | 223 | 100% |  | 2017-07-07 | 2017-07-07 | 0.5d |  |  |  |  |  |  |
| 225 | 1.2.4.2.1.4 | D. Seguimiento |  | 3d | 2017-07-07 A | 2017-07-12 A | 224 | 100% |  | 2017-07-07 | 2017-07-12 | 3d |  |  |  |  |  |  |
| 226 | 1.2.4.2.2 | **Iteración 2** |  | 39d | 2017-09-07 | 2017-10-31 |  |  |  | 2017-09-07 | 2017-10-31 | 39d | 0d |  |  |  | 224h |  |
| 227 | 1.2.4.2.2.1 | **A. Desarrollo** |  | 29d | 2017-09-07 | 2017-10-17 |  |  |  | 2017-09-07 | 2017-10-17 | 29d | 0d |  |  |  | 224h |  |
| 228 | 1.2.4.2.2.1.1 | Atención: Solicitar firmantes en proyecto respuesta |  | 5d | 2017-09-07 | 2017-09-13 | 199 |  |  | 2017-09-07 | 2017-09-13 | 5d | 41d | 0d |  | Fernando B | 40h |  |
| 229 | 1.2.4.2.2.1.2 | Atención: Firma mecanizada en documento respuesta |  | 2d | 2017-09-14 | 2017-09-15 | 228 |  |  | 2017-09-14 | 2017-09-15 | 2d | 41d | 0d |  | Fernando B | 16h |  |
| 230 | 1.2.4.2.2.1.3 | Atención: Selecccionar efectos en proyecto respuesta |  | 5d | 2017-09-18 | 2017-09-22 | 229 |  |  | 2017-09-18 | 2017-09-22 | 5d | 41d | 0d |  | Fernando B | 40h |  |
| 231 | 1.2.4.2.2.1.4 | Atención: Generar automáticamente el documento respuesta |  | 2d | 2017-09-25 | 2017-09-26 | 230 |  |  | 2017-09-25 | 2017-09-26 | 2d | 41d | 0d |  | Fernando B | 16h |  |
| 232 | 1.2.4.2.2.1.5 | Asignación: Balanceo de Carga equitativo para los resolutores | manual | 1d | 2017-09-07 | 2017-09-07 |  |  |  | 2017-09-07 | 2017-09-07 | 1d |  |  |  | Fernando B | 8h |  |
| 233 | 1.2.4.2.2.1.6 | Reporte Unificado No Tributario |  | 5d | 2017-09-27 | 2017-10-03 | 231 |  |  | 2017-09-27 | 2017-10-03 | 5d | 41d | 0d |  | Fernando B | 40h |  |
| 234 | 1.2.4.2.2.1.7 | Traslado del documento digitalizado al directorio de ubicación final |  | 5d | 2017-10-04 | 2017-10-10 | 233 |  |  | 2017-10-04 | 2017-10-10 | 5d | 41d | 0d |  | Fernando B | 40h |  |
| 235 | 1.2.4.2.2.1.8 | Visualizar el documento digitalizado |  | 2d | 2017-10-11 | 2017-10-12 | 234 |  |  | 2017-10-11 | 2017-10-12 | 2d | 41d | 0d |  | Fernando B | 16h |  |
| 236 | 1.2.4.2.2.1.9 | Revisión en Desarrollo |  | 1d | 2017-10-13 | 2017-10-13 | 235 |  |  | 2017-10-13 | 2017-10-13 | 1d | 41d | 0d |  | Edgar Marquez | 8h |  |
| 237 | 1.2.4.2.2.1.10 | Levantamiento de observaciones |  | 2d | 2017-10-16 | 2017-10-17 | 236 |  |  | 2017-10-16 | 2017-10-17 | 2d | 41d | 0d |  |  |  |  |

| ID | WBS | Task | Duration | Start | Finish | Predecessors | Baseline start | Baseline finish | Baseline duration | Total slack | Free slack | Constraint |
| --- | --- | --- | --- | --- | --- | --- | --- | --- | --- | --- | --- | --- |
| 238 | 1.2.4.2.2.2 | **B. Pruebas** | 5.5d | 2017-10-18 | 2017-10-25 |  | 2017-10-18 | 2017-10-25 | 5.5d | 41d |  |  |
| 239 | 1.2.4.2.2.2.1 | Documentación para el pase | 1d | 2017-10-18 | 2017-10-18 | 237 | 2017-10-18 | 2017-10-18 | 1d | 41d | 0d |  |
| 240 | 1.2.4.2.2.2.2 | Envío y Revisión por AF Calidad (Rev 1) | 2d | 2017-10-19 | 2017-10-20 | 239 | 2017-10-19 | 2017-10-20 | 2d | 41d | 0d |  |
| 241 | 1.2.4.2.2.2.3 | Levantamiento de Observaciones | 1d | 2017-10-23 | 2017-10-23 | 240 | 2017-10-23 | 2017-10-23 | 1d | 41d | 0d |  |
| 242 | 1.2.4.2.2.2.4 | Pruebas con el equipo AE | 0.5d | 2017-10-24 | 2017-10-24 | 241 | 2017-10-24 | 2017-10-24 | 0.5d | 41d | 0d |  |
| 243 | 1.2.4.2.2.2.5 | Pruebas de Aceptación (usuario) | 1d | 2017-10-24 | 2017-10-25 | 242 | 2017-10-24 | 2017-10-25 | 1d | 41d | 0d |  |
| 244 | 1.2.4.2.2.3 | C. Pase a Producción | 0.5d | 2017-10-25 | 2017-10-25 | 243 | 2017-10-25 | 2017-10-25 | 0.5d | 41d | 0d |  |
| 245 | 1.2.4.2.2.4 | D. Seguimiento | 4d | 2017-10-26 | 2017-10-31 | 244 | 2017-10-26 | 2017-10-31 | 4d | 41d |  |  |
| 246 | 1.2.4.2.3 | **Iteración 3** | 16.9d | 2017-11-27 | 2017-12-20 |  | 2017-11-27 | 2017-12-20 | 16.9d | 3.1d |  |  |
| 247 | 1.2.4.2.3.1 | **A. Desarrollo** | 10d | 2017-11-27 | 2017-12-11 |  | 2017-11-27 | 2017-12-11 | 10d | 3.1d |  |  |
| 248 | 1.2.4.2.3.1.1 | Implementación de cuatro (4) Reportes | 8d | 2017-11-27 | 2017-12-06 | 211 | 2017-11-27 | 2017-12-06 | 8d | 3.1d | 0d |  |
| 249 | 1.2.4.2.3.1.2 | Revisión en Desarrollo | 1d | 2017-12-07 | 2017-12-07 | 248 | 2017-12-07 | 2017-12-07 | 1d | 3.1d | 0d |  |
| 250 | 1.2.4.2.3.1.3 | Levantamiento de observaciones | 1d | 2017-12-11 | 2017-12-11 | 249 | 2017-12-11 | 2017-12-11 | 1d | 3.1d | 0d |  |
| 251 | 1.2.4.2.3.2 | **B. Pruebas** | 2.6d | 2017-12-12 | 2017-12-14 |  | 2017-12-12 | 2017-12-14 | 2.6d | 3.1d |  |  |
| 252 | 1.2.4.2.3.2.1 | Documentación para el pase | 0.5d | 2017-12-12 | 2017-12-12 | 250 | 2017-12-12 | 2017-12-12 | 0.5d | 3.1d | 0d |  |
| 253 | 1.2.4.2.3.2.2 | Envío y Revisión por AF Calidad (Rev 1) | 1d | 2017-12-12 | 2017-12-13 | 252 | 2017-12-12 | 2017-12-13 | 1d | 3.1d | 0d |  |
| 254 | 1.2.4.2.3.2.3 | Levantamiento de Observaciones | 0.5d | 2017-12-13 | 2017-12-13 | 253 | 2017-12-13 | 2017-12-13 | 0.5d | 3.1d | 0d |  |
| 255 | 1.2.4.2.3.2.4 | Pruebas con el equipo AE | 0.3d | 2017-12-14 | 2017-12-14 | 254 | 2017-12-14 | 2017-12-14 | 0.3d | 3.1d | 0d |  |
| 256 | 1.2.4.2.3.2.5 | Pruebas de Aceptación (usuario) | 0.3d | 2017-12-14 | 2017-12-14 | 255 | 2017-12-14 | 2017-12-14 | 0.3d | 3.1d | 0d |  |
| 257 | 1.2.4.2.3.3 | C. Pase a Producción | 0.3d | 2017-12-14 | 2017-12-14 | 256 | 2017-12-14 | 2017-12-14 | 0.3d | 3.1d | 0d |  |
| 258 | 1.2.4.2.3.4 | D. Seguimiento | 4d | 2017-12-14 | 2017-12-20 | 257 | 2017-12-14 | 2017-12-20 | 4d | 3.1d | 0d |  |
| 259 | 1.2.5 | **2.5 Actividades complementarias** | 19d | 2017-12-01 | 2017-12-29 |  | 2017-12-01 | 2017-12-29 | 19d | 1d |  |  |
| 260 | 1.2.5.1 | **2.5.1 Capacitación a Usuarios** | 19d | 2017-12-01 | 2017-12-29 |  | 2017-12-01 | 2017-12-29 | 19d | 1d |  |  |
| 261 | 1.2.5.1.1 | Expediente Virtual | 3d | 2017-12-01 | 2017-12-05 | 211 | 2017-12-01 | 2017-12-05 | 3d | 17d |  | start no earlier than 2017-12-01 |
| 262 | 1.2.5.1.2 | SGD - Atención | 3d | 2017-12-27 | 2017-12-29 | 257 | 2017-12-27 | 2017-12-29 | 3d | 1d |  | start no earlier than 2017-12-27 |

| ID | WBS | Task | Duration | Start | Finish | Predecessors | Baseline start | Baseline finish | Baseline duration | Total slack | Free slack |
| --- | --- | --- | --- | --- | --- | --- | --- | --- | --- | --- | --- |
| 263 | 1.2.5.2 | **2.5.2 Transferencia a Informática** | 4d | 2017-12-20 | 2017-12-27 |  | 2017-12-20 | 2017-12-27 | 4d | 3.1d |  |
| 264 | 1.2.5.2.1 | Elaborar documento de transferencia | 3d | 2017-12-20 | 2017-12-26 | 258 | 2017-12-20 | 2017-12-26 | 3d | 3.1d | 0d |
| 265 | 1.2.5.2.2 | Envío de documento formal | 1d | 2017-12-26 | 2017-12-27 | 264 | 2017-12-26 | 2017-12-27 | 1d | 3.1d |  |
