# UNI_VIRTUALIZACION DE SERVICIOS

Schedule from MS Project, 2017-03-06 to 2018-02-16, costs in S/..

## Calendars

- Estándar: Mon-Fri 09:00-13:00, 15:00-19:00; Sat-Sun off. Exceptions (off unless hours are given): 2017-04-13 to 2017-04-14 (Semana Santa Jueves y Viernes), 2017-05-01 (Dia del Trabajo), 2017-06-29 (San Pedro y San Pablo), 2017-07-28 to 2017-07-29 (Fiestas Patrias), 2017-08-30 (Santa Rosa de Lima), 2017-10-08 (Combate de angamos), 2017-11-01 (Dia de los Santos), 2017-12-08 (Día de la Inmaculada), 2017-12-25 (Navidad).

## Resources

| Resource | Rate | Cost per use |
| --- | --- | --- |
| Huaraquispe Aranda Gerardo Manuel | 37.5 |  |
| Castañeda Contreras Cristhofer David | 31.25 |  |
| López Cárdenas Edward Pavel | 31.25 |  |
| Luna Vasquez Julio Bryan | 31.25 |  |
| Trebejo Loayza Waldo Jefferson | 31.25 |  |
| Fernandez Gargurevich Miguel | 31.25 |  |
| Descalzi Santos Luis Armando |  |  |
| De la Cruz Masías Alexander Romulo | 31.25 |  |
| Guzman Garay Fátima Fiorella |  |  |
| Carlos Verastegui Garcia | 37.5 |  |
| Calderon Valenzuela Wilfredo |  |  |
| Tume Ledesma Waldir |  |  |
| Herrera Abad Sonia |  |  |
| Horna Leon Manuel |  |  |
| Marquez Aylas Edgard |  |  |
| Analista de Calidad y Pruebas |  |  |
| Celis Llave Luis Augusto |  |  |
| Escritorio Melamina |  | 500 |
| Sillas |  | 350 |
| Licencia de software |  | 12000 |
| Equipo de computo |  | 3500 |

## Schedule

| ID | WBS | Task | Type | Duration | Start | Finish | Predecessors | Baseline start | Baseline finish | Baseline duration | Total slack | Free slack | Resources | Work | Cost | Baseline cost |
| --- | --- | --- | --- | --- | --- | --- | --- | --- | --- | --- | --- | --- | --- | --- | --- | --- |
| 1 | 1 | **IMPLEMENTACION DE UN CANAL VIRTUAL** |  | 240.67d | 2017-03-06 | 2018-02-16 |  | 2017-03-06 | 2018-02-16 | 240.67d | 0d |  |  | 4969.87h | 165,820 | 165,820 |
| 2 | 1.1 | Acta de Constitución | milestone | 0d | 2017-03-06 | 2017-03-06 |  | 2017-03-06 | 2017-03-06 |  | 240.67d |  |  |  |  |  |
| 3 | 1.2 | **Planificación** |  | 82d | 2017-03-06 | 2017-07-03 |  | 2017-03-06 | 2017-07-03 | 82d | 0d |  |  | 931.2h | 30,920 | 30,920 |
| 4 | 1.2.1 | **Elaboracion de FRI y DA** |  | 82d | 2017-03-06 | 2017-07-03 |  | 2017-03-06 | 2017-07-03 | 82d | 0d |  |  | 931.2h | 30,920 | 30,920 |
| 5 | 1.2.1.1 | Elaborar FRI v1.0 |  | 20d | 2017-03-06 | 2017-03-31 |  | 2017-03-06 | 2017-03-31 | 20d | 0d |  | De la Cruz Masías Alexander Romulo; Huaraquispe Aranda Gerardo Manuel; Carlos Verastegui Garcia | 480h | 17,000 | 17,000 |
| 6 | 1.2.1.2 | Reunión de Revision de FRI v1.0 |  | 10d | 2017-04-03 | 2017-04-18 | 5 | 2017-04-03 | 2017-04-18 | 10d | 0d |  | Calderon Valenzuela Wilfredo [20%]; Huaraquispe Aranda Gerardo Manuel; De la Cruz Masías Alexander Romulo; Carlos Verastegui Garcia [20%] | 64h | 1,700 | 1,700 |
| 7 | 1.2.1.3 | Elaborar FRI v2.0 |  | 4d | 2017-04-19 | 2017-04-24 | 6 | 2017-04-19 | 2017-04-24 | 4d | 0d |  | De la Cruz Masías Alexander Romulo | 32h | 1,000 | 1,000 |
| 8 | 1.2.1.4 | Reunión de Revisión de FRI v2.0 |  | 2d | 2017-04-25 | 2017-04-26 | 7 | 2017-04-25 | 2017-04-26 | 2d | 0d |  | Calderon Valenzuela Wilfredo; De la Cruz Masías Alexander Romulo; Carlos Verastegui Garcia | 48h | 1,100 | 1,100 |
| 9 | 1.2.1.5 | Elaborar FRI v3.0 |  | 10d | 2017-04-27 | 2017-05-11 | 8 | 2017-04-27 | 2017-05-11 | 10d | 0d |  | De la Cruz Masías Alexander Romulo; Huaraquispe Aranda Gerardo Manuel [20%] | 32h | 1,100 | 1,100 |
| 10 | 1.2.1.6 | Revisión de FRI v3.0 |  | 10d | 2017-05-12 | 2017-05-25 | 9 | 2017-05-12 | 2017-05-25 | 10d | 0d |  | Calderon Valenzuela Wilfredo [20%]; Huaraquispe Aranda Gerardo Manuel [20%]; De la Cruz Masías Alexander Romulo; Carlos Verastegui Garcia [20%] | 51.2h | 1,220 | 1,220 |
| 11 | 1.2.1.7 | Aceptacion de FRI | milestone | 0d | 2017-05-25 | 2017-05-25 | 10 | 2017-05-25 | 2017-05-25 |  | 184.67d |  |  |  |  |  |
| 12 | 1.2.1.8 | Elaborar Declaración de Alcance v1.0 |  | 50d | 2017-04-03 | 2017-06-14 | 5 | 2017-04-03 | 2017-06-14 | 50d | 158.67d | 0d | Carlos Verastegui Garcia [80%]; Huaraquispe Aranda Gerardo Manuel [20%] | 160h | 6,000 | 6,000 |
| 13 | 1.2.1.9 | Reunión de revisión de Alcance v1.0 |  | 5d | 2017-06-15 | 2017-06-21 | 12 | 2017-06-15 | 2017-06-21 | 5d | 158.67d | 0d | Calderon Valenzuela Wilfredo [20%]; Huaraquispe Aranda Gerardo Manuel [20%]; Carlos Verastegui Garcia [20%] | 24h | 600 | 600 |
| 14 | 1.2.1.10 | Elaborar Declaracion de Alcance v2.0 |  | 2d | 2017-06-22 | 2017-06-23 | 13 | 2017-06-22 | 2017-06-23 | 2d | 158.67d | 0d | Carlos Verastegui Garcia | 16h | 600 | 600 |
| 15 | 1.2.1.11 | Reunión de revisión de Alcance v2.0 |  | 5d | 2017-06-26 | 2017-07-03 | 14 | 2017-06-26 | 2017-07-03 | 5d | 158.67d | 0d | Calderon Valenzuela Wilfredo [20%]; Huaraquispe Aranda Gerardo Manuel [20%]; Carlos Verastegui Garcia [20%] | 24h | 600 | 600 |
| 16 | 1.2.1.12 | Aceptacion de Declaración de Alcance | milestone | 0d | 2017-07-03 | 2017-07-03 | 15 | 2017-07-03 | 2017-07-03 |  | 158.67d |  |  |  |  |  |
| 17 | 1.3 | **Modelado de Procesos** |  | 56d | 2017-05-26 | 2017-08-15 |  | 2017-05-26 | 2017-08-15 | 56d | 0d |  |  | 896h | 14,000 | 14,000 |
| 18 | 1.3.1 | **Elaboracion de FTP** |  | 56d | 2017-05-26 | 2017-08-15 |  | 2017-05-26 | 2017-08-15 | 56d | 0d |  |  | 896h | 14,000 | 14,000 |
| 19 | 1.3.1.1 | Elaborar FTP Gestion de Afiliación v1.0 |  | 10d | 2017-05-26 | 2017-06-08 | 10 | 2017-05-26 | 2017-06-08 | 10d | 0d |  | De la Cruz Masías Alexander Romulo; Guzman Garay Fátima Fiorella | 160h | 2,500 | 2,500 |
| 20 | 1.3.1.2 | Revisión de FTP v1.0 |  | 1d | 2017-06-09 | 2017-06-09 | 19 | 2017-06-09 | 2017-06-09 | 1d | 0d |  | De la Cruz Masías Alexander Romulo; Guzman Garay Fátima Fiorella | 16h | 250 | 250 |
| 21 | 1.3.1.3 | Elaborar FTP Gestion de Afiliación v2.0 |  | 2d | 2017-06-12 | 2017-06-13 | 20 | 2017-06-12 | 2017-06-13 | 2d | 0d |  | De la Cruz Masías Alexander Romulo; Guzman Garay Fátima Fiorella | 32h | 500 | 500 |
| 22 | 1.3.1.4 | Revisión de FTP v2.0 |  | 1d | 2017-06-14 | 2017-06-14 | 21 | 2017-06-14 | 2017-06-14 | 1d | 0d |  | De la Cruz Masías Alexander Romulo; Guzman Garay Fátima Fiorella | 16h | 250 | 250 |
| 23 | 1.3.1.5 | Aceptación de FTP Afiliación | milestone | 0d | 2017-06-14 | 2017-06-14 | 22 | 2017-06-14 | 2017-06-14 |  | 0d |  |  |  |  |  |
| 24 | 1.3.1.6 | Elaborar FTP Registro de Ciudadanos v1.0 |  | 10d | 2017-06-15 | 2017-06-28 | 23 | 2017-06-15 | 2017-06-28 | 10d | 128.67d | 0d | De la Cruz Masías Alexander Romulo; Guzman Garay Fátima Fiorella | 160h | 2,500 | 2,500 |
| 25 | 1.3.1.7 | Revisión de FTP v1.0 |  | 1d | 2017-06-30 | 2017-06-30 | 24 | 2017-06-30 | 2017-06-30 | 1d | 128.67d | 0d | De la Cruz Masías Alexander Romulo; Guzman Garay Fátima Fiorella | 16h | 250 | 250 |
| 26 | 1.3.1.8 | Elaborar FTP Registro de Ciudadanos v2.0 |  | 2d | 2017-07-03 | 2017-07-04 | 25 | 2017-07-03 | 2017-07-04 | 2d | 128.67d | 0d | De la Cruz Masías Alexander Romulo; Guzman Garay Fátima Fiorella | 32h | 500 | 500 |
| 27 | 1.3.1.9 | Revisión de FTP v2.0 |  | 1d | 2017-07-05 | 2017-07-05 | 26 | 2017-07-05 | 2017-07-05 | 1d | 128.67d | 0d | De la Cruz Masías Alexander Romulo; Guzman Garay Fátima Fiorella | 16h | 250 | 250 |
| 28 | 1.3.1.10 | Aceptación de FTP Registro de Ciudadanos | milestone | 0d | 2017-07-05 | 2017-07-05 | 27 | 2017-07-05 | 2017-07-05 |  | 128.67d | 0d |  |  |  |  |
| 29 | 1.3.1.11 | Elaborar FTP Registro de DJ Vehicular v1.0 |  | 10d | 2017-07-06 | 2017-07-19 | 28 | 2017-07-06 | 2017-07-19 | 10d | 128.67d | 0d | De la Cruz Masías Alexander Romulo; Guzman Garay Fátima Fiorella | 160h | 2,500 | 2,500 |
| 30 | 1.3.1.12 | Revisión de FTP v1.0 |  | 1d | 2017-07-20 | 2017-07-20 | 29 | 2017-07-20 | 2017-07-20 | 1d | 128.67d | 0d | De la Cruz Masías Alexander Romulo; Guzman Garay Fátima Fiorella | 16h | 250 | 250 |
| 31 | 1.3.1.13 | Elaborar FTP Registro de DJ Vehicular v2.0 |  | 2d | 2017-07-21 | 2017-07-24 | 30 | 2017-07-21 | 2017-07-24 | 2d | 128.67d | 0d | De la Cruz Masías Alexander Romulo; Guzman Garay Fátima Fiorella | 32h | 500 | 500 |
| 32 | 1.3.1.14 | Revisión de FTP v2.0 |  | 1d | 2017-07-25 | 2017-07-25 | 31 | 2017-07-25 | 2017-07-25 | 1d | 128.67d | 0d | De la Cruz Masías Alexander Romulo; Guzman Garay Fátima Fiorella | 16h | 250 | 250 |
| 33 | 1.3.1.15 | Aceptación de FTP Registro de DJ Vehicular | milestone | 0d | 2017-07-25 | 2017-07-25 | 32 | 2017-07-25 | 2017-07-25 |  | 128.67d | 0d |  |  |  |  |
| 34 | 1.3.1.16 | Elaborar FTP Registro de Liquidaciones de alcabala v1.0 |  | 10d | 2017-07-26 | 2017-08-09 | 33 | 2017-07-26 | 2017-08-09 | 10d | 128.67d | 0d | De la Cruz Masías Alexander Romulo; Guzman Garay Fátima Fiorella | 160h | 2,500 | 2,500 |
| 35 | 1.3.1.17 | Revisión de FTP v1.0 |  | 1d | 2017-08-10 | 2017-08-10 | 34 | 2017-08-10 | 2017-08-10 | 1d | 128.67d | 0d | De la Cruz Masías Alexander Romulo; Guzman Garay Fátima Fiorella | 16h | 250 | 250 |
| 36 | 1.3.1.18 | Elaborar FTP Registro de Liquidaciones de alcabala v2.0 |  | 2d | 2017-08-11 | 2017-08-14 | 35 | 2017-08-11 | 2017-08-14 | 2d | 128.67d | 0d | De la Cruz Masías Alexander Romulo; Guzman Garay Fátima Fiorella | 32h | 500 | 500 |
| 37 | 1.3.1.19 | Revisión de FTP v2.0 |  | 1d | 2017-08-15 | 2017-08-15 | 36 | 2017-08-15 | 2017-08-15 | 1d | 128.67d | 0d | De la Cruz Masías Alexander Romulo; Guzman Garay Fátima Fiorella | 16h | 250 | 250 |
| 38 | 1.3.1.20 | Aceptación de FTP Registro de Liquidaciones de alcabala | milestone | 0d | 2017-08-15 | 2017-08-15 | 37 | 2017-08-15 | 2017-08-15 |  | 128.67d |  |  |  |  |  |

| ID | WBS | Task | Type | Duration | Start | Finish | Predecessors | Baseline start | Baseline finish | Baseline duration | Total slack | Free slack | Resources | Work | Cost | Baseline cost |
| --- | --- | --- | --- | --- | --- | --- | --- | --- | --- | --- | --- | --- | --- | --- | --- | --- |
| 39 | 1.4 | **Analisis y Diseño de Sistemas** |  | 58.67d | 2017-06-15 | 2017-09-08 |  | 2017-06-15 | 2017-09-08 | 58.67d | 0d |  |  | 601.87h | 16,720 | 16,720 |
| 40 | 1.4.1 | **Elaboracion de DF** |  | 50.67d | 2017-06-15 | 2017-08-28 |  | 2017-06-15 | 2017-08-28 | 50.67d | 0d |  |  | 357.87h | 10,000 | 10,000 |
| 41 | 1.4.1.1 | Elaborar DF Gestión de Afiliación |  | 10.67d | 2017-06-15 | 2017-06-30 | 23 | 2017-06-15 | 2017-06-30 | 10.67d | 0d |  | Descalzi Santos Luis Armando [25%]; Huaraquispe Aranda Gerardo Manuel [80%] | 84.27h | 2,560 | 2,560 |
| 42 | 1.4.1.2 | Revisión DF Gestión de Afiliación |  | 5d | 2017-06-30 | 2017-07-07 | 41 | 2017-06-30 | 2017-07-07 | 5d | 0d |  | Descalzi Santos Luis Armando [20%]; Huaraquispe Aranda Gerardo Manuel [20%] | 16h | 300 | 300 |
| 43 | 1.4.1.3 | Modificación DF Gestion de Afiliación |  | 1d | 2017-07-07 | 2017-07-10 | 42 | 2017-07-07 | 2017-07-10 | 1d | 0d |  | Descalzi Santos Luis Armando [25%]; Huaraquispe Aranda Gerardo Manuel [80%] | 8.4h | 240 | 240 |
| 44 | 1.4.1.4 | Revisión y firma DF Gestion de Afiliacion |  | 1d | 2017-07-10 | 2017-07-11 | 43 | 2017-07-10 | 2017-07-11 | 1d | 0d |  | Descalzi Santos Luis Armando [20%]; Huaraquispe Aranda Gerardo Manuel [20%] | 3.2h | 60 | 60 |
| 45 | 1.4.1.5 | Aceptacion DF Gestion de Afiliación | milestone | 0d | 2017-07-11 | 2017-07-11 | 44 | 2017-07-11 | 2017-07-11 |  | 0d |  |  |  |  |  |
| 46 | 1.4.1.6 | Elaborar DF Registro de Ciudadanos |  | 8d | 2017-07-11 | 2017-07-21 | 45 | 2017-07-11 | 2017-07-21 | 8d | 0d |  | Descalzi Santos Luis Armando [25%]; Huaraquispe Aranda Gerardo Manuel [80%] | 67.2h | 1,920 | 1,920 |
| 47 | 1.4.1.7 | Revisión DF Registro de Ciudadanos |  | 1d | 2017-07-21 | 2017-07-24 | 46 | 2017-07-21 | 2017-07-24 | 1d | 0d |  | Descalzi Santos Luis Armando [20%]; Huaraquispe Aranda Gerardo Manuel [20%] | 3.2h | 60 | 60 |
| 48 | 1.4.1.8 | Modificación DF Registro de Ciudadanos |  | 1d | 2017-07-24 | 2017-07-25 | 47 | 2017-07-24 | 2017-07-25 | 1d | 0d |  | Descalzi Santos Luis Armando [25%]; Huaraquispe Aranda Gerardo Manuel [80%] | 8.4h | 240 | 240 |
| 49 | 1.4.1.9 | Revisión y firma DF Registro de Ciudadanos |  | 1d | 2017-07-25 | 2017-07-26 | 48 | 2017-07-25 | 2017-07-26 | 1d | 0d |  | Descalzi Santos Luis Armando [20%]; Huaraquispe Aranda Gerardo Manuel [20%] | 3.2h | 60 | 60 |
| 50 | 1.4.1.10 | Aceptacion DF Registro de Ciudadanos | milestone | 0d | 2017-07-26 | 2017-07-26 | 49 | 2017-07-26 | 2017-07-26 |  | 0d |  |  |  |  |  |
| 51 | 1.4.1.11 | Elaborar DF Registro Vehicular |  | 8d | 2017-07-26 | 2017-08-08 | 50 | 2017-07-26 | 2017-08-08 | 8d | 112d | 0d | Descalzi Santos Luis Armando [25%]; Huaraquispe Aranda Gerardo Manuel [80%] | 67.2h | 1,920 | 1,920 |
| 52 | 1.4.1.12 | Revisión DF Registro Vehicular |  | 1d | 2017-08-08 | 2017-08-09 | 51 | 2017-08-08 | 2017-08-09 | 1d | 112d | 0d | Descalzi Santos Luis Armando [20%]; Huaraquispe Aranda Gerardo Manuel [20%] | 3.2h | 60 | 60 |
| 53 | 1.4.1.13 | Modificación DF Registro Vehicular |  | 1d | 2017-08-09 | 2017-08-10 | 52 | 2017-08-09 | 2017-08-10 | 1d | 112d | 0d | Descalzi Santos Luis Armando [25%]; Huaraquispe Aranda Gerardo Manuel [80%] | 8.4h | 240 | 240 |
| 54 | 1.4.1.14 | Revisión y firma DF Registro Vehicular |  | 1d | 2017-08-10 | 2017-08-11 | 53 | 2017-08-10 | 2017-08-11 | 1d | 112d | 0d | Descalzi Santos Luis Armando [20%]; Huaraquispe Aranda Gerardo Manuel [20%] | 3.2h | 60 | 60 |
| 55 | 1.4.1.15 | Aceptacion DF Registro Vehicular | milestone | 0d | 2017-08-11 | 2017-08-11 | 54 | 2017-08-11 | 2017-08-11 |  | 112d | 0d |  |  |  |  |
| 56 | 1.4.1.16 | Elaborar DF Registro Liquidacion Alcabala |  | 8d | 2017-08-11 | 2017-08-23 | 55 | 2017-08-11 | 2017-08-23 | 8d | 112d | 0d | Descalzi Santos Luis Armando [25%]; Huaraquispe Aranda Gerardo Manuel [80%] | 67.2h | 1,920 | 1,920 |
| 57 | 1.4.1.17 | Revisión DF Registro Liquidacion Alcabala |  | 1d | 2017-08-23 | 2017-08-24 | 56 | 2017-08-23 | 2017-08-24 | 1d | 112d | 0d | Descalzi Santos Luis Armando [20%]; Huaraquispe Aranda Gerardo Manuel [20%] | 3.2h | 60 | 60 |
| 58 | 1.4.1.18 | Modificación DF Registro Liquidacion Alcabala |  | 1d | 2017-08-24 | 2017-08-25 | 57 | 2017-08-24 | 2017-08-25 | 1d | 112d | 0d | Descalzi Santos Luis Armando [25%]; Huaraquispe Aranda Gerardo Manuel [80%] | 8.4h | 240 | 240 |
| 59 | 1.4.1.19 | Revisión y firma DF Registro Liquidacion Alcabala |  | 1d | 2017-08-25 | 2017-08-28 | 58 | 2017-08-25 | 2017-08-28 | 1d | 112d | 0d | Descalzi Santos Luis Armando [20%]; Huaraquispe Aranda Gerardo Manuel [20%] | 3.2h | 60 | 60 |
| 60 | 1.4.1.20 | Aceptacion DF Registro Liquidacion Alcabala | milestone | 0d | 2017-08-28 | 2017-08-28 | 59 | 2017-08-28 | 2017-08-28 |  | 112d | 0d |  |  |  |  |
| 61 | 1.4.2 | **Elaboracion de DT** |  | 41d | 2017-07-11 | 2017-09-08 |  | 2017-07-11 | 2017-09-08 | 41d | 112d |  |  | 244h | 6,720 | 6,720 |
| 62 | 1.4.2.1 | Elaborar DT Gestión de Afiliación |  | 5d | 2017-07-11 | 2017-07-18 | 45 | 2017-07-11 | 2017-07-18 | 5d | 144d | 0d | Descalzi Santos Luis Armando [25%]; Huaraquispe Aranda Gerardo Manuel [80%] | 42h | 1,200 | 1,200 |
| 63 | 1.4.2.2 | Revisión DT Gestión de Afiliación |  | 1d | 2017-07-18 | 2017-07-19 | 62 | 2017-07-18 | 2017-07-19 | 1d | 144d | 0d | Descalzi Santos Luis Armando [20%]; Huaraquispe Aranda Gerardo Manuel [20%] | 3.2h | 60 | 60 |
| 64 | 1.4.2.3 | Modificación DT Gestion de Afiliación |  | 2d | 2017-07-19 | 2017-07-21 | 63 | 2017-07-19 | 2017-07-21 | 2d | 144d | 0d | Descalzi Santos Luis Armando [25%]; Huaraquispe Aranda Gerardo Manuel [80%] | 16.8h | 480 | 480 |
| 65 | 1.4.2.4 | Revisión y firma DT Gestion de Afiliacion |  | 1d | 2017-07-21 | 2017-07-24 | 64 | 2017-07-21 | 2017-07-24 | 1d | 144d | 0d | Descalzi Santos Luis Armando [20%]; Huaraquispe Aranda Gerardo Manuel [20%] | 3.2h | 60 | 60 |
| 66 | 1.4.2.5 | Aceptacion DT Gestion de Afiliación | milestone | 0d | 2017-07-24 | 2017-07-24 | 65 | 2017-07-24 | 2017-07-24 |  | 144d |  |  |  |  |  |
| 67 | 1.4.2.6 | Elaborar DT Registro de Ciudadanos |  | 5d | 2017-07-26 | 2017-08-03 | 50 | 2017-07-26 | 2017-08-03 | 5d | 134d | 0d | Descalzi Santos Luis Armando [25%]; Huaraquispe Aranda Gerardo Manuel [80%] | 42h | 1,200 | 1,200 |
| 68 | 1.4.2.7 | Revisión DT Registro de Ciudadanos |  | 1d | 2017-08-03 | 2017-08-04 | 67 | 2017-08-03 | 2017-08-04 | 1d | 134d | 0d | Descalzi Santos Luis Armando [20%]; Huaraquispe Aranda Gerardo Manuel [20%] | 3.2h | 60 | 60 |
| 69 | 1.4.2.8 | Modificación DT Registro de Ciudadanos |  | 1d | 2017-08-04 | 2017-08-07 | 68 | 2017-08-04 | 2017-08-07 | 1d | 134d | 0d | Descalzi Santos Luis Armando [25%]; Huaraquispe Aranda Gerardo Manuel [80%] | 8.4h | 240 | 240 |
| 70 | 1.4.2.9 | Revisión y firma DT Registro de Ciudadanos |  | 1d | 2017-08-07 | 2017-08-08 | 69 | 2017-08-07 | 2017-08-08 | 1d | 134d | 0d | Descalzi Santos Luis Armando [20%]; Huaraquispe Aranda Gerardo Manuel [20%] | 3.2h | 60 | 60 |
| 71 | 1.4.2.10 | Aceptacion DT Registro de Ciudadanos | milestone | 0d | 2017-08-08 | 2017-08-08 | 70 | 2017-08-08 | 2017-08-08 |  | 134d |  |  |  |  |  |
| 72 | 1.4.2.11 | Elaborar DT Registro Vehicular |  | 5d | 2017-08-11 | 2017-08-18 | 54 | 2017-08-11 | 2017-08-18 | 5d | 122d | 0d | Descalzi Santos Luis Armando [25%]; Huaraquispe Aranda Gerardo Manuel [80%] | 42h | 1,200 | 1,200 |
| 73 | 1.4.2.12 | Revisión DT Registro Vehicular |  | 1d | 2017-08-18 | 2017-08-21 | 72 | 2017-08-18 | 2017-08-21 | 1d | 122d | 0d | Descalzi Santos Luis Armando [20%]; Huaraquispe Aranda Gerardo Manuel [20%] | 3.2h | 60 | 60 |
| 74 | 1.4.2.13 | Modificación DT Registro Vehicular |  | 2d | 2017-08-21 | 2017-08-23 | 73 | 2017-08-21 | 2017-08-23 | 2d | 122d | 0d | Descalzi Santos Luis Armando [25%]; Huaraquispe Aranda Gerardo Manuel [80%] | 16.8h | 480 | 480 |
| 75 | 1.4.2.14 | Revisión y firma DT Registro Vehicular |  | 1d | 2017-08-23 | 2017-08-24 | 74 | 2017-08-23 | 2017-08-24 | 1d | 122d | 0d | Descalzi Santos Luis Armando [20%]; Huaraquispe Aranda Gerardo Manuel [20%] | 3.2h | 60 | 60 |
| 76 | 1.4.2.15 | Aceptacion DT Registro Vehicular | milestone | 0d | 2017-08-24 | 2017-08-24 | 75 | 2017-08-24 | 2017-08-24 |  | 122d |  |  |  |  |  |
| 77 | 1.4.2.16 | Elaborar DT Registro Liquidacion Alcabala |  | 5d | 2017-08-28 | 2017-09-05 | 60 | 2017-08-28 | 2017-09-05 | 5d | 112d | 0d | Descalzi Santos Luis Armando [25%]; Huaraquispe Aranda Gerardo Manuel [80%] | 42h | 1,200 | 1,200 |
| 78 | 1.4.2.17 | Revisión DT Registro Liquidacion Alcabala |  | 1d | 2017-09-05 | 2017-09-06 | 77 | 2017-09-05 | 2017-09-06 | 1d | 112d | 0d | Descalzi Santos Luis Armando [20%]; Huaraquispe Aranda Gerardo Manuel [20%] | 3.2h | 60 | 60 |
| 79 | 1.4.2.18 | Modificación DT Registro Liquidacion Alcabala |  | 1d | 2017-09-06 | 2017-09-07 | 78 | 2017-09-06 | 2017-09-07 | 1d | 112d | 0d | Descalzi Santos Luis Armando [25%]; Huaraquispe Aranda Gerardo Manuel [80%] | 8.4h | 240 | 240 |
| 80 | 1.4.2.19 | Revisión y firma DT Registro Liquidacion Alcabala |  | 1d | 2017-09-07 | 2017-09-08 | 79 | 2017-09-07 | 2017-09-08 | 1d | 112d | 0d | Descalzi Santos Luis Armando [20%]; Huaraquispe Aranda Gerardo Manuel [20%] | 3.2h | 60 | 60 |
| 81 | 1.4.2.20 | Aceptacion DT Registro Liquidacion Alcabala | milestone | 0d | 2017-09-08 | 2017-09-08 | 80 | 2017-09-08 | 2017-09-08 |  | 112d |  |  |  |  |  |

| ID | WBS | Task | Type | Duration | Start | Finish | Predecessors | Baseline start | Baseline finish | Baseline duration | Total slack | Resources | Work | Cost | Baseline cost |
| --- | --- | --- | --- | --- | --- | --- | --- | --- | --- | --- | --- | --- | --- | --- | --- |
| 82 | 1.5 | **Construcción** |  | 133d | 2017-07-26 | 2018-02-05 |  | 2017-07-26 | 2018-02-05 | 133d | 0d |  | 2520h | 72,950 | 72,950 |
| 83 | 1.5.1 | **Elaboracion de Prototipos** |  | 47d | 2017-07-26 | 2017-10-03 |  | 2017-07-26 | 2017-10-03 | 47d | 0d |  | 464h | 8,700 | 8,700 |
| 84 | 1.5.1.1 | Elaboracion de Prototipos |  | 30d | 2017-07-26 | 2017-09-08 | 50 | 2017-07-26 | 2017-09-08 | 30d | 0d | Castañeda Contreras Cristhofer David; Descalzi Santos Luis Armando [50%] | 240h | 3,750 | 3,750 |
| 85 | 1.5.1.2 | Estandarizacion de prototipos e Interfaces |  | 3d | 2017-09-08 | 2017-09-13 | 84 | 2017-09-08 | 2017-09-13 | 3d | 0d | Descalzi Santos Luis Armando; Fernandez Gargurevich Miguel | 48h | 750 | 750 |
| 86 | 1.5.1.3 | Analisis del Modelo de datos |  | 2d | 2017-09-13 | 2017-09-15 | 85 | 2017-09-13 | 2017-09-15 | 2d | 0d | Descalzi Santos Luis Armando; Huaraquispe Aranda Gerardo Manuel; López Cárdenas Edward Pavel | 48h | 1,100 | 1,100 |
| 87 | 1.5.1.4 | Elaboracion de scripts para creación de Base de datos |  | 10d | 2017-09-15 | 2017-09-29 | 86 | 2017-09-15 | 2017-09-29 | 10d | 0d | Luna Vasquez Julio Bryan | 80h | 2,500 | 2,500 |
| 88 | 1.5.1.5 | Revision y observaciones |  | 2d | 2017-09-29 | 2017-10-03 | 87 | 2017-09-29 | 2017-10-03 | 2d | 0d | Celis Llave Luis Augusto; Descalzi Santos Luis Armando; Huaraquispe Aranda Gerardo Manuel | 48h | 600 | 600 |
| 89 | 1.5.1.6 | Prototipo aprobado | milestone | 0d | 2017-10-03 | 2017-10-03 | 88 | 2017-10-03 | 2017-10-03 |  | 0d |  |  |  |  |
| 90 | 1.5.2 | **Gestion de Afiliación** |  | 38d | 2017-10-03 | 2017-11-27 |  | 2017-10-03 | 2017-11-27 | 38d | 0d |  | 304h | 9,500 | 9,500 |
| 91 | 1.5.2.1 | Implementar procedimientos |  | 5d | 2017-10-03 | 2017-10-10 | 89 | 2017-10-03 | 2017-10-10 | 5d | 0d | Trebejo Loayza Waldo Jefferson | 40h | 1,250 | 1,250 |
| 92 | 1.5.2.2 | implementación de capcha |  | 2d | 2017-10-10 | 2017-10-12 | 91 | 2017-10-10 | 2017-10-12 | 2d | 0d | Trebejo Loayza Waldo Jefferson | 16h | 500 | 500 |
| 93 | 1.5.2.3 | Implementacion de validaciones y reglas de negocio |  | 4d | 2017-10-12 | 2017-10-18 | 92 | 2017-10-12 | 2017-10-18 | 4d | 0d | Trebejo Loayza Waldo Jefferson | 32h | 1,000 | 1,000 |
| 94 | 1.5.2.4 | Implementacion de envío de correo |  | 2d | 2017-10-18 | 2017-10-20 | 93 | 2017-10-18 | 2017-10-20 | 2d | 0d | Trebejo Loayza Waldo Jefferson | 16h | 500 | 500 |
| 95 | 1.5.2.5 | Registro de Datos |  | 4d | 2017-10-20 | 2017-10-26 | 94 | 2017-10-20 | 2017-10-26 | 4d | 0d | Trebejo Loayza Waldo Jefferson | 32h | 1,000 | 1,000 |
| 96 | 1.5.2.6 | Implementacion de Formatos |  | 2d | 2017-10-26 | 2017-10-30 | 95 | 2017-10-26 | 2017-10-30 | 2d | 0d | Trebejo Loayza Waldo Jefferson | 16h | 500 | 500 |
| 97 | 1.5.2.7 | Implementacion de terminos y condiciones |  | 2d | 2017-10-30 | 2017-11-02 | 96 | 2017-10-30 | 2017-11-02 | 2d | 0d | Trebejo Loayza Waldo Jefferson | 16h | 500 | 500 |
| 98 | 1.5.2.8 | Implementacion de validad domicilo |  | 4d | 2017-11-02 | 2017-11-08 | 97 | 2017-11-02 | 2017-11-08 | 4d | 0d | Trebejo Loayza Waldo Jefferson | 32h | 1,000 | 1,000 |
| 99 | 1.5.2.9 | Revision de Codigo |  | 2d | 2017-11-08 | 2017-11-10 | 98 | 2017-11-08 | 2017-11-10 | 2d | 0d | Trebejo Loayza Waldo Jefferson | 16h | 500 | 500 |
| 100 | 1.5.2.10 | Correcciones y observaciones |  | 1d | 2017-11-10 | 2017-11-13 | 99 | 2017-11-10 | 2017-11-13 | 1d | 0d | Trebejo Loayza Waldo Jefferson | 8h | 250 | 250 |
| 101 | 1.5.2.11 | Ajustes al codigo |  | 1d | 2017-11-13 | 2017-11-14 | 100 | 2017-11-13 | 2017-11-14 | 1d | 0d | Trebejo Loayza Waldo Jefferson | 8h | 250 | 250 |
| 102 | 1.5.2.12 | Validación al codigo |  | 1d | 2017-11-14 | 2017-11-15 | 101 | 2017-11-14 | 2017-11-15 | 1d | 0d | Trebejo Loayza Waldo Jefferson | 8h | 250 | 250 |
| 103 | 1.5.2.13 | Pruebas |  | 2d | 2017-11-15 | 2017-11-17 | 102 | 2017-11-15 | 2017-11-17 | 2d | 0d | Trebejo Loayza Waldo Jefferson | 16h | 500 | 500 |
| 104 | 1.5.2.14 | Definicion de casos de prueba |  | 1d | 2017-11-17 | 2017-11-20 | 103 | 2017-11-17 | 2017-11-20 | 1d | 0d | Trebejo Loayza Waldo Jefferson | 8h | 250 | 250 |
| 105 | 1.5.2.15 | Pruebas unitarias |  | 2d | 2017-11-20 | 2017-11-22 | 104 | 2017-11-20 | 2017-11-22 | 2d | 0d | Trebejo Loayza Waldo Jefferson | 16h | 500 | 500 |
| 106 | 1.5.2.16 | Revision por parte del area de calidad |  | 2d | 2017-11-22 | 2017-11-24 | 105 | 2017-11-22 | 2017-11-24 | 2d | 0d | Trebejo Loayza Waldo Jefferson | 16h | 500 | 500 |
| 107 | 1.5.2.17 | Pruebas de aceptación |  | 1d | 2017-11-24 | 2017-11-27 | 106 | 2017-11-24 | 2017-11-27 | 1d | 0d | Trebejo Loayza Waldo Jefferson | 8h | 250 | 250 |
| 108 | 1.5.2.18 | Solicitud de pase a producción | milestone | 0d | 2017-11-27 | 2017-11-27 | 107 | 2017-11-27 | 2017-11-27 |  | 48d |  |  |  |  |

| ID | WBS | Task | Type | Duration | Start | Finish | Predecessors | Baseline start | Baseline finish | Baseline duration | Total slack | Free slack | Resources | Work | Cost | Baseline cost |
| --- | --- | --- | --- | --- | --- | --- | --- | --- | --- | --- | --- | --- | --- | --- | --- | --- |
| 109 | 1.5.3 | **Gestion de Registro Ciudadano** |  | 42d | 2017-11-27 | 2018-01-26 |  | 2017-11-27 | 2018-01-26 | 42d | 6d |  |  | 672h | 21,000 | 21,000 |
| 110 | 1.5.3.1 | Implementación de procedimientos |  | 6d | 2017-11-27 | 2017-12-05 | 107 | 2017-11-27 | 2017-12-05 | 6d | 6d | 0d | Fernandez Gargurevich Miguel; López Cárdenas Edward Pavel | 96h | 3,000 | 3,000 |
| 111 | 1.5.3.2 | Validaciones y reglas de negocio |  | 4d | 2017-12-05 | 2017-12-12 | 110 | 2017-12-05 | 2017-12-12 | 4d | 6d | 0d | Fernandez Gargurevich Miguel; López Cárdenas Edward Pavel | 64h | 2,000 | 2,000 |
| 112 | 1.5.3.3 | Registro de Dirección |  | 2d | 2017-12-12 | 2017-12-14 | 111 | 2017-12-12 | 2017-12-14 | 2d | 6d | 0d | Fernandez Gargurevich Miguel; López Cárdenas Edward Pavel | 32h | 1,000 | 1,000 |
| 113 | 1.5.3.4 | Corrección de observaciones de código |  | 1d | 2017-12-14 | 2017-12-15 | 112 | 2017-12-14 | 2017-12-15 | 1d | 6d | 0d | Fernandez Gargurevich Miguel; López Cárdenas Edward Pavel | 16h | 500 | 500 |
| 114 | 1.5.3.5 | Implementación de funcionalidad de correlativos y parámetros |  | 2d | 2017-12-15 | 2017-12-19 | 113 | 2017-12-15 | 2017-12-19 | 2d | 6d | 0d | Fernandez Gargurevich Miguel; López Cárdenas Edward Pavel | 32h | 1,000 | 1,000 |
| 115 | 1.5.3.6 | Implementación de validación de domicilio |  | 2d | 2017-12-19 | 2017-12-21 | 114 | 2017-12-19 | 2017-12-21 | 2d | 6d | 0d | Fernandez Gargurevich Miguel; López Cárdenas Edward Pavel | 32h | 1,000 | 1,000 |
| 116 | 1.5.3.7 | Datos de Contacto |  | 2d | 2017-12-21 | 2017-12-26 | 115 | 2017-12-21 | 2017-12-26 | 2d | 6d | 0d | Fernandez Gargurevich Miguel; López Cárdenas Edward Pavel | 32h | 1,000 | 1,000 |
| 117 | 1.5.3.8 | Datos del Relacionado |  | 2d | 2017-12-26 | 2017-12-28 | 116 | 2017-12-26 | 2017-12-28 | 2d | 6d | 0d | Fernandez Gargurevich Miguel; López Cárdenas Edward Pavel | 32h | 1,000 | 1,000 |
| 118 | 1.5.3.9 | Datos de Delegado |  | 2d | 2017-12-28 | 2018-01-01 | 117 | 2017-12-28 | 2018-01-01 | 2d | 6d | 0d | Fernandez Gargurevich Miguel; López Cárdenas Edward Pavel | 32h | 1,000 | 1,000 |
| 119 | 1.5.3.10 | Registro de Datos |  | 2d | 2018-01-01 | 2018-01-03 | 118 | 2018-01-01 | 2018-01-03 | 2d | 6d | 0d | Fernandez Gargurevich Miguel; López Cárdenas Edward Pavel | 32h | 1,000 | 1,000 |
| 120 | 1.5.3.11 | Revision de Codigo |  | 1d | 2018-01-03 | 2018-01-04 | 119 | 2018-01-03 | 2018-01-04 | 1d | 6d | 0d | Fernandez Gargurevich Miguel; López Cárdenas Edward Pavel | 16h | 500 | 500 |
| 121 | 1.5.3.12 | Correcciones y observaciones |  | 1d | 2018-01-04 | 2018-01-05 | 120 | 2018-01-04 | 2018-01-05 | 1d | 6d | 0d | Fernandez Gargurevich Miguel; López Cárdenas Edward Pavel | 16h | 500 | 500 |
| 122 | 1.5.3.13 | Ajustes al codigo |  | 2d | 2018-01-05 | 2018-01-09 | 121 | 2018-01-05 | 2018-01-09 | 2d | 6d | 0d | Fernandez Gargurevich Miguel; López Cárdenas Edward Pavel | 32h | 1,000 | 1,000 |
| 123 | 1.5.3.14 | Validación al codigo |  | 1d | 2018-01-09 | 2018-01-10 | 122 | 2018-01-09 | 2018-01-10 | 1d | 6d | 0d | Fernandez Gargurevich Miguel; López Cárdenas Edward Pavel | 16h | 500 | 500 |
| 124 | 1.5.3.15 | Pruebas |  | 4d | 2018-01-10 | 2018-01-16 | 123 | 2018-01-10 | 2018-01-16 | 4d | 6d | 0d | Fernandez Gargurevich Miguel; López Cárdenas Edward Pavel | 64h | 2,000 | 2,000 |
| 125 | 1.5.3.16 | Definicion de casos de prueba |  | 2d | 2018-01-16 | 2018-01-18 | 124 | 2018-01-16 | 2018-01-18 | 2d | 6d | 0d | Fernandez Gargurevich Miguel; López Cárdenas Edward Pavel | 32h | 1,000 | 1,000 |
| 126 | 1.5.3.17 | Pruebas unitarias |  | 2d | 2018-01-18 | 2018-01-22 | 125 | 2018-01-18 | 2018-01-22 | 2d | 6d | 0d | Fernandez Gargurevich Miguel; López Cárdenas Edward Pavel | 32h | 1,000 | 1,000 |
| 127 | 1.5.3.18 | Revision por parte del area de calidad |  | 2d | 2018-01-22 | 2018-01-24 | 126 | 2018-01-22 | 2018-01-24 | 2d | 6d | 0d | Fernandez Gargurevich Miguel; López Cárdenas Edward Pavel | 32h | 1,000 | 1,000 |
| 128 | 1.5.3.19 | Pruebas de aceptación |  | 2d | 2018-01-24 | 2018-01-26 | 127 | 2018-01-24 | 2018-01-26 | 2d | 6d | 0d | Fernandez Gargurevich Miguel; López Cárdenas Edward Pavel | 32h | 1,000 | 1,000 |
| 129 | 1.5.3.20 | Solicitud de pase a producción | milestone | 0d | 2018-01-26 | 2018-01-26 | 128 | 2018-01-26 | 2018-01-26 |  | 6d |  |  |  |  |  |
| 130 | 1.5.4 | **Gestion de Impuesto Vehicular** |  | 48d | 2017-11-27 | 2018-02-05 |  | 2017-11-27 | 2018-02-05 | 48d | 0d |  |  | 768h | 24,000 | 24,000 |
| 131 | 1.5.4.1 | Validaciones y reglas de negocio |  | 8d | 2017-11-27 | 2017-12-07 | 107 | 2017-11-27 | 2017-12-07 | 8d | 0d |  | Castañeda Contreras Cristhofer David; Luna Vasquez Julio Bryan | 128h | 4,000 | 4,000 |
| 132 | 1.5.4.2 | Consulta de DJ Vehicular |  | 2d | 2017-12-07 | 2017-12-12 | 131 | 2017-12-07 | 2017-12-12 | 2d | 0d |  | Castañeda Contreras Cristhofer David; Luna Vasquez Julio Bryan | 32h | 1,000 | 1,000 |
| 133 | 1.5.4.3 | Validación de Declaración Juarada |  | 4d | 2017-12-12 | 2017-12-18 | 132 | 2017-12-12 | 2017-12-18 | 4d | 0d |  | Castañeda Contreras Cristhofer David; Luna Vasquez Julio Bryan | 64h | 2,000 | 2,000 |
| 134 | 1.5.4.4 | Registro del Vehículo |  | 4d | 2017-12-18 | 2017-12-22 | 133 | 2017-12-18 | 2017-12-22 | 4d | 0d |  | Castañeda Contreras Cristhofer David; Luna Vasquez Julio Bryan | 64h | 2,000 | 2,000 |
| 135 | 1.5.4.5 | Registro de Datos de Adquisición |  | 4d | 2017-12-22 | 2017-12-29 | 134 | 2017-12-22 | 2017-12-29 | 4d | 0d |  | Castañeda Contreras Cristhofer David; Luna Vasquez Julio Bryan | 64h | 2,000 | 2,000 |
| 136 | 1.5.4.6 | Registro de Transferente |  | 2d | 2017-12-29 | 2018-01-02 | 135 | 2017-12-29 | 2018-01-02 | 2d | 0d |  | Castañeda Contreras Cristhofer David; Luna Vasquez Julio Bryan | 32h | 1,000 | 1,000 |
| 137 | 1.5.4.7 | Funcionalidad de Vista Preliminar e Imprimir |  | 2d | 2018-01-02 | 2018-01-04 | 136 | 2018-01-02 | 2018-01-04 | 2d | 0d |  | Castañeda Contreras Cristhofer David; Luna Vasquez Julio Bryan | 32h | 1,000 | 1,000 |
| 138 | 1.5.4.8 | Implementación de envío de correo |  | 2d | 2018-01-04 | 2018-01-08 | 137 | 2018-01-04 | 2018-01-08 | 2d | 0d |  | Castañeda Contreras Cristhofer David; Luna Vasquez Julio Bryan | 32h | 1,000 | 1,000 |
| 139 | 1.5.4.9 | Registro de Datos |  | 2d | 2018-01-08 | 2018-01-10 | 138 | 2018-01-08 | 2018-01-10 | 2d | 0d |  | Castañeda Contreras Cristhofer David; Luna Vasquez Julio Bryan | 32h | 1,000 | 1,000 |
| 140 | 1.5.4.10 | Revision de Codigo |  | 2d | 2018-01-10 | 2018-01-12 | 139 | 2018-01-10 | 2018-01-12 | 2d | 0d |  | Castañeda Contreras Cristhofer David; Luna Vasquez Julio Bryan | 32h | 1,000 | 1,000 |
| 141 | 1.5.4.11 | Correcciones y observaciones |  | 2d | 2018-01-12 | 2018-01-16 | 140 | 2018-01-12 | 2018-01-16 | 2d | 0d |  | Castañeda Contreras Cristhofer David; Luna Vasquez Julio Bryan | 32h | 1,000 | 1,000 |
| 142 | 1.5.4.12 | Ajustes al codigo |  | 1d | 2018-01-16 | 2018-01-17 | 141 | 2018-01-16 | 2018-01-17 | 1d | 0d |  | Castañeda Contreras Cristhofer David; Luna Vasquez Julio Bryan | 16h | 500 | 500 |
| 143 | 1.5.4.13 | Validación al codigo |  | 1d | 2018-01-17 | 2018-01-18 | 142 | 2018-01-17 | 2018-01-18 | 1d | 0d |  | Castañeda Contreras Cristhofer David; Luna Vasquez Julio Bryan | 16h | 500 | 500 |
| 144 | 1.5.4.14 | Pruebas |  | 4d | 2018-01-18 | 2018-01-24 | 143 | 2018-01-18 | 2018-01-24 | 4d | 0d |  | Castañeda Contreras Cristhofer David; Luna Vasquez Julio Bryan | 64h | 2,000 | 2,000 |
| 145 | 1.5.4.15 | Definicion de casos de prueba |  | 2d | 2018-01-24 | 2018-01-26 | 144 | 2018-01-24 | 2018-01-26 | 2d | 0d |  | Castañeda Contreras Cristhofer David; Luna Vasquez Julio Bryan | 32h | 1,000 | 1,000 |
| 146 | 1.5.4.16 | Pruebas unitarias |  | 2d | 2018-01-26 | 2018-01-30 | 145 | 2018-01-26 | 2018-01-30 | 2d | 0d |  | Castañeda Contreras Cristhofer David; Luna Vasquez Julio Bryan | 32h | 1,000 | 1,000 |
| 147 | 1.5.4.17 | Revision por parte del area de calidad |  | 2d | 2018-01-30 | 2018-02-01 | 146 | 2018-01-30 | 2018-02-01 | 2d | 0d |  | Castañeda Contreras Cristhofer David; Luna Vasquez Julio Bryan | 32h | 1,000 | 1,000 |
| 148 | 1.5.4.18 | Pruebas de aceptación |  | 2d | 2018-02-01 | 2018-02-05 | 147 | 2018-02-01 | 2018-02-05 | 2d | 0d |  | Castañeda Contreras Cristhofer David; Luna Vasquez Julio Bryan | 32h | 1,000 | 1,000 |
| 149 | 1.5.4.19 | Solicitud de pase a producción | milestone | 0d | 2018-02-05 | 2018-02-05 | 148 | 2018-02-05 | 2018-02-05 |  | 0d |  |  |  |  |  |

| ID | WBS | Task | Type | Duration | Start | Finish | Predecessors | Baseline start | Baseline finish | Baseline duration | Total slack | Free slack | Constraint | Resources | Work | Cost | Baseline cost |
| --- | --- | --- | --- | --- | --- | --- | --- | --- | --- | --- | --- | --- | --- | --- | --- | --- | --- |
| 150 | 1.5.5 | **Gestion de Liquidacion de alcabala** |  | 39d | 2017-11-27 | 2018-01-23 |  | 2017-11-27 | 2018-01-23 | 39d | 9d |  |  |  | 312h | 9,750 | 9,750 |
| 151 | 1.5.5.1 | Validaciones y reglas de negocio |  | 8d | 2017-11-27 | 2017-12-07 | 107 | 2017-11-27 | 2017-12-07 | 8d | 9d | 0d |  | Trebejo Loayza Waldo Jefferson | 64h | 2,000 | 2,000 |
| 152 | 1.5.5.2 | Consulta de Predio |  | 2d | 2017-12-07 | 2017-12-12 | 151 | 2017-12-07 | 2017-12-12 | 2d | 9d | 0d |  | Trebejo Loayza Waldo Jefferson | 16h | 500 | 500 |
| 153 | 1.5.5.3 | Validación de Venta |  | 2d | 2017-12-12 | 2017-12-14 | 152 | 2017-12-12 | 2017-12-14 | 2d | 9d | 0d |  | Trebejo Loayza Waldo Jefferson | 16h | 500 | 500 |
| 154 | 1.5.5.4 | Registro del Predio |  | 2d | 2017-12-14 | 2017-12-18 | 153 | 2017-12-14 | 2017-12-18 | 2d | 9d | 0d |  | Trebejo Loayza Waldo Jefferson | 16h | 500 | 500 |
| 155 | 1.5.5.5 | Registro de Datos de Adquiriente |  | 2d | 2017-12-18 | 2017-12-20 | 154 | 2017-12-18 | 2017-12-20 | 2d | 9d | 0d |  | Trebejo Loayza Waldo Jefferson | 16h | 500 | 500 |
| 156 | 1.5.5.6 | Registro de Transferente |  | 2d | 2017-12-20 | 2017-12-22 | 155 | 2017-12-20 | 2017-12-22 | 2d | 9d | 0d |  | Trebejo Loayza Waldo Jefferson | 16h | 500 | 500 |
| 157 | 1.5.5.7 | Generación de Voucher de pago |  | 1d | 2017-12-22 | 2017-12-26 | 156 | 2017-12-22 | 2017-12-26 | 1d | 9d | 0d |  | Trebejo Loayza Waldo Jefferson | 8h | 250 | 250 |
| 158 | 1.5.5.8 | Implementación de envío de correo |  | 2d | 2017-12-26 | 2017-12-28 | 157 | 2017-12-26 | 2017-12-28 | 2d | 9d | 0d |  | Trebejo Loayza Waldo Jefferson | 16h | 500 | 500 |
| 159 | 1.5.5.9 | Registro de Datos |  | 2d | 2017-12-28 | 2018-01-01 | 158 | 2017-12-28 | 2018-01-01 | 2d | 9d | 0d |  | Trebejo Loayza Waldo Jefferson | 16h | 500 | 500 |
| 160 | 1.5.5.10 | Revision de Codigo |  | 1d | 2018-01-01 | 2018-01-02 | 159 | 2018-01-01 | 2018-01-02 | 1d | 9d | 0d |  | Trebejo Loayza Waldo Jefferson | 8h | 250 | 250 |
| 161 | 1.5.5.11 | Correcciones y observaciones |  | 2d | 2018-01-02 | 2018-01-04 | 160 | 2018-01-02 | 2018-01-04 | 2d | 9d | 0d |  | Trebejo Loayza Waldo Jefferson | 16h | 500 | 500 |
| 162 | 1.5.5.12 | Ajustes al codigo |  | 1d | 2018-01-04 | 2018-01-05 | 161 | 2018-01-04 | 2018-01-05 | 1d | 9d | 0d |  | Trebejo Loayza Waldo Jefferson | 8h | 250 | 250 |
| 163 | 1.5.5.13 | Validación al codigo |  | 1d | 2018-01-05 | 2018-01-08 | 162 | 2018-01-05 | 2018-01-08 | 1d | 9d | 0d |  | Trebejo Loayza Waldo Jefferson | 8h | 250 | 250 |
| 164 | 1.5.5.14 | Pruebas |  | 4d | 2018-01-08 | 2018-01-12 | 163 | 2018-01-08 | 2018-01-12 | 4d | 9d | 0d |  | Trebejo Loayza Waldo Jefferson | 32h | 1,000 | 1,000 |
| 165 | 1.5.5.15 | Definicion de casos de prueba |  | 2d | 2018-01-12 | 2018-01-16 | 164 | 2018-01-12 | 2018-01-16 | 2d | 9d | 0d |  | Trebejo Loayza Waldo Jefferson | 16h | 500 | 500 |
| 166 | 1.5.5.16 | Pruebas unitarias |  | 2d | 2018-01-16 | 2018-01-18 | 165 | 2018-01-16 | 2018-01-18 | 2d | 9d | 0d |  | Trebejo Loayza Waldo Jefferson | 16h | 500 | 500 |
| 167 | 1.5.5.17 | Revision por parte del area de calidad |  | 2d | 2018-01-18 | 2018-01-22 | 166 | 2018-01-18 | 2018-01-22 | 2d | 9d | 0d |  | Trebejo Loayza Waldo Jefferson | 16h | 500 | 500 |
| 168 | 1.5.5.18 | Pruebas de aceptación |  | 1d | 2018-01-22 | 2018-01-23 | 167 | 2018-01-22 | 2018-01-23 | 1d | 9d | 0d |  | Trebejo Loayza Waldo Jefferson | 8h | 250 | 250 |
| 169 | 1.5.5.19 | Solicitud de pase a producción | milestone | 0d | 2018-01-23 | 2018-01-23 | 168 | 2018-01-23 | 2018-01-23 |  | 9d |  |  |  |  |  |  |
| 170 | 1.6 | **Gestion Administrativa** |  | 240.67d | 2017-03-06 | 2018-02-16 |  | 2017-03-06 | 2018-02-16 | 240.67d | 0d |  |  |  | 20.8h | 31,230 | 31,230 |
| 171 | 1.6.1 | **Contrato de servicios de terceros** |  | 62d | 2017-03-06 | 2017-06-02 |  | 2017-03-06 | 2017-06-02 | 62d | 178.67d |  |  |  |  | 30,450 | 30,450 |
| 172 | 1.6.1.1 | Contratacion de Analista de Sistemas |  | 2d | 2017-03-06 | 2017-03-07 |  | 2017-03-06 | 2017-03-07 | 2d | 233.67d | 0d |  | Escritorio Melamina; Sillas; Equipo de computo |  | 4,350 | 4,350 |
| 173 | 1.6.1.2 | Contratacion de Especialista de procesos |  | 2d | 2017-03-06 | 2017-03-07 |  | 2017-03-06 | 2017-03-07 | 2d | 233.67d | 0d |  | Escritorio Melamina; Sillas; Equipo de computo |  | 4,350 | 4,350 |
| 174 | 1.6.1.3 | Contratación de Analista programador 1 |  | 2d | 2017-06-01 | 2017-06-02 |  | 2017-06-01 | 2017-06-02 | 2d | 173.67d | 0d | start no earlier than 2017-06-01 | Escritorio Melamina; Sillas; Equipo de computo |  | 4,350 | 4,350 |
| 175 | 1.6.1.4 | Contratación de Analista programador 2 |  | 2d | 2017-06-01 | 2017-06-02 |  | 2017-06-01 | 2017-06-02 | 2d | 173.67d | 0d | start no earlier than 2017-06-01 | Escritorio Melamina; Sillas; Equipo de computo |  | 4,350 | 4,350 |
| 176 | 1.6.1.5 | Contratación de Analista programador 3 |  | 2d | 2017-06-01 | 2017-06-02 |  | 2017-06-01 | 2017-06-02 | 2d | 173.67d | 0d | start no earlier than 2017-06-01 | Escritorio Melamina; Sillas; Equipo de computo |  | 4,350 | 4,350 |
| 177 | 1.6.1.6 | Contratación de Analista programador 4 |  | 2d | 2017-06-01 | 2017-06-02 |  | 2017-06-01 | 2017-06-02 | 2d | 173.67d | 0d | start no earlier than 2017-06-01 | Escritorio Melamina; Sillas; Equipo de computo |  | 4,350 | 4,350 |
| 178 | 1.6.1.7 | Contratación de Analista programador 5 |  | 2d | 2017-06-01 | 2017-06-02 |  | 2017-06-01 | 2017-06-02 | 2d | 178.67d |  | start no earlier than 2017-06-01 | Escritorio Melamina; Sillas; Equipo de computo |  | 4,350 | 4,350 |

| ID | WBS | Task | Duration | Start | Finish | Baseline start | Baseline finish | Baseline duration | Total slack | Constraint | Resources | Work | Cost | Baseline cost |
| --- | --- | --- | --- | --- | --- | --- | --- | --- | --- | --- | --- | --- | --- | --- |
| 179 | 1.6.2 | **Seguimiento y Control** | 193d | 2017-03-10 | 2017-12-15 | 2017-03-10 | 2017-12-15 | 193d | 43.67d |  |  | 20.8h | 780 | 780 |
| 180 | 1.6.2.1 | **Informes de fin de Mes** | 169d | 2017-03-30 | 2017-11-30 | 2017-03-30 | 2017-11-30 | 169d | 53.67d |  |  | 20.8h | 780 | 780 |
| 181 | 1.6.2.1.1 | Informes de fin de Mes 1 | 5d | 2017-03-30 | 2017-04-05 | 2017-03-30 | 2017-04-05 | 5d | 217.67d | start no earlier than 2017-03-30 | Carlos Verastegui Garcia [20%] | 8h | 300 | 300 |
| 182 | 1.6.2.1.2 | Informes de fin de Mes 2 | 1d | 2017-05-02 | 2017-05-02 | 2017-05-02 | 2017-05-02 | 1d | 201.67d | start no earlier than 2017-04-30 | Carlos Verastegui Garcia [20%] | 1.6h | 60 | 60 |
| 183 | 1.6.2.1.3 | Informes de fin de Mes 3 | 1d | 2017-05-30 | 2017-05-30 | 2017-05-30 | 2017-05-30 | 1d | 181.67d | start no earlier than 2017-05-30 | Carlos Verastegui Garcia [20%] | 1.6h | 60 | 60 |
| 184 | 1.6.2.1.4 | Informes de fin de Mes 4 | 1d | 2017-06-30 | 2017-06-30 | 2017-06-30 | 2017-06-30 | 1d | 159.67d | start no earlier than 2017-06-30 | Carlos Verastegui Garcia [20%] | 1.6h | 60 | 60 |
| 185 | 1.6.2.1.5 | Informes de fin de Mes 5 | 1d | 2017-07-31 | 2017-07-31 | 2017-07-31 | 2017-07-31 | 1d | 139.67d | start no earlier than 2017-07-30 | Carlos Verastegui Garcia [20%] | 1.6h | 60 | 60 |
| 186 | 1.6.2.1.6 | Informes de fin de Mes 6 | 1d | 2017-08-31 | 2017-08-31 | 2017-08-31 | 2017-08-31 | 1d | 117.67d | start no earlier than 2017-08-30 | Carlos Verastegui Garcia [20%] | 1.6h | 60 | 60 |
| 187 | 1.6.2.1.7 | Informes de fin de Mes 7 | 1d | 2017-10-02 | 2017-10-02 | 2017-10-02 | 2017-10-02 | 1d | 95.67d | start no earlier than 2017-09-30 | Carlos Verastegui Garcia [20%] | 1.6h | 60 | 60 |
| 188 | 1.6.2.1.8 | Informes de fin de Mes 8 | 1d | 2017-10-30 | 2017-10-30 | 2017-10-30 | 2017-10-30 | 1d | 75.67d | start no earlier than 2017-10-30 | Carlos Verastegui Garcia [20%] | 1.6h | 60 | 60 |
| 189 | 1.6.2.1.9 | Informes de fin de Mes 9 | 1d | 2017-11-30 | 2017-11-30 | 2017-11-30 | 2017-11-30 | 1d | 53.67d | start no earlier than 2017-11-30 | Carlos Verastegui Garcia [20%] | 1.6h | 60 | 60 |
| 190 | 1.6.2.2 | **Reunión Estado Semanal** | 193d | 2017-03-10 | 2017-12-15 | 2017-03-10 | 2017-12-15 | 193d | 43.67d |  |  |  |  |  |
| 191 | 1.6.2.2.1 | Reunión Estado Semanal 1 | 1d | 2017-03-10 | 2017-03-10 | 2017-03-10 | 2017-03-10 | 1d | 235.67d | start no earlier than 2017-03-10 |  |  |  |  |
| 192 | 1.6.2.2.2 | Reunión Estado Semanal 2 | 1d | 2017-03-17 | 2017-03-17 | 2017-03-17 | 2017-03-17 | 1d | 230.67d | start no earlier than 2017-03-17 |  |  |  |  |
| 193 | 1.6.2.2.3 | Reunión Estado Semanal 3 | 1d | 2017-03-24 | 2017-03-24 | 2017-03-24 | 2017-03-24 | 1d | 225.67d | start no earlier than 2017-03-24 |  |  |  |  |
| 194 | 1.6.2.2.4 | Reunión Estado Semanal 4 | 1d | 2017-03-31 | 2017-03-31 | 2017-03-31 | 2017-03-31 | 1d | 220.67d | start no earlier than 2017-03-31 |  |  |  |  |
| 195 | 1.6.2.2.5 | Reunión Estado Semanal 5 | 1d | 2017-04-07 | 2017-04-07 | 2017-04-07 | 2017-04-07 | 1d | 215.67d | start no earlier than 2017-04-07 |  |  |  |  |
| 196 | 1.6.2.2.6 | Reunión Estado Semanal 6 | 1d | 2017-04-17 | 2017-04-17 | 2017-04-17 | 2017-04-17 | 1d | 211.67d | start no earlier than 2017-04-14 |  |  |  |  |
| 197 | 1.6.2.2.7 | Reunión Estado Semanal 7 | 1d | 2017-04-21 | 2017-04-21 | 2017-04-21 | 2017-04-21 | 1d | 207.67d | start no earlier than 2017-04-21 |  |  |  |  |
| 198 | 1.6.2.2.8 | Reunión Estado Semanal 8 | 1d | 2017-04-28 | 2017-04-28 | 2017-04-28 | 2017-04-28 | 1d | 202.67d | start no earlier than 2017-04-28 |  |  |  |  |
| 199 | 1.6.2.2.9 | Reunión Estado Semanal 9 | 1d | 2017-05-05 | 2017-05-05 | 2017-05-05 | 2017-05-05 | 1d | 198.67d | start no earlier than 2017-05-05 |  |  |  |  |
| 200 | 1.6.2.2.10 | Reunión Estado Semanal 10 | 1d | 2017-05-12 | 2017-05-12 | 2017-05-12 | 2017-05-12 | 1d | 193.67d | start no earlier than 2017-05-12 |  |  |  |  |
| 201 | 1.6.2.2.11 | Reunión Estado Semanal 11 | 1d | 2017-05-19 | 2017-05-19 | 2017-05-19 | 2017-05-19 | 1d | 188.67d | start no earlier than 2017-05-19 |  |  |  |  |
| 202 | 1.6.2.2.12 | Reunión Estado Semanal 12 | 1d | 2017-05-26 | 2017-05-26 | 2017-05-26 | 2017-05-26 | 1d | 183.67d | start no earlier than 2017-05-26 |  |  |  |  |
| 203 | 1.6.2.2.13 | Reunión Estado Semanal 13 | 1d | 2017-06-02 | 2017-06-02 | 2017-06-02 | 2017-06-02 | 1d | 178.67d | start no earlier than 2017-06-02 |  |  |  |  |
| 204 | 1.6.2.2.14 | Reunión Estado Semanal 14 | 1d | 2017-06-09 | 2017-06-09 | 2017-06-09 | 2017-06-09 | 1d | 173.67d | start no earlier than 2017-06-09 |  |  |  |  |
| 205 | 1.6.2.2.15 | Reunión Estado Semanal 15 | 1d | 2017-06-16 | 2017-06-16 | 2017-06-16 | 2017-06-16 | 1d | 168.67d | start no earlier than 2017-06-16 |  |  |  |  |
| 206 | 1.6.2.2.16 | Reunión Estado Semanal 16 | 1d | 2017-06-23 | 2017-06-23 | 2017-06-23 | 2017-06-23 | 1d | 163.67d | start no earlier than 2017-06-23 |  |  |  |  |
| 207 | 1.6.2.2.17 | Reunión Estado Semanal 17 | 1d | 2017-06-30 | 2017-06-30 | 2017-06-30 | 2017-06-30 | 1d | 159.67d | start no earlier than 2017-06-30 |  |  |  |  |
| 208 | 1.6.2.2.18 | Reunión Estado Semanal 18 | 1d | 2017-07-07 | 2017-07-07 | 2017-07-07 | 2017-07-07 | 1d | 154.67d | start no earlier than 2017-07-07 |  |  |  |  |
| 209 | 1.6.2.2.19 | Reunión Estado Semanal 19 | 1d | 2017-07-14 | 2017-07-14 | 2017-07-14 | 2017-07-14 | 1d | 149.67d | start no earlier than 2017-07-14 |  |  |  |  |
| 210 | 1.6.2.2.20 | Reunión Estado Semanal 20 | 1d | 2017-07-21 | 2017-07-21 | 2017-07-21 | 2017-07-21 | 1d | 144.67d | start no earlier than 2017-07-21 |  |  |  |  |
| 211 | 1.6.2.2.21 | Reunión Estado Semanal 21 | 1d | 2017-07-31 | 2017-07-31 | 2017-07-31 | 2017-07-31 | 1d | 139.67d | start no earlier than 2017-07-28 |  |  |  |  |
| 212 | 1.6.2.2.22 | Reunión Estado Semanal 22 | 1d | 2017-08-04 | 2017-08-04 | 2017-08-04 | 2017-08-04 | 1d | 135.67d | start no earlier than 2017-08-04 |  |  |  |  |
| 213 | 1.6.2.2.23 | Reunión Estado Semanal 23 | 1d | 2017-08-11 | 2017-08-11 | 2017-08-11 | 2017-08-11 | 1d | 130.67d | start no earlier than 2017-08-11 |  |  |  |  |
| 214 | 1.6.2.2.24 | Reunión Estado Semanal 24 | 1d | 2017-08-18 | 2017-08-18 | 2017-08-18 | 2017-08-18 | 1d | 125.67d | start no earlier than 2017-08-18 |  |  |  |  |
| 215 | 1.6.2.2.25 | Reunión Estado Semanal 25 | 1d | 2017-08-25 | 2017-08-25 | 2017-08-25 | 2017-08-25 | 1d | 120.67d | start no earlier than 2017-08-25 |  |  |  |  |
| 216 | 1.6.2.2.26 | Reunión Estado Semanal 26 | 1d | 2017-09-01 | 2017-09-01 | 2017-09-01 | 2017-09-01 | 1d | 116.67d | start no earlier than 2017-09-01 |  |  |  |  |
| 217 | 1.6.2.2.27 | Reunión Estado Semanal 27 | 1d | 2017-09-08 | 2017-09-08 | 2017-09-08 | 2017-09-08 | 1d | 111.67d | start no earlier than 2017-09-08 |  |  |  |  |
| 218 | 1.6.2.2.28 | Reunión Estado Semanal 28 | 1d | 2017-09-15 | 2017-09-15 | 2017-09-15 | 2017-09-15 | 1d | 106.67d | start no earlier than 2017-09-15 |  |  |  |  |
| 219 | 1.6.2.2.29 | Reunión Estado Semanal 29 | 1d | 2017-09-22 | 2017-09-22 | 2017-09-22 | 2017-09-22 | 1d | 101.67d | start no earlier than 2017-09-22 |  |  |  |  |
| 220 | 1.6.2.2.30 | Reunión Estado Semanal 30 | 1d | 2017-09-29 | 2017-09-29 | 2017-09-29 | 2017-09-29 | 1d | 96.67d | start no earlier than 2017-09-29 |  |  |  |  |
| 221 | 1.6.2.2.31 | Reunión Estado Semanal 31 | 1d | 2017-10-06 | 2017-10-06 | 2017-10-06 | 2017-10-06 | 1d | 91.67d | start no earlier than 2017-10-06 |  |  |  |  |
| 222 | 1.6.2.2.32 | Reunión Estado Semanal 32 | 1d | 2017-10-13 | 2017-10-13 | 2017-10-13 | 2017-10-13 | 1d | 86.67d | start no earlier than 2017-10-13 |  |  |  |  |
| 223 | 1.6.2.2.33 | Reunión Estado Semanal 33 | 1d | 2017-10-20 | 2017-10-20 | 2017-10-20 | 2017-10-20 | 1d | 81.67d | start no earlier than 2017-10-20 |  |  |  |  |
| 224 | 1.6.2.2.34 | Reunión Estado Semanal 34 | 1d | 2017-10-27 | 2017-10-27 | 2017-10-27 | 2017-10-27 | 1d | 76.67d | start no earlier than 2017-10-27 |  |  |  |  |
| 225 | 1.6.2.2.35 | Reunión Estado Semanal 35 | 1d | 2017-11-03 | 2017-11-03 | 2017-11-03 | 2017-11-03 | 1d | 72.67d | start no earlier than 2017-11-03 |  |  |  |  |
| 226 | 1.6.2.2.36 | Reunión Estado Semanal 36 | 1d | 2017-11-10 | 2017-11-10 | 2017-11-10 | 2017-11-10 | 1d | 67.67d | start no earlier than 2017-11-10 |  |  |  |  |
| 227 | 1.6.2.2.37 | Reunión Estado Semanal 37 | 1d | 2017-11-17 | 2017-11-17 | 2017-11-17 | 2017-11-17 | 1d | 62.67d | start no earlier than 2017-11-17 |  |  |  |  |
| 228 | 1.6.2.2.38 | Reunión Estado Semanal 38 | 1d | 2017-11-24 | 2017-11-24 | 2017-11-24 | 2017-11-24 | 1d | 57.67d | start no earlier than 2017-11-24 |  |  |  |  |
| 229 | 1.6.2.2.39 | Reunión Estado Semanal 39 | 1d | 2017-12-01 | 2017-12-01 | 2017-12-01 | 2017-12-01 | 1d | 52.67d | start no earlier than 2017-12-01 |  |  |  |  |
| 230 | 1.6.2.2.40 | Reunión Estado Semanal 40 | 1d | 2017-12-11 | 2017-12-11 | 2017-12-11 | 2017-12-11 | 1d | 47.67d | start no earlier than 2017-12-08 |  |  |  |  |
| 231 | 1.6.2.2.41 | Reunión Estado Semanal 41 | 1d | 2017-12-15 | 2017-12-15 | 2017-12-15 | 2017-12-15 | 1d | 43.67d | start no earlier than 2017-12-15 |  |  |  |  |

| ID | WBS | Task | Type | Duration | Start | Finish | Predecessors | Baseline start | Baseline finish | Baseline duration | Total slack |
| --- | --- | --- | --- | --- | --- | --- | --- | --- | --- | --- | --- |
| 232 | 1.6.3 | **Cierre** |  | 9d | 2018-02-05 | 2018-02-16 |  | 2018-02-05 | 2018-02-16 | 9d | 0d |
| 233 | 1.6.3.1 | Elaboracion de Informe de Cierre |  | 2d | 2018-02-05 | 2018-02-07 | 90, 109, 130, 150 | 2018-02-05 | 2018-02-07 | 2d | 0d |
| 234 | 1.6.3.2 | Entrega de Manuales y procedimientos |  | 2d | 2018-02-07 | 2018-02-09 | 233 | 2018-02-07 | 2018-02-09 | 2d | 0d |
| 235 | 1.6.3.3 | Puesta en producción |  | 5d | 2018-02-09 | 2018-02-16 | 234 | 2018-02-09 | 2018-02-16 | 5d | 0d |
| 236 | 1.6.3.4 | Cierre | milestone | 0d | 2018-02-16 | 2018-02-16 | 235 | 2018-02-16 | 2018-02-16 |  | 0d |
| 237 | 1.6.4 | **Capacitacion** |  | 65d | 2017-03-08 | 2017-06-09 |  | 2017-03-08 | 2017-06-09 | 65d | 173.67d |
| 238 | 1.6.4.1 | Preparacion Analista Sistemas y Especialista de procesos |  | 5d | 2017-03-08 | 2017-03-14 | 172, 173 | 2017-03-08 | 2017-03-14 | 5d | 233.67d |
| 239 | 1.6.4.2 | Preparacion Analistas programadores |  | 5d | 2017-06-05 | 2017-06-09 | 174, 175, 176, 177 | 2017-06-05 | 2017-06-09 | 5d | 173.67d |
